# SRRII Production Schedule

Schedule from MS Project, 2001-11-15 to 2003-08-16, status date 2002-10-28, A marks actual dates.
Simpsons Road Rage Production Schedule
Radical Entertainment

## Calendars

- Standard: Mon-Fri 08:00-12:00, 13:00-17:00; Sat-Sun off. Exceptions (off unless hours are given): 2002-03-29, 2002-05-20, 2002-09-15 08:00-12:00, 13:00-17:00, 2003-02-15 08:00-12:00, 13:00-17:00, 2003-03-15 08:00-12:00, 13:00-17:00.
- Milestone Calendar: Mon-Sun 08:00-12:00, 13:00-17:00. Exceptions (off unless hours are given): 2001-12-24 to 2002-01-01, 2002-03-29 08:00-12:00, 13:00-17:00, 2002-04-19 to 2002-04-21 08:00-12:00, 13:00-17:00, 2002-04-26 to 2002-04-28 08:00-12:00, 13:00-17:00, 2002-05-03 08:00-12:00, 13:00-17:00, 2002-05-04 to 2002-05-05, 2002-05-10 08:00-12:00, 13:00-17:00, 2002-05-11 to 2002-05-12, 2002-05-17 08:00-12:00, 13:00-17:00, 2002-05-18 to 2002-05-20, 2002-05-24 08:00-12:00, 13:00-17:00, 2002-05-25 to 2002-05-26, 2002-05-31 08:00-12:00, 13:00-17:00, 2002-06-01 to 2002-06-02, 2002-06-07 to 2002-06-08 08:00-12:00, 13:00-17:00, 2002-06-09, 2002-06-14 to 2002-06-15 08:00-12:00, 13:00-17:00, 2002-06-16, 2002-06-21 08:00-12:00, 13:00-17:00, 2002-06-22 to 2002-06-23, 2002-06-28 08:00-12:00, 13:00-17:00, 2002-06-29 to 2002-06-30, 2002-07-05 08:00-12:00, 13:00-17:00, 2002-07-06 to 2002-07-07, 2002-07-12 08:00-12:00, 13:00-17:00, 2002-07-13 to 2002-07-14, 2002-07-19 08:00-12:00, 13:00-17:00, 2002-07-20 to 2002-07-21, 2002-07-26 08:00-12:00, 13:00-17:00, 2002-07-27 to 2002-07-28, 2002-08-02 08:00-12:00, 13:00-17:00, 2002-08-03 to 2002-08-04, 2002-08-09 08:00-12:00, 13:00-17:00, 2002-08-10 to 2002-08-11, 2002-08-16 08:00-12:00, 13:00-17:00, 2002-08-17 to 2002-08-18, 2002-08-23 08:00-12:00, 13:00-17:00, 2002-08-24 to 2002-08-25, 2002-08-30 08:00-12:00, 13:00-17:00, 2002-08-31 to 2002-09-01, 2002-09-06 08:00-12:00, 13:00-17:00, 2002-09-07 to 2002-09-08, 2002-09-13 08:00-12:00, 13:00-17:00, 2002-09-14, 2002-09-15 08:00-12:00, 13:00-17:00, 2002-09-20 08:00-12:00, 13:00-17:00, 2002-09-21 to 2002-09-22, 2002-09-27 08:00-12:00, 13:00-17:00, 2002-09-28 to 2002-09-29, 2002-10-04 08:00-12:00, 13:00-17:00, 2002-10-05 to 2002-10-06, 2002-10-11 08:00-12:00, 13:00-17:00, 2002-10-12 to 2002-10-13, 2002-10-18 08:00-12:00, 13:00-17:00, 2002-10-19 to 2002-10-20, 2002-10-25 08:00-12:00, 13:00-17:00, 2002-10-26 to 2002-10-27, 2002-12-25 to 2003-01-01, 2003-02-15 08:00-12:00, 13:00-17:00, 2003-03-15 08:00-12:00, 13:00-17:00.

## Resources

| Resource | Group | Notes |
| --- | --- | --- |
| Joel DeYoung | Lead |  |
| Darwin Chau | Coder |  |
| Darren Esau | Sound |  |
| Cary Brisebois | Coder |  |
| Travis Brown-John | Coder |  |
| Greg Mayer | Coder |  |
| Darryl Long | Coder |  |
| Devin Murname | Coder |  |
| Michael Riegger | Coder |  |
| Vlad Ceraldi | Producer |  |
| Allister Jones | Project Manager - preproduction |  |
| Yayoi Maruno | Art Director |  |
| Jeff Pidsadny | Lead World Modeler |  |
| Kevin Fink | 3D Artist |  |
| Trevor Lim | Animator |  |
| Vincent Chin | World Artist |  |
| Aryan Hanbeck | Character Modeler |  |
| Jeremy Mesana | Lead Animator |  |
| Joe McGinn | Designer |  |
| Shawn Lee | Designer |  |
| Jeff Houde | Writer |  |
| Marc Baril | Sound |  |
| Chuck Chow | Coder |  |
| Ting Ting Chen | Graphic Artist |  |
| Wolfgang Hamann | Project Manager |  |
| Sheik Sahib | Artist |  |
| Sarah Meagher | World Artist |  |
| Tony Chu | Coder |  |
| Chris Mitchell | Designer |  |
| Carey Du Gray | Lead |  |
| Dusit Eakkachaichanvet | Coder |  |
| Elliott Roessler | Effect Artist |  |
| Eric Madill | World Artist |  |
| James Harrison | Coder |  |
| Jaroslav Chorny | Character Modeler |  |
| Robert Peet | World Artist |  |
| Ron Sombilon | Animator |  |
| Ross Young | World Artist |  |
| Sanela Mickovic | World Artist |  |
| Steve Bocska | Lead |  |
| Thomas Greenwood | Tester |  |
| Yousuf Mapara | Animator |  |
| Jonathan Lim | Tester |  |
| Mark Ng | Tester |  |
| Nigel Brooke | Coder |  |
| Jason Bone | Coder |  |
| Matthew Miller | QA |  |
| Alan Cheung | QA |  |
| Iain Gipson | Coder | Please join me in welcoming Ian Gipson to Fish Bulb! Ian comes to us / most recently from the lead PS2 programmer post on the Penthouse team. / He has experience in numerous areas of game development. Initially, he / will be helping Carey with changes to presentation and NIS / conversations. He will also be helping out with PS2 performance issues, / localization, and I'm sure other things that will come up! :) / He will be sitting in the same area as Michael, James and Aryan. |
| Jeff Plumley | Designer |  |
| Darren Evenson | Designer | A reminder that Darren Evenson is joining our team today. He will be sitting where Jason Bone has been. In case you missed it on Friday, Jason has finished his tour of duty with us and is returning to Squidney. / Darren will be working on placing data and tuning scripts for our mission gameplay. |
| Colin Lorimer | Concept Artist (Special Thanks) |  |
| Geoff Richardson | Special Thanks |  |
| Chris Dellinger | QA |  |
| Alan Cheung | QA |  |
| Matthew Miller | QA |  |
| Cory Hawthorne | Sound FX Design |  |
| Marc L'esperance | Engine Sound FX |  |
| Brad Dixon | Art Intern | Started Nev 27, 2002 / Assisting Aryan with Effects |
| Dustin Condie | World Building Inter | Another intern Dustin Condie coming from Mirth to assist world building Dec 1 |
| Dustin Condie | Intern - World Builders | Start Dec 2 - |
| Mike Maraffa | Artist - Effects | Mike Miraffa will also help with Effects and other miscalleneous stuff. |
| Roman Tomazin |  |  |
| Allan Levy |  |  |
| TBA |  |  |
| Jeff Tymoschuk | Composer |  |
| Jeff Young | Cinematics - mixes |  |
| Simpsons |  |  |
| Joshua Mitchell | Designer |  |
| Jesse Cluff | Coder |  |
| Dallas Bolton | Artist |  |
| ATG |  |  |

## Schedule

| ID | WBS | Task | Type | Duration | Start | Finish | Predecessors | Total slack | Free slack | Constraint | Calendar | Resources | Work |
| --- | --- | --- | --- | --- | --- | --- | --- | --- | --- | --- | --- | --- | --- |
| 1 | 1 | **Milestones** |  | 572d? | 2001-11-15 | 2003-08-16 |  | 0d |  |  | Milestone Calendar |  | 24h |
| 2 | 1.1 | Milestones 1 | milestone | 1d | 2001-11-15 | 2001-11-16 |  | 571d |  | start no earlier than 2001-11-15 | Milestone Calendar |  |  |
| 3 | 1.2 | Milestones 2 | milestone | 1d | 2001-12-15 | 2001-12-16 |  | 541d |  | start no earlier than 2001-12-15 | Milestone Calendar |  |  |
| 4 | 1.3 | Milestones 3 | milestone | 1d | 2002-01-15 | 2002-01-16 |  | 519d |  | start no earlier than 2002-01-15 | Milestone Calendar |  |  |
| 5 | 1.4 | Milestones 4 | milestone | 1d | 2002-02-15 | 2002-02-16 |  | 488d |  | start no earlier than 2002-02-15 | Milestone Calendar |  |  |
| 6 | 1.5 | Milestones 5 | milestone | 1d | 2002-03-15 | 2002-03-16 |  | 460d |  | start no earlier than 2002-03-15 | Milestone Calendar |  |  |
| 7 | 1.6 | Milestones 6 | milestone | 1d | 2002-04-15 | 2002-04-16 |  | 429d |  | start no earlier than 2002-04-15 | Milestone Calendar |  |  |
| 8 | 1.7 | Milestones 7 | milestone | 1d | 2002-05-15 | 2002-05-16 |  | 403d |  | start no earlier than 2002-05-15 | Milestone Calendar |  |  |
| 9 | 1.8 | Milestones 8 | milestone | 1d | 2002-06-15 | 2002-06-17 |  | 380d |  | start no earlier than 2002-06-15 | Milestone Calendar |  |  |
| 10 | 1.9 | Milestones 9 | milestone | 1d | 2002-07-15 | 2002-07-16 |  | 359d |  | start no earlier than 2002-07-15 | Milestone Calendar |  |  |
| 11 | 1.10 | Milestones 10 | milestone | 1d | 2002-08-15 | 2002-08-16 |  | 336d |  | start no earlier than 2002-08-15 | Milestone Calendar |  |  |
| 12 | 1.11 | Milestones 11 | milestone | 1d | 2002-09-15 | 2002-09-16 |  | 314d |  | start no earlier than 2002-09-15 | Milestone Calendar |  |  |
| 13 | 1.12 | Milestones 12 | milestone | 1d | 2002-10-15 | 2002-10-16 |  | 292d |  | start no earlier than 2002-10-15 | Milestone Calendar |  |  |
| 14 | 1.13 | Milestones 13 | milestone | 1d | 2002-11-15 | 2002-11-16 |  | 265d |  | start no earlier than 2002-11-15 | Milestone Calendar |  |  |
| 15 | 1.14 | Milestones 14 | milestone | 1d | 2002-12-15 | 2002-12-16 |  | 235d |  | start no earlier than 2002-12-15 | Milestone Calendar |  |  |
| 16 | 1.15 | Milestones 15 | milestone | 1d | 2003-01-15 | 2003-01-16 |  | 212d |  | start no earlier than 2003-01-15 | Milestone Calendar |  |  |
| 17 | 1.16 | Milestones 16 | milestone | 1d | 2003-02-15 | 2003-02-16 |  | 181d |  | start no earlier than 2003-02-15 | Milestone Calendar |  |  |
| 18 | 1.17 | Milestones 17 | milestone | 1d | 2003-03-15 | 2003-03-16 |  | 153d |  | start no earlier than 2003-03-15 | Milestone Calendar |  |  |
| 19 | 1.18 | **Milestones 18 - Alpha** |  | 31d | 2003-03-17 | 2003-04-16 |  | 121.12d |  |  | Milestone Calendar |  | 24h |
| 20 | 1.18.1 | **Feature List: All Teams** |  | 23d | 2003-03-17 | 2003-04-16 |  | 87d |  |  |  |  | 24h |
| 21 | 1.18.1.1 | Side Cameras |  | 5d | 2003-03-17 | 2003-03-21 |  | 105d |  | finish no earlier than 2003-03-21 |  |  |  |
| 22 | 1.18.1.2 | Light Volumes |  | 5d | 2003-03-17 | 2003-03-21 |  | 105d |  | start no earlier than 2003-03-17 |  |  |  |
| 23 | 1.18.1.3 | Play through Levels 1 - 2 |  | 5d | 2003-03-17 | 2003-03-21 |  | 105d |  | start no earlier than 2003-03-17 |  |  |  |
| 24 | 1.18.1.4 | Static Heap |  | 5d | 2003-03-17 | 2003-03-21 |  | 105d |  | start no earlier than 2003-03-17 |  |  |  |
| 25 | 1.18.1.5 | All Idles |  | 5d | 2003-03-17 | 2003-03-21 |  | 105d |  | start no earlier than 2003-03-17 |  |  |  |
| 26 | 1.18.1.6 | Interior Lighting (all levels) |  | 5d | 2003-03-17 | 2003-03-21 |  | 105d |  | start no earlier than 2003-03-17 |  |  |  |
| 27 | 1.18.1.7 | Races |  | 5d | 2003-03-24 | 2003-03-28 |  | 100d |  | finish no earlier than 2003-03-28 |  |  |  |
| 28 | 1.18.1.8 | Play through Levels 1 - 4 |  | 5d | 2003-03-24 | 2003-03-28 |  | 100d |  | finish no earlier than 2003-03-28 |  |  |  |
| 29 | 1.18.1.9 | All Interactive Gags |  | 5d | 2003-03-24 | 2003-03-28 |  | 100d |  | finish no earlier than 2003-03-28 |  |  |  |
| 30 | 1.18.1.10 | Hit & Run Meter |  | 5d | 2003-03-24 | 2003-03-28 |  | 100d |  | finish no earlier than 2003-03-28 |  |  |  |
| 31 | 1.18.1.11 | Forced vehicle Success/Failure |  | 5d | 2003-03-24 | 2003-03-28 |  | 100d |  | finish no earlier than 2003-03-28 |  |  |  |
| 32 | 1.18.1.12 | ATG Integration |  | 5d | 2003-03-24 | 2003-03-28 |  | 100d |  | finish no earlier than 2003-03-28 |  |  |  |
| 33 | 1.18.1.13 | All Pop In Resolved |  | 5d | 2003-03-24 | 2003-03-28 |  | 100d |  | finish no earlier than 2003-03-28 |  |  |  |
| 34 | 1.18.1.14 | FMV Intro, 1A, 3, 6 |  | 5d | 2003-03-24 | 2003-03-28 |  | 100d |  | finish no earlier than 2003-03-28 |  |  |  |
| 35 | 1.18.1.15 | World Art Level 4 & 6 |  | 5d | 2003-03-24 | 2003-03-28 |  | 100d |  | finish no earlier than 2003-03-28 |  |  |  |
| 36 | 1.18.1.16 | All Engine Sounds Complete |  | 5d | 2003-03-24 | 2003-03-28 |  | 100d |  | finish no earlier than 2003-03-28 |  |  |  |
| 37 | 1.18.1.17 | All Mission music composition complete |  | 5d | 2003-03-24 | 2003-03-28 |  | 100d |  | finish no earlier than 2003-03-28 |  |  |  |
| 38 | 1.18.1.18 | Gambling Races |  | 5d | 2003-03-31 | 2003-04-04 |  | 95d |  | finish no earlier than 2003-04-04 |  |  |  |
| 39 | 1.18.1.19 | Improved pedestrians/NPC's |  | 5d | 2003-03-31 | 2003-04-04 |  | 95d |  | start no earlier than 2003-03-31 |  |  |  |
| 40 | 1.18.1.20 | Scrapbook |  | 5d | 2003-03-31 | 2003-04-04 |  | 95d |  | start no earlier than 2003-03-31 |  |  |  |
| 41 | 1.18.1.21 | Bonus (mini) game complete |  | 5d | 2003-03-31 | 2003-04-04 |  | 95d |  | start no earlier than 2003-03-31 |  |  |  |
| 42 | 1.18.1.22 | Play through levels 1 - 6 |  | 5d | 2003-03-31 | 2003-04-04 |  | 95d |  | start no earlier than 2003-03-31 |  |  |  |
| 43 | 1.18.1.23 | All wasp art complete |  | 5d | 2003-03-31 | 2003-04-04 |  | 95d |  | start no earlier than 2003-03-31 |  |  |  |
| 44 | 1.18.1.24 | All 2D & 3D mission art (Hud icons, briefing images, in game assets) |  | 5d | 2003-03-31 | 2003-04-04 |  | 95d |  | start no earlier than 2003-03-31 |  |  |  |
| 45 | 1.18.1.25 | All in game sound fx complete |  | 5d | 2003-03-31 | 2003-04-04 |  | 95d |  | start no earlier than 2003-03-31 |  |  |  |
| 46 | 1.18.1.26 | All character music composition complete |  | 5d | 2003-03-31 | 2003-04-04 |  | 95d |  | start no earlier than 2003-03-31 |  |  |  |
| 47 | 1.18.1.27 | Camera Collisions |  | 5d | 2003-04-07 | 2003-04-11 |  | 90d |  | finish no earlier than 2003-04-11 |  |  |  |
| 48 | 1.18.1.28 | Progressive Scan |  | 5d | 2003-04-07 | 2003-04-11 |  | 90d |  | finish no earlier than 2003-04-11 |  |  |  |
| 49 | 1.18.1.29 | World Art Level 5 & 7 |  | 5d | 2003-04-07 | 2003-04-11 |  | 90d |  | finish no earlier than 2003-04-11 |  |  |  |
| 50 | 1.18.1.30 | Credits |  | 5d | 2003-04-07 | 2003-04-11 |  | 90d |  | finish no earlier than 2003-04-11 |  |  |  |
| 51 | 1.18.1.31 | Memory card screens & icons |  | 5d | 2003-04-07 | 2003-04-11 |  | 90d |  | finish no earlier than 2003-04-11 |  |  |  |
| 52 | 1.18.1.32 | Purchase & reward screens |  | 5d | 2003-04-07 | 2003-04-11 |  | 90d |  | finish no earlier than 2003-04-11 |  |  |  |
| 53 | 1.18.1.33 | Begin FMV sound fx |  | 5d | 2003-04-07 | 2003-04-11 |  | 90d |  | finish no earlier than 2003-04-11 |  |  |  |
| 54 | 1.18.1.34 | Begin FMV composition |  | 5d | 2003-04-07 | 2003-04-11 |  | 90d |  | finish no earlier than 2003-04-11 |  |  |  |
| 55 | 1.18.1.35 | Mastered English Dialogue complete |  | 5d | 2003-04-07 | 2003-04-11 |  | 87d | 0d | finish no earlier than 2003-04-11 |  |  |  |
| 56 | 1.18.1.36 | Integration Week |  | 3d | 2003-04-12 | 2003-04-16 | 55 | 87d |  | finish no earlier than 2003-04-15 |  | Simpsons | 24h |

Notes:
- 18: Ms build from ms 17 to final / Art / ·Complete all story FMVs / ·Intro FMV extension / ·Itchy & Scratchy FMV / ·FMV characters and blend shapes (Krusty, Itchy, Scratchy, Frink, and maybe younger Grandpa) / ·7 new bonus skins / ·5 new idle animations (1 per regular walker) / ·21 new idle animations (1 per bonus skin) / ·Celebrity models (up to 3) / ·10 new interactive gags / ·10 new generic pedestrians / ·7 new traffic models / ·7 special level vehicles / ·Downtown & Seaside time-of-day / ·Human Cola glass panes / ·Unique mission screens for each mission (MS 16, levels 1-3) / ·Unique mission summary screen for each level (MS 16, levels 1-3) / ·HUD redesign / ·Front end scrapbook (MS 16) / ·Coin art with special effect / ·Bee camera art (7 models, animation, effects) (MS 16 one model only) / ·New kick animation (during jump) / ·Body slam animation for smashing (during double jump) / ·Presentation for mission success and failure (both in car and on foot) / ·Animation for getting collector card (1 per character) / ·Mission conversation presentation polishing / ·Front end camera changes / ·Wrench modeling and effects / ·Alien camera HUD / ·Tutorial HUD elements / ·Change front end and HUD fonts / ·Maggie walk in and fall animation in front end / ·On-foot navigation 3D art (helper) (MS17) / ·In-car navigation 3D art (ground arrows) (MS17) / ·New HUD radar / ·Pause menu changes / ·Props for race circuits (MS 17) / ·Full damage states for all AI vehicles (for driveable versions) / ·Car surfing animations / ·Axles on all the cars / ·Traffic vehicles damage states, effects / ·Animations for on-foot character damage (hit by something, falling, bee sting) (MS 16) / ·Credits movie (MS 18) / ·Address NTSC illegal colours (MS 18) / Sound / ·Coin sounds (MS 16) / ·Comments, honks from traffic when hit (MS 16) / ·Answering machine dialog from disabled phone booths (MS 16) / Tech / ·Interactive physics gags (MS 17) / ·Increase traffic model count by 1 (MS 16) / ·New special level vehicles (MS 16) / ·Remove secondary objectives (MS 16) / ·Can drive all traffic and AI cars (MS 16) (and characters fit in car) (MS 17) / ·Can surf on traffic cars (MS 16) / ·HUD reimplementation (MS 17) / ·Navigation system rewrite (in-car and on-foot) (MS 17) / ·New HUD radar (MS 17) / ·Front end scrapbook rewrite (MS 16) / ·AI Vehicle problems resolved (MS 16, 17) / ·Pedestrian AI improvements (MS 17) / ·Pedestrians crossing street, coordinated with crosswalk signals (MS 17) / ·Coin system (MS 16) / ·Reward UI system (MS 17) / ·Bee AI system (MS 16) / ·Damage out presentation (MS 17) / ·Mini-game / ·Iterate on mouth flapping and eye blinking (MS 16) / ·Patty and Selma presentation after races (MS 17) / ·Wrench functionality (MS 16) / ·Death volume presentation (MS 16) / ·Jump camera (cut cam) presentation (MS 16) / ·Jump camera render effects (MS 17) / ·Pause menu changes (MS 16) / ·Race circuit prop loading/rendering (MS 17) / ·Improved race ranking reports (MS 16) / ·Reward system changes (MS 17) / ·Remove choreo for simple characters (MS 16) / ·Recognizable Simpsons characters as peds (MS 16) / ·Passenger/driver animations (MS 16) / ·Eliminate pop-in (MS 18) / ·Demo mode for all 7 levels (MS 16) / ·Fix radscript::Run to not allocate so much memory (MS 16) / ·Break up meshes in front end to achieve smaller TEMP heap size (MS 16) / ·Re-investigate tristripping front end scene (MS 16) / ·Better UI for sound menu in front end (effects feedback and interactivity in radio, voice feedback and interactivity in Krusty handset, draw X through symbol when level goes to zero) (MS 16) / ·Set default sound levels to mid range (i.e. properly tune default levels) (MS 16) / ·Undo the hack Esan did to make missing ambient triggers reroute to existing ones (MS 16) / ·Visible rendering of collision volumes (MS 17) / ·Can play movies in the middle of a level (MS 16) / ·Per-zone traffic dynaloading, with extra traffic in VS mode (MS 16) / ·Frink cloaking shader (MS 16) / ·Answering machine behaviour from phone booths when in a mission (MS 16) / ·Progressive scan (platform support and front end option) (MS 17) / ·Brightness control in front end (MS 17) / ·Wide-screen support / ·ATG integration (MS 16) / ·Setup per level headlight intensities (MS 16) / ·Damage states for traffic vehicles: smoke, explosion & texture switch, disabled w/ fire (MS 16) / ·On-foot damage (getting hit, falling long distances, hit by cars, etc) (MS 16) / ·Memory card icons (MS 17) / Design / ·Pedestrian AI, pedestrian activities / ·Bee AI, fighting system / ·Design for interaction with crates / ·Details on new interactive gags / ·Details of 7 special level vehicles / ·HUD redesign / ·Design for character animation for obtaining collector card / ·Design for on-foot navigation / ·Design for in-car navigation / ·Design for gags based on physics interaction / ·Design for damage out presentation / ·Decide whether we will need to visibly render collision volumes / ·Decide where we choose previously-obtained rewards (cars and skins), i.e. is it the phone booth? / Open Questions / ·What about the mini-game?

| ID | WBS | Task | Type | Duration | Start | Finish | Predecessors | Complete | Remaining | Total slack | Free slack | Constraint | Calendar | Resources | Work | Actual work |
| --- | --- | --- | --- | --- | --- | --- | --- | --- | --- | --- | --- | --- | --- | --- | --- | --- |
| 57 | 1.19 | **E3 Build** |  | 1d? | 2003-04-01 | 2003-04-01 |  |  |  | 98d |  |  |  |  |  |  |
| 58 | 1.19.1 | Xbox build |  | 1d? | 2003-04-01 | 2003-04-01 |  |  |  | 98d |  | start no earlier than 2003-04-01 |  |  |  |  |
| 59 | 1.19.2 | Sony build |  | 1d? | 2003-04-01 | 2003-04-01 |  |  |  | 98d |  | start no earlier than 2003-04-01 |  |  |  |  |
| 60 | 1.19 | Milestones 19 - Beta | milestone | 1d | 2003-05-30 | 2003-05-31 |  |  |  | 77d |  | start no earlier than 2003-05-30 | Milestone Calendar |  |  |  |
| 61 | 1.20 | Milestones 20 - Final | milestone | 1d | 2003-06-30 | 2003-07-01 |  |  |  | 46d |  | start no earlier than 2003-06-30 | Milestone Calendar |  |  |  |
| 62 | 1.21 | Milestones 21 | milestone | 1d | 2003-07-15 | 2003-07-16 |  |  |  | 31d |  | start no earlier than 2003-07-15 | Milestone Calendar |  |  |  |
| 63 | 1.22 | Milestones 22 | milestone | 1d | 2003-08-15 | 2003-08-16 |  |  |  | 0d |  | start no earlier than 2003-08-15 | Milestone Calendar |  |  |  |
| 65 | 2 | **Fox Deliverables** |  | 23d? | 2003-02-28 | 2003-04-01 |  |  |  | 98.88d |  |  |  |  |  |  |
| 66 | 2.1 | Front End, Character Model and animation approval | milestone | 1d? | 2003-02-28 | 2003-03-03 |  |  |  | 120.88d |  | start no earlier than 2003-02-28 |  |  |  |  |
| 67 | 2.2 | English dialog delivered to Radical, world art, signage,HUD, vehicle approvals | milestone | 1d? | 2003-03-15 | 2003-03-17 |  |  |  | 109.88d |  | start no earlier than 2003-03-15 |  |  |  |  |
| 68 | 2.3 | Localized text & dialogue delivered to Radical | milestone | 1d? | 2003-03-31 | 2003-04-01 |  |  |  | 98.88d |  | start no earlier than 2003-03-31 |  |  |  |  |
| 70 | 1 | **DESIGN TASKS** |  | 201.88d? | 2002-04-16 A | 2003-01-22 |  | 22% | 157.43d? | 149d |  |  |  |  | 2728.6h | 536.36h |
| 71 | 2 | **Milestone 7 (May 15th)** |  | 20d | 2002-04-16 A | 2002-05-14 |  | 38% | 12.5d | 330.88d |  |  |  |  | 320h | 120h |
| 72 | 2.1 | All mission gameplay design (1st pass) |  | 4d | 2002-04-16 | 2002-04-22 |  |  |  | 330.88d | 0d |  |  | Joe McGinn | 32h |  |
| 73 | 2.2 | Updated camera design |  | 4d | 2002-04-22 | 2002-04-26 | 72 |  |  | 330.88d | 0d |  |  | Joe McGinn | 32h |  |
| 74 | 2.3 | Collate updated design doc, and write MS report |  | 4d | 2002-04-26 | 2002-05-02 | 73 |  |  | 330.88d | 0d |  |  | Joe McGinn | 32h |  |
| 75 | 2.4 | Final mission scripter section (INTERNAL, not for FOX) |  | 4d | 2002-05-02 | 2002-05-08 | 74 |  |  | 330.88d | 0d |  |  | Joe McGinn | 32h |  |
| 76 | 2.5 | Final collectibles section (INTERNAL, not for FOX) |  | 4d | 2002-05-08 | 2002-05-14 | 75 |  |  | 330.88d |  |  |  | Joe McGinn | 32h |  |
| 77 | 2.6 | Finalize dialog template/naming conventions (INTERNAL, not for FOX) |  | 5d | 2002-04-16 A | 2002-04-23 |  | 75% | 1.25d | 342.12d | 0d |  |  | Shawn Lee | 40h | 30h |
| 78 | 2.7 | Front End design, including all TRC requirements |  | 5d | 2002-04-23 A | 2002-04-30 | 77 | 75% | 1.25d | 338.38d | 0d |  |  | Shawn Lee | 40h | 30h |
| 79 | 2.8 | Controller design |  | 10d | 2002-04-30 A | 2002-05-14 | 78 | 75% | 2.5d | 330.88d |  |  |  | Shawn Lee | 80h | 60h |
| 80 | 3 | **Milestone 8 (April 15th)** |  | 20d | 2002-05-16 | 2002-06-14 |  |  |  | 308.88d |  |  |  |  | 320h |  |
| 81 | 3.1 | All mission gameplay design (2nd pass) |  | 4d | 2002-05-16 | 2002-05-23 |  |  |  | 308.88d | 0d | start no earlier than 2002-05-16 |  | Joe McGinn | 32h |  |
| 82 | 3.2 | Final Multiplayer design |  | 4d | 2002-05-23 | 2002-05-29 | 81 |  |  | 308.88d | 0d |  |  | Joe McGinn | 32h |  |
| 83 | 3.3 | Collate updated design doc, and write MS report |  | 4d | 2002-05-29 | 2002-06-04 | 82 |  |  | 308.88d | 0d |  |  | Joe McGinn | 32h |  |
| 84 | 3.4 | Initial driving engine review (INTERNAL, not for FOX) |  | 4d | 2002-06-04 | 2002-06-10 | 83 |  |  | 308.88d | 0d |  |  | Joe McGinn | 32h |  |
| 85 | 3.5 | 1st pass camera tuning (INTERNAL, not for FOX) |  | 4d | 2002-06-10 | 2002-06-14 | 84 |  |  | 308.88d |  |  |  | Joe McGinn | 32h |  |
| 86 | 3.6 | Final Characters/Vehicles section |  | 2d | 2002-05-16 | 2002-05-21 |  |  |  | 308.88d | 0d | start no earlier than 2002-05-16 |  | Shawn Lee | 16h |  |
| 87 | 3.7 | Final Front End design |  | 3d | 2002-05-21 | 2002-05-24 | 86 |  |  | 308.88d | 0d |  |  | Shawn Lee | 24h |  |
| 88 | 3.8 | Final Gameplay Controls section |  | 4d | 2002-05-24 | 2002-05-30 | 87 |  |  | 308.88d | 0d |  |  | Shawn Lee | 32h |  |
| 89 | 3.9 | Final Presentation section |  | 3d | 2002-05-30 | 2002-06-04 | 88 |  |  | 308.88d | 0d |  |  | Shawn Lee | 24h |  |
| 90 | 3.10 | Final Interface (HUD) section |  | 3d | 2002-06-04 | 2002-06-07 | 89 |  |  | 308.88d | 0d |  |  | Shawn Lee | 24h |  |
| 91 | 3.11 | 1st pass camera tuning (INTERNAL, not for FOX) |  | 5d | 2002-06-07 | 2002-06-14 | 90 |  |  | 308.88d |  |  |  | Shawn Lee | 40h |  |

Notes:
- 66: February 28 / ·Front End approval / Character model and animation approval
- 67: March 15 / ·English dialog delivered to Radical / ·World art and signage approval / ·HUD approval / ·Vehicle approval
- 68: March 31 / ·All localized text translated and delivered to Radical / ·Non-english dialog delivered to Radical / All licensed music delivered to Radical / Dialog: / For English dialog, we need 2 weeks lead time to sort out the files and adjust levels, and 2 weeks lead time to get all the content in the game. We cannot process English and the non-English files concurrently so we will need English on time and 2 weeks before the PAL languages. The processing of the non-English languages will take 14 days per language meaning that if we do them all, it will take ~56 days (back from Final gives us March 31st). / Localized text: / We need 2 weeks lead time from receiving the localized text to providing a build that contains all localized text. We need all text translations by March 31st. / Music: / We need 2 weeks lead time to incorporate licensed music.
- 70: MetagameCarey RewardsCarey HUD/OverlaysCarey FMVCarey PresentationCarey Presentation CamerasCarey Collector CardChris Collector Card GameChris 2d GamesChris DialogChris Mission TuningDarren CollectablesDarren Driving Mini-GamesDarren Driving ModelJoe Vehicle TuningJoe AIJoe Secondary Mission ObjectivesJoe World RevisionsJoe Driving Gameplay CamerasJoe Data PlacementSheik Jumping PuzzlesSheik

| ID | WBS | Task | Duration | Start | Finish | Predecessors | Total slack | Free slack | Constraint | Resources | Work |
| --- | --- | --- | --- | --- | --- | --- | --- | --- | --- | --- | --- |
| 92 | 4 | **Milestone 9 (July 15th)** | 20d | 2002-06-17 | 2002-07-15 |  | 287.88d |  |  |  | 320h |
| 93 | 4.1 | Driving engine tuning | 5d | 2002-06-17 | 2002-06-24 |  | 287.88d | 0d | start no earlier than 2002-06-17 | Joe McGinn | 40h |
| 94 | 4.2 | 1st Pass Tuning for 8 cars | 5d | 2002-06-24 | 2002-07-01 | 93 | 287.88d | 0d |  | Joe McGinn | 40h |
| 95 | 4.3 | Test world builder/trigger volume pipeline (INTERNAL, not for FOX) | 5d | 2002-07-01 | 2002-07-08 | 94 | 287.88d | 0d |  | Joe McGinn | 40h |
| 96 | 4.4 | Test mission scripter (INTERNAL, not for FOX) | 5d | 2002-07-08 | 2002-07-15 | 95 | 287.88d |  |  | Joe McGinn | 40h |
| 97 | 4.5 | 1st pass Collision Tuning | 8d | 2002-06-17 | 2002-06-27 |  | 287.88d | 0d | start no earlier than 2002-06-17 | Shawn Lee | 64h |
| 98 | 4.6 | 1st pass Damage States Tuning | 4d | 2002-06-27 | 2002-07-03 | 97 | 287.88d | 0d |  | Shawn Lee | 32h |
| 99 | 4.7 | 1st pass controller tuning | 8d | 2002-07-03 | 2002-07-15 | 98 | 287.88d |  |  | Shawn Lee | 64h |
| 100 | 5 | **Milestone 10 (Aug 15th)** | 1d? | 2002-04-16 | 2002-04-17 |  | 349.88d |  |  |  |  |
| 101 | 5.1 | Designer Track Sign-Off | 1d? | 2002-04-16 | 2002-04-17 |  | 349.88d |  |  |  |  |
| 102 | 5.2 | Test of All Mission Types (1st Pass) | 1d? | 2002-04-16 | 2002-04-17 |  | 349.88d |  |  |  |  |
| 103 | 5.3 | 1st Pass Tuning for 8 Vehicles | 1d? | 2002-04-16 | 2002-04-17 |  | 349.88d |  |  |  |  |
| 104 | 5.4 | Start Creating Real Mission Data | 1d? | 2002-04-16 | 2002-04-17 |  | 349.88d |  |  |  |  |
| 105 | 5.5 | Controller Tuning (1st Pass) | 1d? | 2002-04-16 | 2002-04-17 |  | 349.88d |  |  |  |  |
| 106 | 5.6 | Camera Tuning (1st Pass) | 1d? | 2002-04-16 | 2002-04-17 |  | 349.88d |  |  |  |  |
| 107 | 6 | **Milestone 11 (Sep 15th)** | 1d? | 2002-04-16 | 2002-04-17 |  | 349.88d |  |  |  |  |
| 108 | 6.1 | Global AI Tuning (1st Pass) | 1d? | 2002-04-16 | 2002-04-17 |  | 349.88d |  |  |  |  |
| 109 | 6.2 | Multiplayer Data Placed | 1d? | 2002-04-16 | 2002-04-17 |  | 349.88d |  |  |  |  |
| 110 | 6.3 | Traffic System Tuning (1st Pass) | 1d? | 2002-04-16 | 2002-04-17 |  | 349.88d |  |  |  |  |
| 111 | 6.4 | Collectibles/Conversation Tuning (1st Pass) | 1d? | 2002-04-16 | 2002-04-17 |  | 349.88d |  |  |  |  |
| 112 | 6.5 | Counter Measures Tuning (1st Pass) | 1d? | 2002-04-16 | 2002-04-17 |  | 349.88d |  |  |  |  |
| 113 | 7 | **Milestone 12 (Oct 15th)** | 15d? | 2002-04-16 | 2002-05-07 |  | 335.88d |  |  |  | 524h |
| 114 | 7.1 | improve gameplay in level 1 missions | 5d | 2002-04-16 | 2002-04-23 |  | 339.88d | 0d |  | Joe McGinn | 40h |
| 115 | 7.2 | all mission data for level 4 complete | 1d? | 2002-04-23 | 2002-04-24 | 114 | 339.88d | 0d |  | Joe McGinn | 8h |
| 116 | 7.3 | all mission data for level 7 complete | 3d | 2002-04-24 | 2002-04-29 | 115 | 339.88d | 0d |  | Joe McGinn [50%]; Chris Mitchell [50%] | 24h |
| 117 | 7.4 | improvements to vehicle AI | 1d? | 2002-04-29 | 2002-04-30 | 116 | 339.88d | 0d |  | Joe McGinn | 8h |
| 118 | 7.5 | final AI traffic behaviour implemented | 1d? | 2002-04-30 | 2002-05-01 | 117 | 339.88d |  |  | Joe McGinn | 8h |
| 119 | 7.6 | Sound file naming-rest of today and part of tomorrow | 2d | 2002-04-16 | 2002-04-18 |  | 335.88d | 0d |  | Chris Mitchell | 16h |
| 120 | 7.7 | Sound file naming-rest of today and part of tomorrow | 1d? | 2002-04-18 | 2002-04-19 | 119 | 335.88d | 0d |  | Chris Mitchell | 8h |
| 121 | 7.8 | Finish level 4 (with Joe) 1 day | 3d | 2002-04-19 | 2002-04-24 | 120 | 335.88d | 0d |  | Chris Mitchell [50%]; Joe McGinn [50%] | 24h |
| 122 | 7.9 | Finish level 7 (with Joe) 3 days | 5d | 2002-04-24 | 2002-05-01 | 121 | 335.88d | 0d |  | Chris Mitchell [50%]; Joe McGinn [50%] | 40h |
| 123 | 7.10 | Develope/tune level 1 1 week | 1d? | 2002-05-01 | 2002-05-02 | 122 | 335.88d | 0d |  | Chris Mitchell | 8h |
| 124 | 7.11 | Dialogue for Homer 1 day | 1d? | 2002-05-02 | 2002-05-03 | 123 | 335.88d | 0d |  | Chris Mitchell | 8h |
| 125 | 7.12 | Dialogue for Bart (if time) 1 day | 1d? | 2002-05-03 | 2002-05-06 | 124 | 335.88d | 0d |  | Chris Mitchell | 8h |
| 126 | 7.13 | Dynamically loading textures- dependent on coder support. | 1d? | 2002-05-06 | 2002-05-07 | 125 | 335.88d |  |  | Chris Mitchell | 8h |

Notes:
- 117: ongoing (related to 1 gameplay tuning)
- 118: ongoing (related to level 1 gameplay tuning)

| ID | WBS | Task | Type | Duration | Start | Finish | Predecessors | Complete | Remaining | Total slack | Free slack | Constraint | Resources | Work | Actual work |
| --- | --- | --- | --- | --- | --- | --- | --- | --- | --- | --- | --- | --- | --- | --- | --- |
| 127 | 7.14 | **Level Art - Downtown** |  | 11d? | 2002-04-16 | 2002-05-01 |  |  |  | 336.88d |  |  | Sheik Sahib | 176h |  |
| 128 | 7.14.1 | all hailing points placed in the level |  | 1d? | 2002-04-16 | 2002-04-17 |  |  |  | 336.88d | 0d |  | Sheik Sahib | 8h |  |
| 129 | 7.14.2 | all food icons placed in the level |  | 1d? | 2002-04-17 | 2002-04-18 | 128 |  |  | 336.88d | 0d |  | Sheik Sahib | 8h |  |
| 130 | 7.14.3 | all destructible cameras placed in the level |  | 1d? | 2002-04-18 | 2002-04-19 | 129 |  |  | 336.88d | 0d |  | Sheik Sahib | 8h |  |
| 131 | 7.14.4 | all death volumes placed in the level |  | 1d? | 2002-04-19 | 2002-04-22 | 130 |  |  | 336.88d | 0d |  | Sheik Sahib | 8h |  |
| 132 | 7.14.5 | all pedestrians placed in the level |  | 3d | 2002-04-22 | 2002-04-25 | 131 |  |  | 336.88d | 0d |  | Sheik Sahib | 24h |  |
| 133 | 7.14.6 | Placement of track data |  | 3d | 2002-04-25 | 2002-04-30 | 132 |  |  | 336.88d | 0d |  | Sheik Sahib | 24h |  |
| 134 | 7.14.7 | Collector Cards |  | 1d? | 2002-04-30 | 2002-05-01 | 133 |  |  | 336.88d | 0d |  | Sheik Sahib | 8h |  |
| 135 | 7.15 | **Level Art -- Suburbs** |  | 1d? | 2002-05-01 | 2002-05-02 | 134 |  |  | 336.88d |  |  |  | 8h |  |
| 136 | 7.15.1 | all pedestrians placed in the level |  | 1d? | 2002-05-01 | 2002-05-02 |  |  |  | 336.88d | 0d |  | Sheik Sahib | 8h |  |
| 137 | 7.16 | changing placement of card in level1 |  | 1d? | 2002-05-02 | 2002-05-03 | 136 |  |  | 336.88d | 0d |  | Sheik Sahib | 8h |  |
| 138 | 7.17 | placement of static cameras for entering and exiting interiors |  | 1d? | 2002-05-03 | 2002-05-06 | 137 |  |  | 336.88d |  |  | Sheik Sahib | 8h |  |
| 139 | 7.18 | design what happens when user character gets hit by car |  | 0.5d | 2002-04-16 | 2002-04-16 |  |  |  | 336.38d | 0d |  | Carey Du Gray | 4h |  |
| 140 | 7.19 | first pass engine sounds -- on-going with sound |  | 1d? | 2002-04-16 | 2002-04-17 | 139 |  |  | 336.38d | 0d |  | Carey Du Gray | 8h |  |
| 141 | 7.20 | environmental/ambient sounds working in all levels -- on-going with sound |  | 6d | 2002-04-17 | 2002-04-25 | 140 |  |  | 336.38d | 0d |  | Carey Du Gray | 48h |  |
| 142 | 7.21 | environmental/ambient sounds working in all available interiors -- on-going with sound |  | 5d | 2002-04-25 | 2002-05-02 | 141 |  |  | 336.38d | 0d |  | Carey Du Gray | 40h |  |
| 143 | 7.22 | design for camera collisions and occlusion |  | 1d? | 2002-05-02 | 2002-05-03 | 142 |  |  | 336.38d | 0d |  | Carey Du Gray | 8h |  |
| 144 | 7.23 | address collector card/camera placement design issues |  | 1d? | 2002-05-03 | 2002-05-06 | 143 |  |  | 336.38d |  |  | Carey Du Gray | 8h |  |
| 145 | 8 | **Milestone 13 (Nov 15th)** |  | 33.5d? | 2002-10-16 A | 2002-12-02 |  | 60% | 13.32d? | 186.38d |  |  |  | 684.6h | 416.36h |
| 146 | 1.7.1 | Metagame Design | milestone | 0d | 2002-10-16 A | 2002-10-16 A |  | 100% |  |  |  | start no earlier than 2002-10-16 | Carey Du Gray [50%] |  |  |
| 147 | 1.7.2 | Rewards Design | milestone | 0d | 2002-10-18 A | 2002-10-18 A | 146 | 100% |  |  |  |  | Carey Du Gray [50%] |  |  |
| 148 | 1.7.3 | **Driving Mini-Games** |  | 5d? | 2002-10-22 A | 2002-10-29 | 147 | 20% | 4d? | 210.88d |  |  |  | 32h | 6.4h |
| 149 | 1.7.3.1 | Driving Mini-Games Design |  | 1d? | 2002-10-22 A | 2002-10-23 A |  | 100% |  |  |  | start no earlier than 2002-10-16 | Joe McGinn [80%] | 6.4h | 6.4h |
| 150 | 1.7.3.2 | Mini-Track #1 Design |  | 1d? | 2002-10-23 | 2002-10-24 | 149 |  |  | 210.88d | 0d |  | Joe McGinn [80%] | 6.4h |  |
| 151 | 1.7.3.3 | Mini-Track #2 Design |  | 1d | 2002-10-24 | 2002-10-25 | 150 |  |  | 210.88d | 0d |  | Joe McGinn [80%] | 6.4h |  |
| 152 | 1.7.3.4 | Mini-Track #3 Design |  | 1d | 2002-10-25 | 2002-10-28 | 151 |  |  | 210.88d | 0d |  | Joe McGinn [80%] | 6.4h |  |
| 153 | 1.7.3.5 | Gameplay Design |  | 1d | 2002-10-28 | 2002-10-29 | 152 |  |  | 210.88d |  |  | Joe McGinn [80%] | 6.4h |  |
| 154 | 1.7.4 | Reward Design | milestone | 0d | 2002-10-22 A | 2002-10-22 A | 147 | 100% |  |  |  |  | Carey Du Gray [50%] |  |  |
| 155 | 1.7.5 | HUD/Overlay Design |  | 2d | 2002-10-24 A | 2002-10-28 A | 154 | 100% |  |  |  |  | Carey Du Gray [18.8%] | 3h | 3h |
| 156 | 1.7.6 | FMV Design Revisions for cut Mini-Boss encounters | milestone | 0d? | 2002-10-28 A | 2002-10-28 A | 155 | 100% |  |  |  |  | Carey Du Gray [50%] |  |  |
| 157 | 1.7.7 | Presentation High-Level Design |  | 3d | 2002-10-29 A | 2002-11-01 | 156 | 50% | 1.5d | 206.88d | 0d |  | Carey Du Gray [50%] | 12h | 6h |
| 158 | 1.7.8 | Collectables Design |  | 1d? | 2002-11-01 | 2002-11-04 | 157 |  |  | 206.88d |  |  | Carey Du Gray [50%] | 4h |  |
| 159 | 1.7.9 | Collector Card High-Level Design |  | 3d | 2002-10-16 A | 2002-10-21 A |  | 100% |  |  |  | start no earlier than 2002-10-16 | Chris Mitchell [80%] | 19.2h | 19.2h |
| 160 | 1.7.10 | Collector Card Game Design |  | 3d | 2002-10-21 A | 2002-10-24 A | 159 | 100% |  |  |  |  | Chris Mitchell [80%] | 19.2h | 19.2h |
| 161 | 1.7.11 | AI Design for Collector Card Game |  | 2d | 2002-10-24 A | 2002-10-28 A | 160 | 100% |  |  |  |  | Chris Mitchell [80%] | 12.8h | 12.8h |
| 162 | 1.7.12 | 2D Brainstorming |  | 2d | 2002-10-28 A | 2002-10-30 A | 161 | 100% |  |  |  |  | Chris Mitchell [80%] | 12.8h | 12.8h |
| 163 | 1.7.13 | 2D Game Design |  | 4d | 2002-10-30 A | 2002-11-05 A | 162 | 100% |  |  |  |  | Chris Mitchell [80%] | 25.6h | 25.6h |

Notes:
- 127: All this stuff depends on the level being somewhat finalized.

| ID | WBS | Task | Type | Duration | Start | Finish | Predecessors | Complete | Remaining | Total slack | Free slack | Constraint | Resources | Work | Actual work |
| --- | --- | --- | --- | --- | --- | --- | --- | --- | --- | --- | --- | --- | --- | --- | --- |
| 164 | 1.7.14 | **Dialogue** |  | 11d | 2002-11-05 A | 2002-11-20 | 163 | 82% | 2d | 194.88d |  |  |  | 70.4h | 57.6h |
| 165 | 1.7.14.2 | Write Dialog for Driving Mini-Games |  | 2d | 2002-11-05 A | 2002-11-07 A |  | 100% |  |  |  |  | Chris Mitchell [80%] | 12.8h | 12.8h |
| 166 | 1.7.14.3 | Write Dialog for 2D Games |  | 2d | 2002-11-07 | 2002-11-11 | 165 |  |  | 201.88d |  |  | Chris Mitchell [80%] | 12.8h |  |
| 167 | 1.7.14.4 | Write Dialog for Collector Card Game |  | 2d | 2002-11-11 A | 2002-11-13 A | 166 | 100% |  |  |  |  | Chris Mitchell [80%] | 12.8h | 12.8h |
| 168 | 1.7.14.5 | Revise Dialog for Missions in Level 1 and 2 |  | 1d | 2002-11-13 A | 2002-11-14 A | 167 | 100% |  |  |  |  | Chris Mitchell [80%] | 6.4h | 6.4h |
| 169 | 1.7.14.6 | Revise Dialog for Mission in Level 3, 4, 5, 6 and 7 |  | 3d | 2002-11-14 A | 2002-11-19 A | 168 | 100% |  |  |  |  | Chris Mitchell [80%] | 19.2h | 19.2h |
| 170 | 1.7.14.7 | Revise Dialog for Boss Missions |  | 1d | 2002-11-19 A | 2002-11-20 A | 169 | 100% |  |  |  |  | Chris Mitchell [80%] | 6.4h | 6.4h |
| 171 | 1.7.15 | High-Level Design Revision for Driving Model |  | 3d | 2002-10-29 A | 2002-11-01 A | 153 | 100% |  |  |  |  | Joe McGinn [80%] | 19.2h | 19.2h |
| 172 | 1.7.16 | Tune Vehicle #1 (MS13) |  | 1.5d | 2002-11-01 A | 2002-11-04 A | 171 | 100% |  |  |  |  | Joe McGinn [80%] | 9.6h | 9.6h |
| 173 | 1.7.17 | Tune Vehicle #2 (MS13) | milestone | 0d | 2002-11-04 A | 2002-11-04 A | 172 | 100% |  |  |  |  | Jeff Plumley [80%] |  |  |
| 174 | 1.7.18 | Tune Vehicle #3 (MS13) | milestone | 0d | 2002-11-05 A | 2002-11-05 A | 173 | 100% |  |  |  |  | Jeff Plumley [80%] |  |  |
| 175 | 1.7.19 | Tune Vehicle #4 (MS13) |  | 0.5d | 2002-11-05 | 2002-11-05 | 174 |  |  | 197.97d | 0d |  | Jeff Plumley [80%] |  |  |
| 176 | 1.7.20 | Tune Vehicle #5 (MS13) |  | 0.5d | 2002-11-05 | 2002-11-06 | 175 |  |  | 197.97d | 0d |  | Jeff Plumley [80%] |  |  |
| 177 | 1.7.21 | Tune Vehicle #6 (MS13) |  | 0.5d | 2002-11-06 | 2002-11-06 | 176 |  |  | 197.97d | 0.5d |  | Jeff Plumley [80%] |  |  |
| 178 | 1.7.22 | High-Level Design Revisions to AI (MS13) |  | 3d | 2002-11-07 A | 2002-11-12 | 177 | 60% | 1.2d | 195.68d | 0d |  | Joe McGinn [80%] | 19.2h | 11.52h |
| 179 | 1.7.23 | Traffic AI Tuning (MS13) |  | 1d | 2002-11-12 | 2002-11-13 | 178 |  |  | 195.68d | 0d |  | Joe McGinn [80%] | 6.4h |  |
| 180 | 1.7.24 | Pedestrian AI Tuning |  | 1d | 2002-11-13 | 2002-11-14 | 179 |  |  | 195.68d | 0d |  | Joe McGinn [80%] | 6.4h |  |
| 181 | 1.7.25 | Racing AI Tuning (MS13) |  | 2d | 2002-11-14 | 2002-11-18 | 180 |  |  | 195.68d | 0d |  | Joe McGinn [80%] | 12.8h |  |
| 182 | 1.7.26 | Design Secondary Mission Objectives |  | 2d | 2002-11-18 A | 2002-11-20 | 181 | 40% | 1.2d | 194.88d |  |  | Joe McGinn [80%] | 12.8h | 5.12h |
| 183 | 1.7.27 | First High-Level Design Revisions to Seaside |  | 1d? | 2002-11-20 A | 2002-11-21 A | 182 | 100% |  |  |  |  | Joe McGinn [80%] | 6.4h | 6.4h |
| 184 | 1.7.28 | Revise Mission Design |  | 3d | 2002-11-21 A | 2002-11-26 A | 183 | 100% |  |  |  |  | Joe McGinn [80%] | 19.2h | 19.2h |
| 185 | 1.7.29 | Implement Level #2 -- Mission #1 - 7 |  | 3.5d | 2002-10-16 A | 2002-10-21 A |  | 100% |  |  |  | start no earlier than 2002-10-16 | Jason Bone [50%]; Chris Mitchell [50%] | 28h | 28h |
| 186 | 1.7.30 | Implement Level #3 -- Mission #1 |  | 2d | 2002-10-21 A | 2002-10-23 | 185 | 80% | 0.4d | 207.93d | 0d |  | Jason Bone [80%] | 12.8h | 10.24h |
| 187 | 1.7.31 | Implement Level #3 -- Mission #2 |  | 2d | 2002-10-23 A | 2002-10-25 | 186 | 50% | 1d | 206.93d | 0d |  | Jason Bone [80%] | 12.8h | 6.4h |
| 188 | 1.7.32 | Implement Level #3 -- Mission #3 |  | 1d | 2002-10-25 A | 2002-10-28 | 187 | 50% | 0.5d | 206.43d | 0d |  | Jason Bone [80%] | 6.4h | 3.2h |
| 189 | 1.7.33 | Implement Level #3 -- Mission #4 |  | 1d | 2002-10-28 A | 2002-10-29 | 188 | 50% | 0.5d | 205.93d | 0d |  | Jason Bone [80%] | 6.4h | 3.2h |
| 190 | 1.7.34 | Implement Level #3 -- Mission #5 |  | 1d | 2002-10-29 | 2002-10-30 | 189 |  |  | 205.93d | 0d |  | Jason Bone [80%] | 6.4h |  |
| 191 | 1.7.35 | Implement Level #3 -- Mission #6 |  | 0.5d | 2002-10-30 | 2002-10-31 | 190 |  |  | 205.93d | 0d |  | Jason Bone [80%] | 3.2h |  |
| 192 | 1.7.36 | Implement Level #3 -- Mission #7 |  | 0.5d | 2002-10-31 | 2002-10-31 | 191 |  |  | 205.93d | 0d |  | Jason Bone [80%] | 3.2h |  |
| 193 | 1.7.37 | Implement Level #4 -- Mission #1 - 7 |  | 3.5d | 2002-10-31 A | 2002-11-06 | 192 | 30% | 2.45d | 204.88d |  |  | Jason Bone [80%] | 22.4h | 6.72h |
| 194 | 1.7.38 | High-Level Design Revision to Jumping Puzzles |  | 3d | 2002-10-16 A | 2002-10-21 A |  | 100% |  |  |  | start no earlier than 2002-10-16 | Sheik Sahib [50%]; Carey Du Gray [50%] | 24h | 24h |
| 195 | 1.7.39 | Build Level #2 -- Jumping Puzzle #1 - 7 |  | 3.5d | 2002-10-21 A | 2002-10-24 | 194 | 90% | 0.35d | 204.9d | 0d |  | Sheik Sahib [80%] | 22.4h | 20.16h |
| 196 | 1.7.40 | Build Level #3 -- Jumping Puzzle #1 |  | 3.5d | 2002-10-24 A | 2002-10-30 | 195 | 15% | 2.98d | 204.38d | 0d |  | Sheik Sahib [80%] | 22.4h | 3.36h |
| 197 | 1.7.41 | Build Level #4 -- Jumping Puzzle #1 |  | 3.5d | 2002-10-30 | 2002-11-04 | 196 |  |  | 204.38d | 0d |  | Sheik Sahib [80%] | 22.4h |  |
| 198 | 1.7.42 | Build Revised Mini-Boss Jumping Puzzle #1 |  | 2d | 2002-11-04 | 2002-11-06 | 197 |  |  | 204.38d |  |  | Sheik Sahib [80%] | 12.8h |  |
| 199 | 1.7.43 | Design Revision to Special Effects |  | 2d | 2002-11-04 A | 2002-11-06 A | 158 | 100% |  |  |  |  | Carey Du Gray [50%] | 8h | 8h |
| 200 | 1.7.44 | Design New Vehicles |  | 2d | 2002-11-06 A | 2002-11-08 A | 199 | 100% |  |  |  |  | Carey Du Gray [50%] | 8h | 8h |
| 201 | 1.7.45 | Design Alternate Clothing |  | 2d | 2002-11-08 A | 2002-11-12 A | 200 | 100% |  |  |  |  | Carey Du Gray [50%] | 8h | 8h |
| 202 | 1.7.46 | Traffic Placement -- Level #2 |  | 2d | 2002-11-06 A | 2002-11-08 A | 198 | 100% |  |  |  |  | Sheik Sahib [80%] | 12.8h | 12.8h |
| 203 | 1.7.47 | Traffic Placement -- Level #3 |  | 2d | 2002-11-08 A | 2002-11-12 | 202 | 90% | 0.2d | 198.38d | 0d |  | Sheik Sahib [80%] | 12.8h | 11.52h |
| 204 | 1.7.48 | Traffic Placement -- Level #4 |  | 2d | 2002-11-12 | 2002-11-14 | 203 |  |  | 198.38d |  |  | Sheik Sahib [80%] | 12.8h |  |
| 205 | 1.7.49 | Pedestrian Placement -- Level #1 |  | 1d | 2002-11-14 A | 2002-11-15 A | 204 | 100% |  |  |  |  | Sheik Sahib [80%] | 6.4h | 6.4h |
| 206 | 1.7.50 | Pedestrian Placement -- Level #2 |  | 1d | 2002-11-15 A | 2002-11-18 A | 205 | 100% |  |  |  |  | Sheik Sahib [80%] | 6.4h | 6.4h |
| 207 | 1.7.51 | Pedestrian Placement -- Level #3 |  | 1d | 2002-11-18 | 2002-11-19 | 206 |  |  | 195.38d |  |  | Sheik Sahib [80%] | 6.4h |  |
| 208 | 1.7.52 | Food Placement -- Level #1 |  | 0.5d | 2002-11-19 A | 2002-11-20 A | 207 | 100% |  |  |  |  | Sheik Sahib [80%] | 3.2h | 3.2h |
| 209 | 1.7.53 | Food Placement -- Level #2 |  | 0.5d | 2002-11-20 A | 2002-11-20 A | 208 | 100% |  |  |  |  | Sheik Sahib [80%] | 3.2h | 3.2h |
| 210 | 1.7.54 | Food Placement -- Level #3 |  | 0.5d | 2002-11-20 A | 2002-11-21 A | 209 | 100% |  |  |  |  | Sheik Sahib [80%] | 3.2h | 3.2h |
| 211 | 1.7.55 | Camera Placement -- Level #1 |  | 1d | 2002-11-21 | 2002-11-22 | 210 |  |  | 187.43d | 0d |  | Sheik Sahib [80%] | 6.4h |  |
| 212 | 1.7.56 | Camera Placement -- Level #2 |  | 1d | 2002-11-22 | 2002-11-25 | 211 |  |  | 187.43d | 0d |  | Sheik Sahib [80%] | 6.4h |  |
| 213 | 1.7.57 | Camera Placement -- Level #3 |  | 1d | 2002-11-25 | 2002-11-26 | 212 |  |  | 187.43d | 0d |  | Sheik Sahib [80%] | 6.4h |  |
| 214 | 1.7.58 | Special Collectable Placement -- Level #1 |  | 1d | 2002-11-26 | 2002-11-27 | 213 |  |  | 187.43d | 0d |  | Sheik Sahib [80%] | 6.4h |  |
| 215 | 1.7.59 | Special Collectable Placement -- Level #2 |  | 1d | 2002-11-27 A | 2002-11-28 | 214 | 90% | 0.1d | 186.53d | 0d |  | Sheik Sahib [80%] | 6.4h | 5.76h |
| 216 | 1.7.60 | Special Collectable Placement -- Level #3 |  | 1d | 2002-11-28 A | 2002-11-29 | 215 | 15% | 0.85d | 186.38d | 0d |  | Sheik Sahib [80%] | 6.4h | 0.96h |
| 217 | 1.7.61 | On-Foot Camera Tuning -- Level #1 |  | 0.5d | 2002-11-29 | 2002-11-29 | 216 |  |  | 186.38d | 0d |  | Sheik Sahib [80%] | 3.2h |  |
| 218 | 1.7.62 | On-Foot Camera Tuning -- Level #2 |  | 0.5d | 2002-11-29 | 2002-12-02 | 217 |  |  | 186.38d | 0d |  | Sheik Sahib [80%] | 3.2h |  |
| 219 | 1.7.63 | On-Foot Camera Tuning -- Level #3 |  | 0.5d | 2002-12-02 | 2002-12-02 | 218 |  |  | 186.38d |  |  | Sheik Sahib [80%] | 3.2h |  |
| 220 | 1.7.64 | Driving Gameplay Camera Design |  | 1d? | 2002-11-26 | 2002-11-27 | 184 |  |  | 188.88d | 0d |  | Joe McGinn [80%] | 6.4h |  |
| 221 | 1.7.65 | Driving Gameplay Camera Tuning Template |  | 1d? | 2002-11-27 | 2002-11-28 | 220 |  |  | 188.88d |  |  | Joe McGinn [80%] | 6.4h |  |
| 222 | 1.7.66 | Presentation Camera Design |  | 1d? | 2002-11-12 | 2002-11-13 | 201 |  |  | 199.88d |  |  | Carey Du Gray [50%] | 4h |  |

Notes:
- 173: Joe McGinn (Thu 07/11/02): not my task - Jeff Plumley's / Jeff Plumley (Tue 12/11/02): ==== Published to Microsoft Project server by Wolfgang Hamann on 11/11/02 1:19 PM ===== / Joe McGinn (Thu 07/11/02): not my task - Jeff Plumley's
- 174: Joe McGinn (Thu 07/11/02): not my task - Jeff Plumley's / Jeff Plumley (Tue 12/11/02): ==== Published to Microsoft Project server by Wolfgang Hamann on 11/11/02 1:19 PM ===== / Joe McGinn (Thu 07/11/02): not my task - Jeff Plumley's
- 175: Joe McGinn (Thu 07/11/02): not my task - Jeff Plumley's / Jeff Plumley (Tue 12/11/02): ==== Published to Microsoft Project server by Wolfgang Hamann on 11/11/02 1:19 PM ===== / Joe McGinn (Thu 07/11/02): not my task - Jeff Plumley's
- 176: Joe McGinn (Thu 07/11/02): not my task - Jeff Plumley's / Jeff Plumley (Tue 12/11/02): ==== Published to Microsoft Project server by Wolfgang Hamann on 11/11/02 1:19 PM ===== / Joe McGinn (Thu 07/11/02): not my task - Jeff Plumley's
- 177: Joe McGinn (Thu 07/11/02): not my task - Jeff Plumley's / Jeff Plumley (Tue 12/11/02): ==== Published to Microsoft Project server by Wolfgang Hamann on 11/11/02 1:19 PM ===== / Joe McGinn (Thu 07/11/02): not my task - Jeff Plumley's

| ID | WBS | Task | Duration | Start | Finish | Predecessors | Complete | Remaining | Total slack | Free slack | Constraint | Resources | Work | Actual work |
| --- | --- | --- | --- | --- | --- | --- | --- | --- | --- | --- | --- | --- | --- | --- |
| 223 | 8 | **Milestone 14 (Dec 15th)** | 155d? | 2002-04-16 | 2002-11-19 |  |  |  | 195.88d |  |  |  | 560h |  |
| 231 | 3.8.8 | Dialogue Piping & Event Creation | 1d | 2002-11-18 | 2002-11-19 |  |  |  | 195.88d |  | start no earlier than 2002-11-18 | Chris Mitchell | 8h |  |
| 242 | 3.8.19 | Dialogue Piping & Event Creation | 1d? | 2002-11-18 | 2002-11-19 |  |  |  | 195.88d |  | start no earlier than 2002-11-18 | Darren Evenson | 8h |  |
| 296 | 9 | Milestone 15 - Alpha (Jan 15th) | 1d? | 2002-04-16 | 2002-04-17 |  |  |  | 349.88d |  |  |  |  |  |
| 297 | 9 | Milestone 16 - (Feb 15th) | 1d? | 2002-04-16 | 2002-04-17 |  |  |  | 349.88d |  |  |  |  |  |
| 298 | 9 | Milestone 17 - (March 15th) | 1d? | 2002-04-16 | 2002-04-17 |  |  |  | 349.88d |  |  |  |  |  |
| 299 | 3.12 | Milestone 18 - (April 15th) | 1d? | 2003-01-22 | 2003-01-22 |  |  |  | 149d |  | start no earlier than 2003-01-22 |  |  |  |
| 300 | 3.13 | Milestone 19 - (May 15th) | 1d? | 2003-01-22 | 2003-01-22 |  |  |  | 149d |  | start no earlier than 2003-01-22 |  |  |  |
| 301 | 3.14 | Milestone 20 - (June 15th) | 1d? | 2003-01-22 | 2003-01-22 |  |  |  | 149d |  | start no earlier than 2003-01-22 |  |  |  |
| 303 | 10 | **ART TASKS** | 281d? | 2002-04-16 A | 2003-05-12 |  | 10% | 252.77d? | 69.88d |  |  |  | 11666.9h | 1973.09h |
| 304 | 11 | **Milestone 7 (May 15th)** | 21d | 2002-04-16 A | 2002-05-15 |  | 55% | 9.54d | 329.88d |  |  |  | 1018h | 531.2h |
| 305 | 11.1 | Preliminary FE Concept Design | 21d | 2002-04-16 | 2002-05-15 |  |  |  | 329.88d |  |  | Yayoi Maruno [25%] | 42h |  |
| 306 | 11.2 | **World Building** | 20d | 2002-04-16 A | 2002-05-14 |  | 54% | 9.2d | 330.88d |  |  |  | 640h | 254.4h |
| 307 | 11.2.1 | **Level 3-Design & Preliminary Construction** | 10d | 2002-04-16 A | 2002-04-30 |  | 73% | 2.7d | 340.88d |  |  |  | 320h | 226.4h |
| 308 | 11.2.1.1 | Landmarks (Block out) | 4d | 2002-04-16 A | 2002-04-22 A |  | 100% |  |  |  |  | Jeff Pidsadny [50%]; Kevin Fink; Trevor Lim; Vincent Chin | 112h | 112h |
| 309 | 11.2.1.2 | Landmarks (1st textures) | 3d | 2002-04-22 A | 2002-04-25 | 308 | 25% | 2.25d | 333.12d | 0d |  | Jeff Pidsadny [50%]; Kevin Fink; Trevor Lim; Vincent Chin | 84h | 21h |
| 310 | 11.2.1.3 | Props | 3d | 2002-04-25 A | 2002-04-30 | 309 | 75% | 0.75d | 330.88d | 0d |  | Jeff Pidsadny [50%]; Kevin Fink; Trevor Lim; Vincent Chin | 84h | 63h |
| 311 | 11.2.1.4 | Track (diagram/plan) | 3d | 2002-04-16 A | 2002-04-19 A |  | 100% |  |  |  |  | Jeff Pidsadny [50%] | 12h | 12h |
| 312 | 11.2.1.5 | Track (initial layout) | 4d | 2002-04-19 A | 2002-04-25 A | 311 | 100% |  |  |  |  | Jeff Pidsadny [50%] | 16h | 16h |
| 313 | 11.2.1.6 | Track (revision/1st pass) | 3d | 2002-04-25 A | 2002-04-30 | 312 | 20% | 2.4d | 340.88d |  |  | Jeff Pidsadny [50%] | 12h | 2.4h |
| 314 | 11.2.2 | **Level 4-Design & Preliminary Construction** | 10d | 2002-04-30 A | 2002-05-14 |  | 35% | 6.5d | 330.88d |  |  |  | 320h | 28h |
| 315 | 11.2.2.1 | Landmarks (Block out) | 4d | 2002-04-30 | 2002-05-06 | 310 |  |  | 330.88d | 0d |  | Jeff Pidsadny [50%]; Kevin Fink; Trevor Lim; Vincent Chin | 112h |  |
| 316 | 11.2.2.2 | Landmarks (1st textures) | 3d | 2002-05-06 | 2002-05-09 | 315 |  |  | 330.88d | 0d |  | Jeff Pidsadny [50%]; Kevin Fink; Trevor Lim; Vincent Chin | 84h |  |
| 317 | 11.2.2.3 | Props | 3d | 2002-05-09 | 2002-05-14 | 316 |  |  | 330.88d |  |  | Jeff Pidsadny [50%]; Kevin Fink; Trevor Lim; Vincent Chin | 84h |  |
| 318 | 11.2.2.4 | Track (diagram/plan) | 3d | 2002-04-30 A | 2002-05-03 A | 313 | 100% |  |  |  |  | Jeff Pidsadny [50%] | 12h | 12h |
| 319 | 11.2.2.5 | Track (initial layout) | 4d | 2002-05-03 A | 2002-05-09 A | 318 | 100% |  |  |  |  | Jeff Pidsadny [50%] | 16h | 16h |
| 320 | 11.2.2.6 | Track (revision/1st pass) | 3d | 2002-05-09 | 2002-05-14 | 319 |  |  | 330.88d |  |  | Jeff Pidsadny [50%] | 12h |  |

Notes:
- 223: Milestone 14 Build Features / Art Cutoff: December 6 / CD delivery date: December 13 / Sony Performance Analyzer run: early December (tentative) / ·Level Art / oSpecial effects for Seaside complete / oOcean effect for Seaside complete / oSuburbs and Downtown interiors completed / §3 for Suburbs / §2 for Downtown / oSuburbs level completed with all level re-design changes made / oPolishing on Downtown and Seaside levels / ·FMV pipeline for all 6 SKUs complete / ·6 generic pedestrians modeled / ·Final logo FMVs for all 6 SKUs in the game / ·FMV #6, #7 animatic complete / ·Terrain tagging in and all art complete / ·All effects that use terrain tagging complete / oSound effects / oSkid marks / oParticle effects / oTerrain specific friction / oTerrain specific controller rumble / ·Can play the game with accessories: / oGameCube steering wheel / oGameCube Wavebird / oGameboy Advance as a controller / oLogitech PS2 steering wheel / ·Continuation of work on FMV #1 through #5 / ·Iris transition for interiors complete and in all interiors / ·Interior special gag demonstration camera working on for the Kwik-E-Mart / ·Can have conversations in interiors / ·Can trigger interactive gags in interiors and exteriors / ·Secondary mission objectives working in the game / ·Bonus missions working in the game / ·Can select and play unlocked movies from the front end / ·Phone booth re-design complete / oCan select all available cars / oCan select all available clothing / ·End credits fully designed and partially implemented / ·Code for randomized load of generic pedestrians working / ·HUD re-design complete / ·All 2D collector card art complete / ·All breakable cameras placed in all levels / ·All collector cards placed in levels 2, 3, 5 and 6 / ·Presentation flow re-design complete / oMission start / oMission finish / oStreet races / oBonus missions / oRewards / ·Level load newspaper screens complete / ·Generic load screen (game to front end) complete / ·All missions implemented and present in the game / ·All bonus vehicles complete and in the game / ·All bonus character skins complete / ·All generic pedestrian models and animations complete / ·All Halloween specific design requirements complete / ·All Halloween specific characters complete / ·All areas causing problematic camera collisions identified and replaced with rail cameras as appropriate / ·Rumble on controllers implemented and tuned according to ground surface, collision strength, etc. / ·Load cancels working correctly / ·Support for turning off environmental maps (or changing to an alternate map) in interiors, tunnels, etc. / ·Shadow volumes for tunnels, interiors, etc. / ·Object fade-in effect incorporated into the game where needed / ·Shadow volume and environmental mapping switches working for covered areas in the world / ·Half of all interactive gags working in the game with animations and placeholder audio / ·All randomized textures (e.g. billboards) finalized and in the game / ·All memory card screens complete / ·Street race missions working / ·Final in-car camera tuning for Homer, Bart, Lisa walker cars / ·All reward systems designed, implemented and integrated with gameplay / ·World geometry auto-optimize step integrated into art pipeline / ·Mipmap levels tuned on PS2 / ·Boulevard heaps integrated into dynamic loading system / ·Language auto-select / language select working in PAL build on all 3 platforms / ·Positional sounds working in the game / ·Sounds attached to moving objects working / ·Triggers for ambient sounds working / ·Car engine sound code finalized / ·First-pass mission music in the game / ·First-pass location based sounds in the game / ·Some final ambient sounds in the game / Switch to different music when in interiors working

| ID | WBS | Task | Duration | Start | Finish | Predecessors | Complete | Remaining | Total slack | Constraint | Resources | Work | Actual work |
| --- | --- | --- | --- | --- | --- | --- | --- | --- | --- | --- | --- | --- | --- |
| 321 | 11.3 | **Characters** | 21d | 2002-04-16 A | 2002-05-15 |  | 89% | 2.4d | 329.88d |  |  | 168h | 148.8h |
| 322 | 11.3.1 | 8 Redo Characters w/ LOD's | 15d | 2002-04-16 A | 2002-05-07 A |  | 100% |  |  |  | Aryan Hanbeck | 120h | 120h |
| 323 | 11.3.2 | Redo Skeletons on 8 main and 8 redo characters. | 6d | 2002-05-07 A | 2002-05-15 | 322 | 60% | 2.4d | 329.88d |  | Aryan Hanbeck | 48h | 28.8h |
| 324 | 11.4 | **Animations** | 21d | 2002-04-16 A | 2002-05-15 |  | 76% | 5d | 329.88d |  |  | 168h | 128h |
| 325 | 11.4.1 | E3 Promo Demo | 11d | 2002-04-16 A | 2002-05-01 A |  | 100% |  |  |  | Jeremy Mesana | 88h | 88h |
| 326 | 11.4.2 | All Animations for 1 Walker | 10d | 2002-05-01 A | 2002-05-15 | 325 | 50% | 5d | 329.88d |  | Jeremy Mesana | 80h | 40h |
| 327 | 12 | **Milestone 8 (June 15th)** | 43d? | 2002-04-16 | 2002-06-17 |  |  |  | 307.88d |  |  | 752h |  |
| 328 | 12.1 | FE Concept Design (1st pass) | 20d | 2002-05-16 | 2002-06-14 |  |  |  | 308.88d | start no earlier than 2002-05-16 | Yayoi Maruno [25%] | 40h |  |
| 329 | 12.2 | Final art design | 20d | 2002-05-16 | 2002-06-14 |  |  |  | 308.88d | start no earlier than 2002-05-16 | Yayoi Maruno [25%] | 40h |  |
| 330 | 12.3 | **World Building** | 1d? | 2002-04-16 | 2002-04-17 |  |  |  | 349.88d |  |  |  |  |
| 331 | 12.3.1 | Level 4 - 1st Pass | 1d? | 2002-04-16 | 2002-04-17 |  |  |  | 349.88d |  |  |  |  |
| 332 | 12.3.2 | Level 3 - 1st Pass | 1d? | 2002-04-16 | 2002-04-17 |  |  |  | 349.88d |  |  |  |  |
| 333 | 12.4 | **Characters** | 21d | 2002-05-16 | 2002-06-17 |  |  |  | 307.88d |  |  | 168h |  |
| 334 | 12.4.1 | 4 New Characters w/ LOD's | 21d | 2002-05-16 | 2002-06-17 |  |  |  | 307.88d | start no earlier than 2002-05-16 | Aryan Hanbeck | 168h |  |
| 335 | 12.5 | **Vehicles** | 21d | 2002-05-16 | 2002-06-17 |  |  |  | 307.88d |  |  | 168h |  |
| 336 | 12.5.1 | 4 Main Vehicles | 21d | 2002-05-16 | 2002-06-17 |  |  |  | 307.88d | start no earlier than 2002-05-16 | Kevin Fink | 168h |  |
| 337 | 12.6 | **Animations** | 21d | 2002-05-16 | 2002-06-17 |  |  |  | 307.88d |  |  | 336h |  |
| 338 | 12.6.1 | All Animations for 3 or 4 Walkers | 21d | 2002-05-16 | 2002-06-17 |  |  |  | 307.88d | start no earlier than 2002-05-16 | Jeremy Mesana; Trevor Lim | 336h |  |
| 339 | 12.7 | FMV Storyboards Complete | 21d | 2002-05-16 | 2002-06-17 |  |  |  | 307.88d | start no earlier than 2002-05-16 |  |  |  |
| 340 | 13 | **Milestone 9 (July 15th)** | 1d? | 2002-04-16 | 2002-04-17 |  |  |  | 349.88d |  |  |  |  |
| 341 | 13.1 | Level 3 & 4 - 1st Pass | 1d? | 2002-04-16 | 2002-04-17 |  |  |  | 349.88d |  |  |  |  |
| 342 | 13.2 | 8 FMV Characters | 1d? | 2002-04-16 | 2002-04-17 |  |  |  | 349.88d |  |  |  |  |
| 343 | 13.3 | 8 Main Vehicles | 1d? | 2002-04-16 | 2002-04-17 |  |  |  | 349.88d |  |  |  |  |
| 344 | 13.4 | All Animations for 2 Walkers | 1d? | 2002-04-16 | 2002-04-17 |  |  |  | 349.88d |  |  |  |  |
| 345 | 13.5 | All Driver Animations for 5 body types | 1d? | 2002-04-16 | 2002-04-17 |  |  |  | 349.88d |  |  |  |  |
| 346 | 13.6 | All passenger animations for 3 body types | 1d? | 2002-04-16 | 2002-04-17 |  |  |  | 349.88d |  |  |  |  |
| 347 | 13.7 | HUD Design Concepts | 1d? | 2002-04-16 | 2002-04-17 |  |  |  | 349.88d |  |  |  |  |

| ID | WBS | Task | Duration | Start | Finish | Predecessors | Complete | Remaining | Total slack | Free slack | Constraint | Resources | Work | Actual work |
| --- | --- | --- | --- | --- | --- | --- | --- | --- | --- | --- | --- | --- | --- | --- |
| 348 | 14 | **Milestone 10 (Aug 15th)** | 1d? | 2002-04-16 | 2002-04-17 |  |  |  | 349.88d |  |  |  |  |  |
| 349 | 14.1 | Levels 1 & 2 - 2nd Pass (send to FOX for Art Review) | 1d? | 2002-04-16 | 2002-04-17 |  |  |  | 349.88d |  |  |  |  |  |
| 350 | 14.2 | 6 New Characters w/ LOD's | 1d? | 2002-04-16 | 2002-04-17 |  |  |  | 349.88d |  |  |  |  |  |
| 351 | 14.3 | 4 FMV Characters | 1d? | 2002-04-16 | 2002-04-17 |  |  |  | 349.88d |  |  |  |  |  |
| 352 | 14.4 | All Boss Animations | 1d? | 2002-04-16 | 2002-04-17 |  |  |  | 349.88d |  |  |  |  |  |
| 353 | 14.5 | All Passenger Animations for 2 body types | 1d? | 2002-04-16 | 2002-04-17 |  |  |  | 349.88d |  |  |  |  |  |
| 354 | 14.6 | All pedestrian aninmations for 5 body types | 1d? | 2002-04-16 | 2002-04-17 |  |  |  | 349.88d |  |  |  |  |  |
| 355 | 14.7 | FMV/NIS Modeling (1 week per 4 modelers) | 1d? | 2002-04-16 | 2002-04-17 |  |  |  | 349.88d |  |  |  |  |  |
| 356 | 14.8 | Start FMV's/NIS's | 1d? | 2002-04-16 | 2002-04-17 |  |  |  | 349.88d |  |  |  |  |  |
| 357 | 14.9 | <New Animator #2> | 1d? | 2002-04-16 | 2002-04-17 |  |  |  | 349.88d |  |  |  |  |  |
| 358 | 15 | **Milestone 11 (Sep 15th)** | 1d? | 2002-04-16 | 2002-04-17 |  |  |  | 349.88d |  |  |  |  |  |
| 359 | 15.1 | Levels 3 & 4 - 2nd Pass | 1d? | 2002-04-16 | 2002-04-17 |  |  |  | 349.88d |  |  |  |  |  |
| 360 | 15.2 | 6 New Characters w/ LOD's | 1d? | 2002-04-16 | 2002-04-17 |  |  |  | 349.88d |  |  |  |  |  |
| 361 | 15.3 | 4 Redo Characters | 1d? | 2002-04-16 | 2002-04-17 |  |  |  | 349.88d |  |  |  |  |  |
| 362 | 15.4 | FMV/NIS Modeling (1 week per 4 modelers) | 1d? | 2002-04-16 | 2002-04-17 |  |  |  | 349.88d |  |  |  |  |  |
| 363 | 15.5 | HUD Implementation Complete | 1d? | 2002-04-16 | 2002-04-17 |  |  |  | 349.88d |  |  |  |  |  |
| 364 | 15.6 | SFX Completed | 1d? | 2002-04-16 | 2002-04-17 |  |  |  | 349.88d |  |  |  |  |  |
| 365 | 2.6 | **Milestone 12 (Oct 15th)** | 132d? | 2002-04-16 A | 2002-10-17 |  | 20% | 105.1d? | 218.88d |  |  |  | 992h | 233.59h |
| 366 | 2.6.1 | **Special FX (*this area of the game needs a lot of time and attention and close one on one tech support)** | 23d? | 2002-09-16 A | 2002-10-17 |  | 40% | 13.75d? | 218.88d |  |  |  | 280h | 117.75h |
| 367 | 2.6.1.1 | **Mission presentation elements:** | 14d? | 2002-09-16 A | 2002-10-04 |  | 42% | 8.13d? | 227.88d |  |  | Aryan Hanbeck | 216h | 90.55h |
| 368 | 2.6.1.1.1 | Some sort of special effect to draw attention better overall for all icons. | 1d? | 2002-09-16 A | 2002-09-17 |  | 75% | 0.25d? | 237.62d | 0d | start no earlier than 2002-09-16 | Aryan Hanbeck | 8h | 6h |
| 369 | 2.6.1.1.2 | Get mission detail icon | 1d? | 2002-09-17 A | 2002-09-18 | 368 | 75% | 0.25d? | 236.88d | 0d |  | Aryan Hanbeck | 8h | 6h |
| 370 | 2.6.1.1.3 | Present icon | 1d? | 2002-09-18 A | 2002-09-19 | 369 | 75% | 0.25d? | 236.12d | 0d |  | Aryan Hanbeck | 8h | 6h |
| 371 | 2.6.1.1.4 | Ai chase vehicle icon | 1d? | 2002-09-19 A | 2002-09-20 | 370 | 75% | 0.25d? | 235.38d | 1d |  | Aryan Hanbeck | 8h | 6h |
| 372 | 16.1.1.6 | Power couplings need electrical field effect | 1d? | 2002-09-23 A | 2002-09-24 | 371 | 50% | 0.5d? | 233.88d | 0d |  | Aryan Hanbeck | 8h | 4h |
| 373 | 16.1.1.7 | Food collectible icon | 1d? | 2002-09-24 | 2002-09-25 | 372 |  |  | 233.88d | 0d |  | Aryan Hanbeck | 8h |  |
| 374 | 16.1.1.8 | Button pressing flashy effect | 1d? | 2002-09-25 | 2002-09-26 | 373 |  |  | 233.88d |  |  | Aryan Hanbeck | 8h |  |
| 375 | 16.1.1.9 | Collector card glowing icon and getting it icon | 1d? | 2002-09-26 A | 2002-09-27 A | 374 | 100% |  |  |  |  | Aryan Hanbeck | 8h | 8h |
| 376 | 16.1.1.10 | Destroy particle effect for Video game cargo | 1d? | 2002-09-27 A | 2002-09-30 | 375 | 95% | 0.05d? | 1d | 0d |  | Aryan Hanbeck | 8h | 7.6h |
| 377 | 16.1.1.11 | After effect for collecting Mission icon | 1d? | 2002-09-30 | 2002-10-01 | 376 |  |  | 1d | 0d |  | Aryan Hanbeck | 8h |  |
| 378 | 16.1.1.12 | After effect for collecting food icons | 1d? | 2002-10-01 | 2002-10-02 | 377 |  |  | 1d | 0d |  | Aryan Hanbeck | 8h |  |
| 379 | 16.1.1.13 | Hud icons for food, mission collectibles and collector card (animations too) | 1d? | 2002-10-02 | 2002-10-03 | 378 |  |  | 1d | 0d |  | Aryan Hanbeck | 8h |  |
| 380 | 16.1.1.14 | Boss Arena ! - Textured & Modeled | 1d? | 2002-10-03 | 2002-10-04 | 379 |  |  | 1d | 0d |  | Kevin Fink | 8h |  |

Notes:
- 369: exclamation mark
- 372: won't get done unless travis' replacement can get Aryan up and running
- 374: power plant is holding Aryan up: these are on the vending machines in the power plant
- 375: not in due to Travis' replacement
- 376: art is done, waiting on coders
- 377: will get in for the 18th. Art will be done, ? implemention wrt code?
- 378: will probably move to next ms
- 379: next ms
- 380: ? may not get done?

| ID | WBS | Task | Duration | Start | Finish | Predecessors | Complete | Remaining | Total slack | Free slack | Constraint | Resources | Work | Actual work |
| --- | --- | --- | --- | --- | --- | --- | --- | --- | --- | --- | --- | --- | --- | --- |
| 381 | 2.6.1.2 | **Interior indicator (player needs visual to get into interior)** | 9d? | 2002-10-04 A | 2002-10-17 | 380 | 38% | 5.6d? | 218.88d |  |  |  | 64h | 27.2h |
| 382 | 2.6.1.2.1 | Water Special FX animation | 1d? | 2002-10-04 | 2002-10-07 |  |  |  | 226.88d |  |  | Aryan Hanbeck [50%]; Elliott Roessler [50%] | 8h |  |
| 383 | 2.6.1.2.2 | Small tree breakable effect. | 1d? | 2002-10-07 A | 2002-10-08 A | 382 | 100% |  |  |  |  | Aryan Hanbeck [50%]; Elliott Roessler [50%] | 8h | 8h |
| 384 | 2.6.1.2.3 | Power coupling effect in and working to iterate | 1d? | 2002-10-08 | 2002-10-09 | 383 |  |  | 224.88d |  |  | Aryan Hanbeck [50%]; Elliott Roessler [50%] | 8h |  |
| 385 | 2.6.1.2.4 | Bush particles | 1d? | 2002-10-09 A | 2002-10-10 A | 384 | 100% |  |  |  |  | Aryan Hanbeck [50%]; Elliott Roessler [50%] | 8h | 8h |
| 386 | 2.6.1.2.5 | Big tree particles and possible camera shake | 1d? | 2002-10-10 A | 2002-10-11 | 385 | 50% | 0.5d? | 219.78d | 0d |  | Aryan Hanbeck [50%]; Elliott Roessler [50%] | 8h | 4h |
| 387 | 2.6.1.2.6 | Refinement on spark effect (may need two variations) soft and hard hits | 1d? | 2002-10-11 A | 2002-10-14 | 386 | 90% | 0.1d? | 218.88d | 0d |  | Aryan Hanbeck [50%]; Elliott Roessler [50%] | 8h | 7.2h |
| 388 | 2.6.1.2.7 | Nuclear glow bubbles rising particle effect in powerplant | 1d? | 2002-10-14 | 2002-10-15 | 387 |  |  | 218.88d | 0d |  | Aryan Hanbeck [50%]; Elliott Roessler [50%] | 8h |  |
| 389 | 2.6.1.2.8 | Other ambient animations to be determined (to review game) | 1d? | 2002-10-15 | 2002-10-16 | 388 |  |  | 218.88d | 0d |  |  |  |  |
| 390 | 2.6.1.2.9 | Boss arena effects: Need to confirm a list | 1d? | 2002-10-16 | 2002-10-17 | 389 |  |  | 218.88d |  |  | Aryan Hanbeck [50%]; Elliott Roessler [50%] | 8h |  |
| 391 | 2.6.2 | **Downtown Level:** | 17d? | 2002-09-16 A | 2002-10-09 |  | 11% | 15.05d? | 224.88d |  |  |  | 184h | 31.2h |
| 392 | 2.6.2.1 | All geometry, tracks, and final textures completed | 1d? | 2002-09-16 A | 2002-09-17 |  | 60% | 0.4d? | 226.22d | 0d | start no earlier than 2002-09-16 | Jeff Pidsadny; Sarah Meagher [25%]; Vincent Chin [25%]; Sanela Mickovic [25%]; Ross Young [25%] | 16h | 9.6h |
| 393 | 2.6.2.2 | All collision volumes in place | 1d? | 2002-09-17 A | 2002-09-18 | 392 | 5% | 0.95d? | 226.18d | 0d |  | Jeff Pidsadny; Sarah Meagher [25%]; Vincent Chin [25%]; Sanela Mickovic [25%]; Ross Young [25%] | 16h | 0.8h |
| 394 | 2.6.2.3 | All moveable objects in place | 1d? | 2002-09-18 A | 2002-09-19 | 393 | 5% | 0.95d? | 226.12d | 0d |  | Jeff Pidsadny; Sarah Meagher [25%]; Vincent Chin [25%]; Sanela Mickovic [25%]; Ross Young [25%] | 16h | 0.8h |
| 395 | 2.6.2.4 | All breakable object in place (Need tech implementation ASAP) | 1d? | 2002-09-19 A | 2002-09-20 | 394 | 5% | 0.95d? | 226.07d | 0d |  | Jeff Pidsadny; Sarah Meagher [25%]; Vincent Chin [25%]; Sanela Mickovic [25%]; Ross Young [25%] | 16h | 0.8h |
| 396 | 2.6.2.5 | Geometry optimization step complete (all geometry at final poly count) | 1d? | 2002-09-20 | 2002-09-23 | 395 |  |  | 226.07d | 0d |  | Jeff Pidsadny; Sarah Meagher [25%]; Vincent Chin [25%]; Sanela Mickovic [25%]; Ross Young [25%] | 16h |  |
| 397 | 2.6.2.6 | 3 interiors in the level: | 1d? | 2002-09-23 | 2002-09-24 | 396 |  |  | 226.07d | 0d |  | Eric Madill | 8h |  |
| 398 | 2.6.2.7 | Final geometry, collisions, and character animations | 1d? | 2002-09-24 | 2002-09-25 | 397 |  |  | 226.07d | 0d |  |  |  |  |
| 399 | 2.6.2.8 | Final textures | 1d? | 2002-09-25 A | 2002-09-26 | 398 | 85% | 0.15d? | 225.22d | 0d |  | Jeff Pidsadny; Sarah Meagher [25%]; Vincent Chin [25%]; Sanela Mickovic [25%]; Ross Young [25%] | 16h | 13.6h |
| 400 | 2.6.2.9 | Lighting and light maps | 1d? | 2002-09-26 A | 2002-09-27 | 399 | 15% | 0.85d? | 225.07d | 0d |  | Jeff Pidsadny; Sarah Meagher [25%]; Vincent Chin [25%]; Sanela Mickovic [25%]; Ross Young [25%] | 16h | 2.4h |
| 401 | 2.6.2.10 | Camera placement | 1d? | 2002-09-27 | 2002-09-30 | 400 |  |  | 225.07d | 0d |  |  |  |  |
| 402 | 2.6.2.11 | All hailing points (phone booths and bus stops) modelled and placed | 1d? | 2002-09-30 | 2002-10-01 | 401 |  |  | 225.07d | 0d |  | Jeff Pidsadny; Sarah Meagher [25%]; Vincent Chin [25%]; Sanela Mickovic [25%]; Ross Young [25%] | 16h |  |
| 403 | 2.6.2.12 | All local world spheres completed | 1d? | 2002-10-01 A | 2002-10-02 | 402 | 20% | 0.8d? | 224.88d | 0d |  | Jeff Pidsadny; Sarah Meagher [25%]; Vincent Chin [25%]; Sanela Mickovic [25%]; Ross Young [25%] | 16h | 3.2h |
| 404 | 2.6.2.13 | All collectible cards placed in the level | 1d? | 2002-10-02 | 2002-10-03 | 403 |  |  | 224.88d | 0d |  |  |  |  |
| 405 | 2.6.2.14 | All food icons placed in the level | 1d? | 2002-10-03 | 2002-10-04 | 404 |  |  | 224.88d | 0d |  |  |  |  |
| 406 | 2.6.2.15 | All destructible cameras placed in the level | 1d? | 2002-10-04 | 2002-10-07 | 405 |  |  | 224.88d | 0d |  |  |  |  |
| 407 | 2.6.2.16 | All death volumes placed in the level | 1d? | 2002-10-07 | 2002-10-08 | 406 |  |  | 224.88d | 0d |  | Jeff Pidsadny; Sarah Meagher [25%]; Vincent Chin [25%]; Sanela Mickovic [25%]; Ross Young [25%] | 16h |  |
| 408 | 2.6.2.17 | Light maps and shadow maps complete | 1d? | 2002-10-08 | 2002-10-09 | 407 |  |  | 224.88d |  |  | Jeff Pidsadny; Sarah Meagher [25%]; Vincent Chin [25%]; Sanela Mickovic [25%]; Ross Young [25%] | 16h |  |

Notes:
- 382: will not be in for this ms, / basically for level 2 / next ms
- 384: art is done. see above re: power plant
- 386: camera shakes not done depends on coders
- 388: see above re: powerplant. / next ms
- 390: may not happen
- 396: one pass will get done for this ms
- 400: LIGHTMAPS WON'T HAPPEN
- 402: designers need to place
- 407: ?? what's happening with these. check with Yayoi. & who should do these
- 408: out of the game

| ID | WBS | Task | Duration | Start | Finish | Predecessors | Complete | Remaining | Total slack | Free slack | Constraint | Resources | Work | Actual work |
| --- | --- | --- | --- | --- | --- | --- | --- | --- | --- | --- | --- | --- | --- | --- |
| 409 | 2.6.3 | **Suburbs Level:** | 125d? | 2002-04-16 A | 2002-10-08 |  | 16% | 105.37d? | 225.88d |  |  |  | 528h | 84.64h |
| 410 | 2.6.3.1 | Breakables in place | 1d? | 2002-09-16 A | 2002-09-17 |  | 80% | 0.2d? | 240.88d |  | start no earlier than 2002-09-16 | Aryan Hanbeck [50%]; Robert Peet [50%] | 8h | 6.4h |
| 411 | 2.6.3.2 | Light maps implemented | 1d? | 2002-04-16 | 2002-04-17 |  |  |  | 347.88d | 0d |  | Robert Peet | 8h |  |
| 412 | 2.6.3.3 | Optimization of textures | 1d? | 2002-04-17 | 2002-04-18 | 411 |  |  | 347.88d | 0d |  | Robert Peet | 8h |  |
| 413 | 2.6.3.4 | Gameplay puzzle refine and complete (working with designer) | 1d? | 2002-04-18 | 2002-04-19 | 412 |  |  | 347.88d |  |  | Robert Peet | 8h |  |
| 414 | 2.6.3.5 | **3 interiors in the level:** | 4d? | 2002-09-16 | 2002-09-20 |  |  |  | 237.88d |  |  |  | 32h |  |
| 415 | 2.6.3.5.1 | Final geometry, collisions, and character animations | 1d? | 2002-09-16 | 2002-09-17 |  |  |  | 237.88d | 0d | start no earlier than 2002-09-16 | Eric Madill | 8h |  |
| 416 | 2.6.3.5.2 | Final textures | 1d? | 2002-09-17 | 2002-09-18 | 415 |  |  | 237.88d | 0d |  | Eric Madill | 8h |  |
| 417 | 2.6.3.5.3 | Lighting and light maps | 1d? | 2002-09-18 | 2002-09-19 | 416 |  |  | 237.88d | 0d |  | Eric Madill | 8h |  |
| 418 | 2.6.3.5.4 | Camera placement | 1d? | 2002-09-19 | 2002-09-20 | 417 |  |  | 237.88d |  |  | Eric Madill | 8h |  |
| 419 | 2.6.3.6 | All local world spheres completed | 1d? | 2002-04-16 | 2002-04-17 |  |  |  | 349.88d |  |  | Vincent Chin | 8h |  |
| 420 | 2.6.3.7 | **Animations** | 16d? | 2002-09-16 A | 2002-10-08 |  | 55% | 7.22d? | 225.88d |  |  |  | 136h | 78.24h |
| 421 | 2.6.3.7.1 | In-game character animations refine and finalize (pending no design changes) | 1d? | 2002-09-16 A | 2002-09-17 |  | 80% | 0.2d? | 240.88d |  | start no earlier than 2002-09-16 | Jeremy Mesana [25%]; Yousuf Mapara [25%]; Ron Sombilon [25%]; Trevor Lim [25%] | 8h | 6.4h |
| 422 | 2.6.3.7.2 | Pedestrian animations refine (Pending on when getting implemented) | 1d? | 2002-09-17 A | 2002-09-18 A | 421 | 100% |  |  |  |  | Jeremy Mesana [25%]; Yousuf Mapara [25%]; Ron Sombilon [25%]; Trevor Lim [25%] | 8h | 8h |
| 423 | 2.6.3.7.3 | Boss animations for all boss encounters | 1d? | 2002-09-18 | 2002-09-19 | 422 |  |  | 236.88d | 0d |  | Jeremy Mesana [25%]; Yousuf Mapara [25%]; Ron Sombilon [25%]; Trevor Lim [25%] | 8h |  |
| 424 | 2.6.3.7.4 | Boss NIS for intro sequences | 1d? | 2002-09-19 | 2002-09-20 | 423 |  |  | 236.88d | 0d |  | Jeremy Mesana [25%]; Yousuf Mapara [25%]; Ron Sombilon [25%]; Trevor Lim [25%] | 8h |  |
| 425 | 2.6.3.7.5 | Boss NIS for ending win/lose sequences | 1d? | 2002-09-20 | 2002-09-23 | 424 |  |  | 236.88d |  |  | Jeremy Mesana [25%]; Yousuf Mapara [25%]; Ron Sombilon [25%]; Trevor Lim [25%] | 8h |  |
| 426 | 2.6.3.7.6 | ALL FMV’s storyboarded | 1d? | 2002-09-23 A | 2002-09-24 A | 425 | 100% |  |  |  |  | Jeremy Mesana [25%]; Yousuf Mapara [25%]; Ron Sombilon [25%]; Trevor Lim [25%] | 8h | 8h |
| 427 | 2.6.3.7.7 | First animatic of FMV 2 | 1d? | 2002-09-24 A | 2002-09-25 A | 426 | 100% |  |  |  |  | Jeremy Mesana [25%]; Yousuf Mapara [25%]; Ron Sombilon [25%]; Trevor Lim [25%] | 8h | 8h |
| 428 | 2.6.3.7.8 | Refinements to FMV1 (Yayoi to review) | 1d? | 2002-09-25 A | 2002-09-26 A | 427 | 100% |  |  |  |  | Jeremy Mesana [25%]; Yousuf Mapara [25%]; Ron Sombilon [25%]; Trevor Lim [25%] | 8h | 8h |
| 429 | 2.6.3.7.9 | Create new gags ( Prioritize with designer) | 1d? | 2002-09-26 A | 2002-09-27 | 428 | 98% | 0.02d? | 232.88d |  |  | Jeremy Mesana [25%]; Yousuf Mapara [25%]; Ron Sombilon [25%]; Trevor Lim [25%] | 8h | 7.84h |
| 430 | 2.6.3.7.10 | **FRONT END animations:** | 1d? | 2002-09-27 A | 2002-09-30 A | 429 | 100% |  |  |  |  | Jeremy Mesana [25%]; Yousuf Mapara [25%]; Ron Sombilon [25%]; Trevor Lim [25%] | 16h | 16h |
| 431 | 2.6.3.7.10.1 | Sound Menu pans to a headset on the floor (Near the Lamp) | 1d? | 2002-09-27 A | 2002-09-30 A |  | 100% |  |  |  |  | Jeremy Mesana [25%]; Yousuf Mapara [25%]; Ron Sombilon [25%]; Trevor Lim [25%] | 8h | 8h |
| 432 | 2.6.3.7.11 | View Movie Menu goes to TV Screen | 1d? | 2002-09-30 A | 2002-10-01 A | 430 | 100% |  |  |  |  | Jeremy Mesana [25%]; Yousuf Mapara [25%]; Ron Sombilon [25%]; Trevor Lim [25%] | 8h | 8h |
| 433 | 2.6.3.7.12 | View Credits Menu goes to Simpsons Portrait | 1d? | 2002-10-01 A | 2002-10-02 A | 432 | 100% |  |  |  |  | Jeremy Mesana [25%]; Yousuf Mapara [25%]; Ron Sombilon [25%]; Trevor Lim [25%] | 8h | 8h |
| 434 | 2.6.3.7.13 | Vibration Menu goes close up to remote control (on/off) Button | 1d? | 2002-10-02 | 2002-10-03 | 433 |  |  | 225.88d | 0d |  | Jeremy Mesana [25%]; Yousuf Mapara [25%]; Ron Sombilon [25%]; Trevor Lim [25%] | 8h |  |
| 435 | 2.6.3.7.14 | Mouse runs across room from lamp side towards to camera and off screen | 1d? | 2002-10-03 | 2002-10-04 | 434 |  |  | 225.88d | 0d |  | Jeremy Mesana [25%]; Yousuf Mapara [25%]; Ron Sombilon [25%]; Trevor Lim [25%] | 8h |  |
| 436 | 2.6.3.7.15 | Mouse Jumps on closer side of couch, sniffs homer and then goes back. | 1d? | 2002-10-04 | 2002-10-07 | 435 |  |  | 225.88d | 0d |  | Jeremy Mesana [25%]; Yousuf Mapara [25%]; Ron Sombilon [25%]; Trevor Lim [25%] | 8h |  |
| 437 | 2.6.3.7.16 | 3 more Homer animations - ??? Ask Galan and Chris for ideas. | 1d? | 2002-10-07 | 2002-10-08 | 436 |  |  | 225.88d |  |  | Jeremy Mesana [25%]; Yousuf Mapara [25%]; Ron Sombilon [25%]; Trevor Lim [25%] | 8h |  |

Notes:
- 411: out of the game
- 423: on hold waiting for design
- 429: 1 left to do
- 434: may be done a different way. may not get done
- 435: won't get done
- 436: won't get done
- 437: won't get done

| ID | WBS | Task | Duration | Start | Finish | Predecessors | Total slack | Free slack | Constraint | Resources | Work |
| --- | --- | --- | --- | --- | --- | --- | --- | --- | --- | --- | --- |
| 438 | 2.6.3.8 | **Vehicles:** | 11d? | 2002-09-16 | 2002-10-01 |  | 230.88d |  |  |  | 320h |
| 439 | 2.6.3.8.1 | All damage states complete for all main driver vehicles (working in game) | 1d? | 2002-09-16 | 2002-09-17 |  | 232.88d | 0d | start no earlier than 2002-09-16 | Kevin Fink | 8h |
| 440 | 2.6.3.8.2 | All damage states for Generic traffic vehicle working | 1d? | 2002-09-17 | 2002-09-18 | 439 | 232.88d | 0d |  | Kevin Fink | 8h |
| 441 | 2.6.3.8.3 | All generic and ai vehicles in for Suburbs and Downtown. | 1d? | 2002-09-18 | 2002-09-19 | 440 | 232.88d | 0d |  | Kevin Fink | 8h |
| 442 | 2.6.3.8.4 | All shadows for all cars working in game complete | 1d? | 2002-09-19 | 2002-09-20 | 441 | 232.88d | 0d |  | Kevin Fink | 8h |
| 443 | 2.6.3.8.5 | Environmental mapping working on vehicles and iteration time needed | 1d? | 2002-09-20 | 2002-09-23 | 442 | 232.88d | 0d |  | Kevin Fink | 8h |
| 444 | 2.6.3.8.6 | Generic traffic vehicle refine. | 1d? | 2002-09-23 | 2002-09-24 | 443 | 232.88d | 0d |  | Kevin Fink | 8h |
| 445 | 2.6.3.8.7 | Place agnes (Low poly version) in Skinners vehicle | 1d? | 2002-09-24 | 2002-09-25 | 444 | 232.88d | 0d |  | Kevin Fink | 8h |
| 446 | 2.6.3.8.8 | Steering wheel in vehicles | 1d? | 2002-09-25 | 2002-09-26 | 445 | 232.88d | 0d |  | Kevin Fink | 8h |
| 447 | 2.6.3.8.9 | Shadows for vehicles working properly | 1d? | 2002-09-26 | 2002-09-27 | 446 | 232.88d |  |  | Kevin Fink | 8h |
| 448 | 2.6.3.8.10 | Damage states particle need time for iteration (when will get into game) | 1d? | 2002-09-16 | 2002-09-17 |  | 240.88d |  | start no earlier than 2002-09-16 | Vincent Chin | 8h |
| 449 | 2.6.3.8.11 | **Front End and pause menu** | 7d? | 2002-09-16 | 2002-09-25 |  | 230.88d |  |  |  | 56h |
| 450 | 2.6.3.8.11.1 | Finalize Font highlight for scrolling and selecting | 1d? | 2002-09-16 | 2002-09-17 |  | 230.88d | 0d | start no earlier than 2002-09-16 | Ting Ting Chen | 8h |
| 451 | 2.6.3.8.11.2 | Front end optimization | 1d? | 2002-09-17 | 2002-09-18 | 450 | 230.88d | 0d |  | Ting Ting Chen | 8h |
| 452 | 2.6.3.8.11.3 | Create Krusty headset (For sound menu ) | 1d? | 2002-09-18 | 2002-09-19 | 451 | 230.88d | 0d |  | Ting Ting Chen | 8h |
| 453 | 2.6.3.8.11.4 | Finalize Front END | 1d? | 2002-09-19 | 2002-09-20 | 452 | 230.88d | 0d |  | Ting Ting Chen | 8h |
| 454 | 2.6.3.8.11.5 | Finalize card gallery | 1d? | 2002-09-20 | 2002-09-23 | 453 | 230.88d | 0d |  | Ting Ting Chen | 8h |
| 455 | 2.6.3.8.11.6 | Finalize pause menu screen | 1d? | 2002-09-23 | 2002-09-24 | 454 | 230.88d | 0d |  | Ting Ting Chen | 8h |
| 456 | 2.6.3.8.11.7 | Mission HUD design finalized | 1d? | 2002-09-24 | 2002-09-25 | 455 | 230.88d | 0d |  | Ting Ting Chen | 8h |
| 457 | 2.6.3.8.12 | **Collector cards:** | 4d? | 2002-09-25 | 2002-10-01 | 456 | 230.88d |  |  | Ting Ting Chen | 64h |
| 458 | 2.6.3.8.12.1 | Finalize Collector card design for in-game | 1d? | 2002-09-25 | 2002-09-26 |  | 230.88d | 0d |  | Ting Ting Chen | 8h |
| 459 | 2.6.3.8.12.2 | Finalize collector card game design | 1d? | 2002-09-26 | 2002-09-27 | 458 | 230.88d | 0d |  | Ting Ting Chen | 8h |
| 460 | 2.6.3.8.12.3 | Create collector card images for Downtown level | 1d? | 2002-09-27 | 2002-09-30 | 459 | 230.88d | 0d |  | Ting Ting Chen | 8h |
| 461 | 2.6.3.8.12.4 | Create collector card images for Seaside level. | 1d? | 2002-09-30 | 2002-10-01 | 460 | 230.88d |  |  | Ting Ting Chen | 8h |

| ID | WBS | Task | Duration | Start | Finish | Predecessors | Complete | Remaining | Total slack | Free slack | Constraint | Resources | Work | Actual work |
| --- | --- | --- | --- | --- | --- | --- | --- | --- | --- | --- | --- | --- | --- | --- |
| 462 | 2.6.3.8.13 | **HUD:** | 4d? | 2002-09-16 | 2002-09-20 |  |  |  | 237.88d |  |  |  | 32h |  |
| 463 | 2.6.3.8.13.1 | Finalize hud map on screen (location and size and look) | 1d? | 2002-09-16 | 2002-09-17 |  |  |  | 237.88d | 0d | start no earlier than 2002-09-16 | Tony Chu | 8h |  |
| 464 | 2.6.3.8.13.2 | Mission presentation of mission complete and failure need to refine | 1d? | 2002-09-17 | 2002-09-18 | 463 |  |  | 237.88d | 0d |  | Tony Chu | 8h |  |
| 465 | 2.6.3.8.13.3 | 321 timing of starting mission needs to faster | 1d? | 2002-09-18 | 2002-09-19 | 464 |  |  | 237.88d | 0d |  | Tony Chu | 8h |  |
| 466 | 2.6.3.8.13.4 | Hud icons for missions, food and collector card created and in. | 1d? | 2002-09-19 | 2002-09-20 | 465 |  |  | 237.88d |  |  | Tony Chu | 8h |  |
| 467 | 2.6.3.8.14 | **Character models:** | 11d? | 2002-09-16 | 2002-10-01 |  |  |  | 230.88d |  | start no earlier than 2002-09-16 |  | 88h |  |
| 468 | 2.6.3.8.14.1 | Create monkey model for mission (Need to review with Designer) | 1d? | 2002-09-16 | 2002-09-17 |  |  |  | 230.88d | 0d | start no earlier than 2002-09-16 | Jaroslav Chorny | 8h |  |
| 469 | 2.6.3.8.14.2 | Create LEGS pedestrian model | 1d? | 2002-09-17 | 2002-09-18 | 468 |  |  | 230.88d | 0d |  | Jaroslav Chorny | 8h |  |
| 470 | 2.6.3.8.14.3 | Create character floats: | 1d? | 2002-09-18 | 2002-09-19 | 469 |  |  | 230.88d | 0d |  | Jaroslav Chorny | 8h |  |
| 471 | 2.6.3.8.14.4 | Pootchy | 1d? | 2002-09-19 | 2002-09-20 | 470 |  |  | 230.88d | 0d |  | Jaroslav Chorny | 8h |  |
| 472 | 2.6.3.8.14.5 | Scratchy | 1d? | 2002-09-20 | 2002-09-23 | 471 |  |  | 230.88d | 0d |  | Jaroslav Chorny | 8h |  |
| 473 | 2.6.3.8.14.6 | Itchy | 1d? | 2002-09-23 | 2002-09-24 | 472 |  |  | 230.88d | 0d |  | Jaroslav Chorny | 8h |  |
| 474 | 2.6.3.8.14.7 | Sideshow bob | 1d? | 2002-09-24 | 2002-09-25 | 473 |  |  | 230.88d | 0d |  | Jaroslav Chorny | 8h |  |
| 475 | 2.6.3.8.14.8 | krusty | 1d? | 2002-09-25 | 2002-09-26 | 474 |  |  | 230.88d | 0d |  | Jaroslav Chorny | 8h |  |
| 476 | 2.6.3.8.14.9 | Character shadows all working in-game. | 1d? | 2002-09-26 | 2002-09-27 | 475 |  |  | 230.88d | 0d |  | Jaroslav Chorny | 8h |  |
| 477 | 2.6.3.8.14.10 | Dash particles on character working well | 1d? | 2002-09-27 | 2002-09-30 | 476 |  |  | 230.88d | 0d |  | Jaroslav Chorny | 8h |  |
| 478 | 2.6.3.8.14.11 | Jump particle refined | 1d? | 2002-09-30 | 2002-10-01 | 477 |  |  | 230.88d |  |  | Jaroslav Chorny | 8h |  |
| 479 | 2.7 | **Milestone 13 (Nov 15th)** | 29d? | 2002-10-15 A | 2002-11-25 |  | 49% | 14.76d? | 191.88d |  |  |  | 1450.4h | 906.96h |
| 480 | 2.7.1 | All mission effects (Final) | 1d? | 2002-10-15 A | 2002-10-16 A |  | 100% |  |  |  | start no earlier than 2002-10-15 | Aryan Hanbeck | 8h | 8h |
| 481 | 2.7.2 | Mission effects Remaining for suburbs | 1d? | 2002-10-16 A | 2002-10-17 A | 480 | 100% |  |  |  |  | Aryan Hanbeck | 8h | 8h |
| 482 | 2.7.3 | Special effects for location volumes | 1d? | 2002-10-17 A | 2002-10-18 | 481 | 75% | 0.25d? | 217.38d | 0d |  | Aryan Hanbeck | 8h | 6h |
| 483 | 2.7.4 | Special effects for powerplant | 1d? | 2002-10-18 A | 2002-10-21 | 482 | 75% | 0.25d? | 216.62d | 0d |  | Aryan Hanbeck | 8h | 6h |
| 484 | 2.7.5 | Special effects for Downtown | 1d? | 2002-10-21 A | 2002-10-22 | 483 | 75% | 0.25d? | 215.88d |  |  | Aryan Hanbeck | 8h | 6h |
| 485 | 2.7.6 | Mission effects for Downtown (Probably done once suburbs mission effects final) | 1d? | 2002-10-22 A | 2002-10-23 A | 484 | 100% |  |  |  |  | Aryan Hanbeck | 8h | 8h |
| 486 | 2.7.7 | Breakables for Downtown | 1d? | 2002-10-23 | 2002-10-24 | 485 |  |  | 212.88d | 0d |  | Aryan Hanbeck | 8h |  |
| 487 | 2.7.8 | Breakables for Suburbs final | 1d? | 2002-10-24 | 2002-10-25 | 486 |  |  | 212.88d |  |  | Aryan Hanbeck | 8h |  |
| 488 | 2.7.9 | 2 interiors for Downtown complete | 1d? | 2002-10-16 A | 2002-10-17 A |  | 100% |  |  |  | start no earlier than 2002-10-16 | Eric Madill | 8h | 8h |
| 489 | 2.7.10 | design 2 interior for Seaside | 1d? | 2002-10-17 A | 2002-10-18 | 488 | 10% | 0.9d? | 217.88d |  |  | Eric Madill | 8h | 0.8h |
| 490 | 2.7.11 | Finalize intro movie (Pending Title for game approved) | 1d? | 2002-10-16 A | 2002-10-17 |  | 90% | 0.1d? | 218.28d | 0d | start no earlier than 2002-10-16 | Jeremy Mesana [25%]; Ron Sombilon [25%]; Yousuf Mapara [25%]; Trevor Lim [25%] | 8h | 7.2h |
| 491 | 2.7.12 | FMV #2 40% complete (% percentage will be higher if dialogue recorded) | 1d? | 2002-10-17 A | 2002-10-18 | 490 | 40% | 0.6d? | 217.88d |  |  | Jeremy Mesana [25%]; Ron Sombilon [25%]; Yousuf Mapara [25%]; Trevor Lim [25%] | 8h | 3.2h |
| 492 | 2.7.13 | Remaining in-game animations final (dependent on Driver, passenger, pedestrian all implemented in game) | 1d? | 2002-10-18 A | 2002-10-21 A | 491 | 100% |  |  |  |  | Jeremy Mesana [25%]; Ron Sombilon [25%]; Yousuf Mapara [25%]; Trevor Lim [25%] | 8h | 8h |

Notes:
- 488: To let you know, / I've finished one interior (ie. exported) and I'm currently a little over half way done the second for level 2 (which should be completed if not tommorrow then friday). Unfortunately I haven't been able to see them in game yet as we've been trying to sort out piping and loading issues. Therefore, there may still be some revisions needed for colour correction and camera work. / As for the designs for level 3, I have my previous conceptual drawings at hand, but have been focusing my attention on getting level 2 completed first. Realistically, I think the designs for the level 3 interiors can be bumped back to the next milestone as I've asked to help Jeff and the WB team fix level 1 next month. / Cheers. / Eric. / -- / Eric Madill (Tue 12/11/02): ==== Published to Microsoft Project server by Wolfgang Hamann on 11/11/02 1:13 PM ===== / To let you know, / I've finished one interior (ie. exported) and I'm currently a little over half way done the second for level 2 (which should be completed if not tommorrow then friday). Unfortunately I haven't been able to see them in game yet as we've been trying to sort out piping and loading issues. Therefore, there may still be some revisions needed for colour correction and camera work. / As for the designs for level 3, I have my previous conceptual drawings at hand, but have been focusing my attention on getting level 2 completed first. Realistically, I think the designs for the level 3 interiors can be bumped back to the next milestone as I've asked to help Jeff and the WB team fix level 1 next month. / Cheers. / Eric. / --
- 490: From Trevor: / modeling and texturing props/set / need some info from designers regarding final ending spot of gameplay
- 492: Jeremy Mesana (Thu 07/11/02): done but not finalized / Jeremy Mesana (Thu 07/11/02): done but not finalized / Trevor Lim (Tue 12/11/02): ==== Published to Microsoft Project server by Wolfgang Hamann on 11/11/02 1:13 PM ===== / Jeremy Mesana (Thu 07/11/02): done but not finalized / Jeremy Mesana (Thu 07/11/02): done but not finalized

| ID | WBS | Task | Duration | Start | Finish | Predecessors | Complete | Remaining | Total slack | Free slack | Constraint | Resources | Work | Actual work |
| --- | --- | --- | --- | --- | --- | --- | --- | --- | --- | --- | --- | --- | --- | --- |
| 493 | 2.7.14 | **FMV #2 - 7 animatic completed (Pending on FOx Approval)** | 5d? | 2002-10-21 A | 2002-10-28 | 492 | 16% | 4.2d? | 211.88d |  |  | Jeremy Mesana [25%]; Ron Sombilon [25%]; Yousuf Mapara [25%]; Trevor Lim [25%] | 80h | 12.8h |
| 494 | 2.7.14.1 | FMV #3 | 1d? | 2002-10-21 A | 2002-10-22 |  | 20% | 0.8d? | 212.47d | 0d |  | Jeremy Mesana [25%]; Ron Sombilon [25%]; Yousuf Mapara [25%]; Trevor Lim [25%] | 8h | 1.6h |
| 495 | 2.7.14.2 | FMV #4 | 1d? | 2002-10-22 A | 2002-10-23 | 494 | 20% | 0.8d? | 212.28d | 0d |  | Jeremy Mesana [25%]; Ron Sombilon [25%]; Yousuf Mapara [25%]; Trevor Lim [25%] | 8h | 1.6h |
| 496 | 2.7.14.3 | FMV #5 | 1d? | 2002-10-23 A | 2002-10-24 | 495 | 20% | 0.8d? | 212.07d | 0d |  | Jeremy Mesana [25%]; Ron Sombilon [25%]; Yousuf Mapara [25%]; Trevor Lim [25%] | 8h | 1.6h |
| 497 | 2.7.14.4 | FMV #6 | 1d? | 2002-10-24 | 2002-10-25 | 496 |  |  | 212.07d | 0d |  | Jeremy Mesana [25%]; Ron Sombilon [25%]; Yousuf Mapara [25%]; Trevor Lim [25%] | 8h |  |
| 498 | 2.7.14.5 | FMV #7 | 1d? | 2002-10-25 A | 2002-10-28 | 497 | 20% | 0.8d? | 211.88d |  |  | Jeremy Mesana [25%]; Ron Sombilon [25%]; Yousuf Mapara [25%]; Trevor Lim [25%] | 8h | 1.6h |
| 499 | 2.7.15 | Gags all working for suburbs and Downtown | 1d? | 2002-10-28 A | 2002-10-29 A | 493 | 100% |  |  |  |  | Jeremy Mesana [25%]; Ron Sombilon [25%]; Yousuf Mapara [25%]; Trevor Lim [25%] | 8h | 8h |
| 500 | 4.7.16 | **World Builders** | 28d | 2002-10-16 A | 2002-11-25 |  | 49% | 14.3d | 191.88d |  |  |  | 880.8h | 620.16h |
| 501 | 4.7.16.1 | 2 weeks on Seaside (all people) | 19d | 2002-10-16 A | 2002-11-12 |  | 85% | 2.85d | 200.88d |  | start no earlier than 2002-10-16 | Jeff Pidsadny [80%]; Sanela Mickovic [80%]; Ross Young [80%]; Robert Peet [80%]; Sarah Meagher [80%]; Vincent Chin [80%] | 729.6h | 620.16h |
| 502 | 4.7.16.2 | Polish Level 2 (Downtown) | 3d | 2002-11-13 | 2002-11-18 |  |  |  | 196.88d |  | start no earlier than 2002-11-13 | Sarah Meagher [80%]; Vincent Chin [80%] | 38.4h |  |
| 503 | 4.7.16.3 | Polish Level 3 (Seaside) | 3d | 2002-11-13 | 2002-11-18 |  |  |  | 196.88d |  | start no earlier than 2002-11-13 | Ross Young [80%]; Sanela Mickovic [80%] | 38.4h |  |
| 504 | 4.7.16.4 | Polish Level 1 (Suburbs) | 3d | 2002-11-13 | 2002-11-18 |  |  |  | 196.88d |  | start no earlier than 2002-11-13 | Jeff Pidsadny [80%]; Robert Peet [80%] | 38.4h |  |
| 505 | 2.7.17 | 1 week halloween complete (2 people) | 5d | 2002-11-18 | 2002-11-25 |  |  |  | 191.88d |  | start no earlier than 2002-11-18 | Jeff Pidsadny [15%]; Sanela Mickovic [15%]; Ross Young [15%]; Robert Peet [15%]; Sarah Meagher [15%]; Vincent Chin [15%] | 36h |  |
| 506 | 2.7.19 | Selma | 1d? | 2002-10-16 A | 2002-10-17 A |  | 100% |  |  |  | start no earlier than 2002-10-16 | Jaroslav Chorny | 8h | 8h |
| 507 | 2.7.20 | Skinner | 1d? | 2002-10-17 A | 2002-10-18 A | 506 | 100% |  |  |  |  | Jaroslav Chorny | 8h | 8h |
| 508 | 2.7.21 | Sea Captain | 1d? | 2002-10-18 A | 2002-10-21 A | 507 | 100% |  |  |  |  | Jaroslav Chorny | 8h | 8h |
| 509 | 2.7.22 | Sideshow Bob float | 1d? | 2002-10-21 A | 2002-10-22 A | 508 | 100% |  |  |  |  | Jaroslav Chorny | 8h | 8h |
| 510 | 2.7.23 | **Generic Pedestrians** | 4d? | 2002-10-22 | 2002-10-28 | 509 |  |  | 209.88d | 0d |  | Jaroslav Chorny | 64h |  |
| 511 | 2.7.23.1 | Generic ped kid F | 1d? | 2002-10-22 | 2002-10-23 |  |  |  | 209.88d | 0d |  | Jaroslav Chorny | 8h |  |
| 512 | 2.7.23.2 | Generic ped kid M | 1d? | 2002-10-23 | 2002-10-24 | 511 |  |  | 209.88d | 0d |  | Jaroslav Chorny | 8h |  |
| 513 | 2.7.23.3 | Generic ped adult M2 | 1d? | 2002-10-24 | 2002-10-25 | 512 |  |  | 209.88d | 0d |  | Jaroslav Chorny | 8h |  |
| 514 | 2.7.23.4 | Generic ped adult F2 | 1d? | 2002-10-25 | 2002-10-28 | 513 |  |  | 209.88d |  |  | Jaroslav Chorny | 8h |  |
| 515 | 2.7.24 | Zombie character | 1d? | 2002-10-28 | 2002-10-29 | 510 |  |  | 209.88d | 0d |  | Jaroslav Chorny | 8h |  |
| 516 | 2.7.25 | (Need to find out from designers about monkey status) | 1d? | 2002-10-29 | 2002-10-30 | 515 |  |  | 209.88d |  |  | Jaroslav Chorny | 8h |  |
| 517 | 2.7.26 | Damage states for all driver vehicles complete | 1d? | 2002-10-16 A | 2002-10-17 A |  | 100% |  |  |  | start no earlier than 2002-10-16 | Kevin Fink | 8h | 8h |
| 518 | 2.7.27 | Cartoonify Traffic vehicles | 1d? | 2002-10-17 A | 2002-10-18 | 517 | 50% | 0.5d? | 217.68d | 0d |  | Kevin Fink | 8h | 4h |
| 519 | 2.7.28 | Environmental mapping complete on vehicles. | 1d? | 2002-10-18 A | 2002-10-21 | 518 | 80% | 0.2d? | 216.88d |  |  | Kevin Fink | 8h | 6.4h |
| 520 | 2.7.29 | Track sprays and SKid marks final | 1d? | 2002-10-21 A | 2002-10-22 A | 519 | 100% |  |  |  |  | Kevin Fink | 8h | 8h |
| 521 | 2.7.30 | More vehicles | 1d? | 2002-10-22 A | 2002-10-23 | 520 | 30% | 0.7d? | 214.88d |  |  | Kevin Fink | 8h | 2.4h |

Notes:
- 493: From Trevor: / modeling and texturing set items and props / need final ending point of gameplay so i can continue to build more of the set to match
- 498: Trevor Lim (Tue 12/11/02): modeling and texturing props / need final location so i can start building more of the set for fmv7
- 499: Jeremy Mesana (Thu 07/11/02): completed but not tested due to the downtown interiors being unaccessable. / Jeremy Mesana (Thu 07/11/02): completed but not tested due to the downtown interiors being unaccessable. / Trevor Lim (Tue 12/11/02): ==== Published to Microsoft Project server by Wolfgang Hamann on 11/11/02 1:13 PM ===== / Jeremy Mesana (Thu 07/11/02): completed but not tested due to the downtown interiors being unaccessable. / Jeremy Mesana (Thu 07/11/02): completed but not tested due to the downtown interiors being unaccessable.
- 500: Level 1 - Suburbs / Level 2 - Downtown / Level 3 - Seaside / Since we're doing major revisions to the Suburbs level, Halloween will be put off for another couple weeks at least. Starting Nov.11th, Vincent & I will be polishing Level2 (Downtown), Ross & Sanela will be polishing Level3 (Seaside), and Jeff & Bob will be revising & polishing Level1 (Suburbs). When this is done (ask Yayoi for a finish date), we will move on to Halloween & time-of-day changes. Thanks Wolfgang!
- 501: I think you'll want to talk to Yayoi about our updated schedule. / Since we're doing major revisions to the Suburbs level, Halloween will be put off for another couple weeks at least. Starting Nov.11th, Vincent & I will be polishing Level2 (Downtown), Ross & Sanela will be polishing Level3 (Seaside), and Jeff & Bob will be revising & polishing Level1 (Suburbs). When this is done (ask Yayoi for a finish date), we will move on to Halloween & time-of-day changes. Thanks Wolfgang!
- 511: (Slava talk to Dusit about More gens) / Jaroslav Chorny (Thu 07/11/02): ==== Published to Microsoft Project server by Wolfgang Hamann on 06/11/02 1:13 PM ===== / (Slava talk to Dusit about More gens) / Jaroslav Chorny (Tue 12/11/02): ==== Published to Microsoft Project server by Wolfgang Hamann on 11/11/02 1:17 PM ===== / (Slava talk to Dusit about More gens) / Jaroslav Chorny (Thu 07/11/02): ==== Published to Microsoft Project server by Wolfgang Hamann on 06/11/02 1:13 PM ===== / (Slava talk to Dusit about More gens)

| ID | WBS | Task | Duration | Start | Finish | Predecessors | Complete | Remaining | Total slack | Free slack | Constraint | Resources | Work | Actual work |
| --- | --- | --- | --- | --- | --- | --- | --- | --- | --- | --- | --- | --- | --- | --- |
| 522 | 2.7.31 | **Generic Gremlin (Race)** | 7d? | 2002-10-23 A | 2002-11-01 A | 521 | 100% |  |  |  |  | Kevin Fink | 112h | 112h |
| 523 | 2.7.31.1 | (3) Black Limo (Chase and Destroy)* | 1d? | 2002-10-23 A | 2002-10-24 A |  | 100% |  |  |  |  | Kevin Fink | 8h | 8h |
| 524 | 2.7.31.2 | (5) Cola truck and Black Sedans (Chase and evade) (red /white siren ) | 1d? | 2002-10-24 A | 2002-10-25 A | 523 | 100% |  |  |  |  | Kevin Fink | 8h | 8h |
| 525 | 2.7.31.3 | (5) Armored Truck (Chase and destroy) | 1d? | 2002-10-25 A | 2002-10-28 A | 524 | 100% |  |  |  |  | Kevin Fink | 8h | 8h |
| 526 | 2.7.31.4 | (5) Curator vehicle (Race) | 1d? | 2002-10-28 A | 2002-10-29 A | 525 | 100% |  |  |  |  | Kevin Fink | 8h | 8h |
| 527 | 2.7.31.5 | (6) Krusty> '> s Limo (race) | 1d? | 2002-10-29 A | 2002-10-30 A | 526 | 100% |  |  |  |  | Kevin Fink | 8h | 8h |
| 528 | 2.7.31.6 | (7) Black Ferrini (race) | 1d? | 2002-10-30 A | 2002-10-31 A | 527 | 100% |  |  |  |  | Kevin Fink | 8h | 8h |
| 529 | 2.7.31.7 | (7) Generic Zombie Hearse Vehicle ???? ( Evade) (green/orange siren ) | 1d? | 2002-10-31 A | 2002-11-01 A | 528 | 100% |  |  |  |  | Kevin Fink | 8h | 8h |
| 530 | 2.7.32 | more reward vehicles (have yet to be determined with designers) | 1d? | 2002-11-01 A | 2002-11-04 A | 529 | 100% |  |  |  |  | Kevin Fink | 8h | 8h |
| 531 | 2.7.33 | Finalize Navigation map on hud (Needs redesign) | 1d? | 2002-10-21 A | 2002-10-22 |  | 70% | 0.3d? | 203.18d | 0d | start no earlier than 2002-10-21 | Ting Ting Chen | 8h | 5.6h |
| 532 | 2.7.34 | Mission object icons for HUD | 1d? | 2002-10-22 A | 2002-10-23 | 531 | 30% | 0.7d? | 202.88d | 0d |  | Ting Ting Chen | 8h | 2.4h |
| 533 | 2.7.35 | All collector cards complete for all levels (This may not be feasible pending new design changes) | 1d? | 2002-10-23 A | 2002-10-24 | 532 | 80% | 0.2d? | 202.07d | 0d |  | Ting Ting Chen | 8h | 6.4h |
| 534 | 2.7.36 | Finalize Card Gallery | 1d? | 2002-10-24 | 2002-10-25 | 533 |  |  | 202.07d | 0d |  | Ting Ting Chen | 8h |  |
| 535 | 2.7.37 | Finalize Pause Menu | 1d? | 2002-10-25 A | 2002-10-28 | 534 | 20% | 0.8d? | 201.88d | 0d |  | Ting Ting Chen | 8h | 1.6h |
| 536 | 2.7.38 | Design menu screens for new designs (Need to clarify with Carey) | 1d? | 2002-10-28 | 2002-10-29 | 535 |  |  | 201.88d | 9.88d |  | Ting Ting Chen | 8h |  |
| 537 | 4.7.37 | Map Icons | 1d? | 2002-11-12 | 2002-11-12 | 536 |  |  | 192d | 0d | start no earlier than 2002-11-12 | Ting Ting Chen [80%] | 6.4h |  |
| 538 | 4.7.38 | FMV Viewfinder | 1d? | 2002-11-13 | 2002-11-13 | 537 |  |  | 192d | 0d | start no earlier than 2002-11-12 | Ting Ting Chen [80%] | 6.4h |  |
| 539 | 4.7.39 | Fox Approval | 1d? | 2002-11-14 | 2002-11-14 | 538 |  |  | 192d | 0d | start no earlier than 2002-11-12 | Ting Ting Chen [80%] | 6.4h |  |
| 540 | 4.7.40 | (Level Loading ) Newspaper Loading Screen ( Need to get the final text from Chris ) | 1d? | 2002-11-15 | 2002-11-15 | 539 |  |  | 192d | 0d | start no earlier than 2002-11-12 | Ting Ting Chen [80%] | 6.4h |  |
| 541 | 4.7.41 | Redesign Mission Loading Screen | 1d? | 2002-11-18 | 2002-11-18 | 540 |  |  | 192d | 0d | start no earlier than 2002-11-12 | Ting Ting Chen [80%] | 6.4h |  |
| 542 | 4.7.42 | New reward Screen ( Need Info from Carey ) | 1d? | 2002-11-19 | 2002-11-19 | 541 |  |  | 192d | 0d | start no earlier than 2002-11-12 | Ting Ting Chen [80%] | 6.4h |  |
| 543 | 4.7.43 | Pause Option Arrows | 1d? | 2002-11-20 | 2002-11-20 | 542 |  |  | 192d | 0d | start no earlier than 2002-11-12 | Ting Ting Chen [80%] | 6.4h |  |
| 544 | 4.7.44 | Pause Sound Image | 1d? | 2002-11-21 | 2002-11-21 | 543 |  |  | 192d | 0d | start no earlier than 2002-11-12 | Ting Ting Chen [80%] | 6.4h |  |
| 545 | 4.7.45 | Error message overlay | 1d? | 2002-11-22 | 2002-11-22 | 544 |  |  | 192d |  | start no earlier than 2002-11-12 | Ting Ting Chen [80%] | 6.4h |  |

Notes:
- 531: Hi Wolfgang, / Can you add the List below into my task: / - Map Icons 100% / - FMV Viewfinder 100% / - Fox Approvel 80 % / - (Level Loading ) Newspaper Loading Screen ( Need to get the final text from Chris ) / - Redesign Mission Loading Screen / - New reward Screen ( Need Info from Carey ) / - Pause Option Arrows / - Pause Sound Image / - Error message overlay

| ID | WBS | Task | Duration | Start | Finish | Predecessors | Complete | Remaining | Total slack | Free slack | Constraint | Resources | Work | Actual work |
| --- | --- | --- | --- | --- | --- | --- | --- | --- | --- | --- | --- | --- | --- | --- |
| 546 | 2.8 | **Milestone 14 (Dec 15th)** | 60.88d? | 2002-10-15 A | 2003-01-07 |  | 10% | 54.92d? | 160d |  |  |  | 1336.8h | 240h |
| 547 | 4.8.1 | **Special FX** | 32.88d? | 2002-10-16 | 2002-11-29 |  |  |  | 187d |  |  |  | 231.2h |  |
| 548 | 2.8.1 | **First test will be:** | 1d? | 2002-10-16 | 2002-10-17 |  |  |  | 213.88d | 0d |  |  | 4h |  |
| 549 | 2.8.2 | Slot machines outside Burn’s Casino: pressing action causes lights to flash and sounds to play and in Moes | 1d? | 2002-10-16 | 2002-10-17 |  |  |  | 213.88d |  | start no earlier than 2002-10-16 | Aryan Hanbeck [50%] | 4h |  |
| 550 | 2.8.3 | **Downtown Interactive Gags (level 2 and 5)** | 1d? | 2002-10-17 | 2002-10-18 | 548 |  |  | 213.88d | 26.88d |  |  | 12h |  |
| 551 | 2.8.4 | Hitting Popsicle skyscraper causes a shower of Popsicle particles to appear. | 1d? | 2002-10-17 | 2002-10-18 |  |  |  | 213.88d |  |  | Aryan Hanbeck [50%] | 4h |  |
| 552 | 2.8.5 | Catapult, fires as in 4F15 | 1d? | 2002-10-17 | 2002-10-18 |  |  |  | 213.88d |  |  | Aryan Hanbeck [50%] | 4h |  |
| 553 | 2.8.6 | Wacking day memorabilia ??? | 1d? | 2002-10-17 | 2002-10-18 |  |  |  | 213.88d |  |  | Aryan Hanbeck [50%] | 4h |  |
| 554 | 4.8.1.3 | **Miscalleounous:** | 1d? | 2002-11-26 | 2002-11-26 | 550 |  |  | 187d | 0d |  |  | 20h |  |
| 555 | 4.8.1.3.1 | All mission collectibles | 1d? | 2002-11-26 | 2002-11-26 |  |  |  | 187d |  | start no earlier than 2002-11-26 | Aryan Hanbeck [50%] | 4h |  |
| 556 | 4.8.1.3.2 | Checkpoint icon for streetrace | 1d? | 2002-11-26 | 2002-11-26 |  |  |  | 187d |  | start no earlier than 2002-11-26 | Aryan Hanbeck [50%] | 4h |  |
| 557 | 4.8.1.3.3 | Bonus mission icon | 1d? | 2002-11-26 | 2002-11-26 |  |  |  | 187d |  | start no earlier than 2002-11-26 | Aryan Hanbeck [50%] | 4h |  |
| 558 | 4.8.1.3.4 | Interior door icon effect (Need to come up with design) | 1d? | 2002-11-26 | 2002-11-26 |  |  |  | 187d |  | start no earlier than 2002-11-26 | Aryan Hanbeck [50%] | 4h |  |
| 559 | 4.8.1.3.5 | Finalize all Presentation icons (ie exclamation, phone booth, ai vehicle) | 1d? | 2002-11-26 | 2002-11-26 |  |  |  | 187d |  | start no earlier than 2002-11-26 | Aryan Hanbeck [50%] | 4h |  |
| 560 | 4.8.1.4 | **Surburbs level 1 Effects:** | 1d? | 2002-11-27 | 2002-11-27 | 554 |  |  | 187d | 0d |  |  | 16h |  |
| 561 | 4.8.1.4.1 | River water effect | 1d? | 2002-11-27 | 2002-11-27 |  |  |  | 187d |  | start no earlier than 2002-11-26 | Aryan Hanbeck [50%] | 4h |  |
| 562 | 4.8.1.4.2 | Randomized textures for powerplant | 1d? | 2002-11-27 | 2002-11-27 |  |  |  | 187d |  | start no earlier than 2002-11-26 | Aryan Hanbeck [50%] | 4h |  |
| 563 | 4.8.1.4.3 | Randomized textures for church | 1d? | 2002-11-27 | 2002-11-27 |  |  |  | 187d |  | start no earlier than 2002-11-26 | Aryan Hanbeck [50%] | 4h |  |
| 564 | 4.8.1.4.4 | Glow for button effect implemented into game | 1d? | 2002-11-27 | 2002-11-27 |  |  |  | 187d |  | start no earlier than 2002-11-26 | Aryan Hanbeck [50%] | 4h |  |
| 565 | 4.8.1.5 | **Downtown Level 2 Effects:** | 1d? | 2002-11-28 | 2002-11-28 | 560 |  |  | 187d | 0d |  |  | 60h |  |
| 566 | 4.8.1.5.1 | Exploding glass for spaceneedle | 1d? | 2002-11-28 | 2002-11-28 |  |  |  | 187d |  | start no earlier than 2002-11-26 | Aryan Hanbeck [50%] | 4h |  |
| 567 | 4.8.1.5.2 | Randomized texture for stadium tron. | 1d? | 2002-11-28 | 2002-11-28 |  |  |  | 187d |  | start no earlier than 2002-11-26 | Aryan Hanbeck [50%] | 4h |  |
| 568 | 4.8.1.5.3 | Two water fountains in the stadium | 1d? | 2002-11-28 | 2002-11-28 |  |  |  | 187d |  | start no earlier than 2002-11-26 | Aryan Hanbeck [50%] | 4h |  |
| 569 | 4.8.1.5.4 | Animating flag by the stadium | 1d? | 2002-11-28 | 2002-11-28 |  |  |  | 187d |  | start no earlier than 2002-11-26 | Aryan Hanbeck [50%] | 4h |  |
| 570 | 4.8.1.5.5 | Corona lights by the stadium | 1d? | 2002-11-28 | 2002-11-28 |  |  |  | 187d |  | start no earlier than 2002-11-26 | Aryan Hanbeck [50%] | 4h |  |
| 571 | 4.8.1.5.6 | Magnify glass smoke effect | 1d? | 2002-11-28 | 2002-11-28 |  |  |  | 187d |  | start no earlier than 2002-11-26 | Aryan Hanbeck [50%] | 4h |  |
| 572 | 4.8.1.5.7 | Fire Truck sirens | 1d? | 2002-11-28 | 2002-11-28 |  |  |  | 187d |  | start no earlier than 2002-11-26 | Aryan Hanbeck [50%] | 4h |  |
| 573 | 4.8.1.5.8 | Tree effects revised textures | 1d? | 2002-11-28 | 2002-11-28 |  |  |  | 187d |  | start no earlier than 2002-11-26 | Aryan Hanbeck [50%] | 4h |  |
| 574 | 4.8.1.5.9 | All breakables need to be implemented | 1d? | 2002-11-28 | 2002-11-28 |  |  |  | 187d |  | start no earlier than 2002-11-26 | Aryan Hanbeck [50%] | 4h |  |
| 575 | 4.8.1.5.10 | Stuff to be implemented for tomorrow: | 1d? | 2002-11-28 | 2002-11-28 |  |  |  | 187d |  | start no earlier than 2002-11-26 | Aryan Hanbeck [50%] | 4h |  |
| 576 | 4.8.1.5.11 | Construction effects | 1d? | 2002-11-28 | 2002-11-28 |  |  |  | 187d |  | start no earlier than 2002-11-26 | Aryan Hanbeck [50%] | 4h |  |
| 577 | 4.8.1.5.12 | Railroad crossing breakable | 1d? | 2002-11-28 | 2002-11-28 |  |  |  | 187d |  | start no earlier than 2002-11-26 | Aryan Hanbeck [50%] | 4h |  |
| 578 | 4.8.1.5.13 | Lights under the freeway | 1d? | 2002-11-28 | 2002-11-28 |  |  |  | 187d |  | start no earlier than 2002-11-26 | Aryan Hanbeck [50%] | 4h |  |
| 579 | 4.8.1.5.14 | Light under the tunnel | 1d? | 2002-11-28 | 2002-11-28 |  |  |  | 187d |  | start no earlier than 2002-11-26 | Aryan Hanbeck [50%] | 4h |  |
| 580 | 4.8.1.5.15 | Animating signs | 1d? | 2002-11-28 | 2002-11-28 |  |  |  | 187d |  | start no earlier than 2002-11-26 | Aryan Hanbeck [50%] | 4h |  |

Notes:
- 548: Priority: Slot machine (interactive prop) Water effect for Seaside More interactive props Interactive Props (Need to define workflow)

| ID | WBS | Task | Duration | Start | Finish | Predecessors | Total slack | Free slack | Constraint | Resources | Work |
| --- | --- | --- | --- | --- | --- | --- | --- | --- | --- | --- | --- |
| 581 | 4.8.1.6 | **Seaside Level 3 Effects:** | 1d? | 2002-11-29 | 2002-11-29 | 565 | 187d |  |  |  | 60h |
| 582 | 4.8.1.6.1 | Ocean water effects | 1d? | 2002-11-29 | 2002-11-29 |  | 187d |  | start no earlier than 2002-11-26 | Aryan Hanbeck [50%] | 4h |
| 583 | 4.8.1.6.2 | Animating signs in the squidport | 1d? | 2002-11-29 | 2002-11-29 |  | 187d |  | start no earlier than 2002-11-26 | Aryan Hanbeck [50%] | 4h |
| 584 | 4.8.1.6.3 | Animating signs in the commercial district | 1d? | 2002-11-29 | 2002-11-29 |  | 187d |  | start no earlier than 2002-11-26 | Aryan Hanbeck [50%] | 4h |
| 585 | 4.8.1.6.4 | Flocking Seagulls | 1d? | 2002-11-29 | 2002-11-29 |  | 187d |  | start no earlier than 2002-11-26 | Aryan Hanbeck [50%] | 4h |
| 586 | 4.8.1.6.5 | Seagulls randomly flying by ocean (ambient animation) | 1d? | 2002-11-29 | 2002-11-29 |  | 187d |  | start no earlier than 2002-11-26 | Aryan Hanbeck [50%] | 4h |
| 587 | 4.8.1.6.6 | Sunset Flare | 1d? | 2002-11-29 | 2002-11-29 |  | 187d |  | start no earlier than 2002-11-26 | Aryan Hanbeck [50%] | 4h |
| 588 | 4.8.1.6.7 | River effect | 1d? | 2002-11-29 | 2002-11-29 |  | 187d |  | start no earlier than 2002-11-26 | Aryan Hanbeck [50%] | 4h |
| 589 | 4.8.1.6.8 | Dam waterfall | 1d? | 2002-11-29 | 2002-11-29 |  | 187d |  | start no earlier than 2002-11-26 | Aryan Hanbeck [50%] | 4h |
| 590 | 4.8.1.6.9 | Corona lights | 1d? | 2002-11-29 | 2002-11-29 |  | 187d |  | start no earlier than 2002-11-26 | Aryan Hanbeck [50%] | 4h |
| 591 | 4.8.1.6.10 | Corona for the lighthouse | 1d? | 2002-11-29 | 2002-11-29 |  | 187d |  | start no earlier than 2002-11-26 | Aryan Hanbeck [50%] | 4h |
| 592 | 4.8.1.6.11 | Corona lighting for Duff blimp area | 1d? | 2002-11-29 | 2002-11-29 |  | 187d |  | start no earlier than 2002-11-26 | Aryan Hanbeck [50%] | 4h |
| 593 | 4.8.1.6.12 | Cola effect coming out of pipe | 1d? | 2002-11-29 | 2002-11-29 |  | 187d |  | start no earlier than 2002-11-26 | Aryan Hanbeck [50%] | 4h |
| 594 | 4.8.1.6.13 | Task 1 | 1d? | 2002-11-29 | 2002-11-29 |  | 187d |  | start no earlier than 2002-11-26 | Aryan Hanbeck [50%] | 4h |
| 595 | 4.8.1.6.14 | Task 2 | 1d? | 2002-11-29 | 2002-11-29 |  | 187d |  | start no earlier than 2002-11-26 | Aryan Hanbeck [50%] | 4h |
| 596 | 4.8.1.6.15 | Task 3 | 1d? | 2002-11-29 | 2002-11-29 |  | 187d |  | start no earlier than 2002-11-26 | Aryan Hanbeck [50%] | 4h |
| 597 | 4.8.1.7 | **Moe’s Tavern Interactive Gags (level 2 and 5) Eric Madill** | 9.88d? | 2002-11-18 | 2002-11-29 |  | 187d |  |  |  | 59.2h |
| 598 | 4.8.1.7.1 | Pickle Jar: Pressing action causes eggs in pickle jar to move around | 1d? | 2002-11-18 | 2002-11-19 |  | 191.88d | 4.88d | start no earlier than 2002-11-18 | Eric Madill | 8h |
| 599 | 4.8.1.7.2 | Love Tester: Pressing action causes love tester lights to flash and machine to shake. | 1d? | 2002-11-26 | 2002-11-26 | 598 | 187d | 0d | start no earlier than 2002-11-26 | Eric Madill | 8h |
| 600 | 4.8.1.7.3 | Slot machine: Pressing action causes machine to light up and shake (same as Burns Casino) | 1d? | 2002-11-27 | 2002-11-27 | 599 | 187d | 0d | start no earlier than 2002-11-26 | Eric Madill | 8h |
| 601 | 4.8.1.7.4 | Rotating poster- 7 duffs, out of state liquor license, Bartenders do it till you barf | 1d? | 2002-11-28 | 2002-11-28 | 600 | 187d | 0d | start no earlier than 2002-11-26 | Eric Madill | 8h |
| 602 | 4.8.1.7.5 | Flaming Moes | 1d? | 2002-11-29 | 2002-11-29 | 601 | 187d |  | start no earlier than 2002-11-26 | Eric Madill | 8h |
| 603 | 4.8.1.7.6 | Task 1 | 1d? | 2002-11-26 | 2002-11-26 |  | 190d |  | start no earlier than 2002-11-26 | Eric Madill [80%] | 6.4h |
| 604 | 4.8.1.7.7 | Task 2 | 1d? | 2002-11-26 | 2002-11-26 |  | 190d |  | start no earlier than 2002-11-26 | Eric Madill [80%] | 6.4h |
| 605 | 4.8.1.7.8 | Task 3 | 1d? | 2002-11-26 | 2002-11-26 |  | 190d |  | start no earlier than 2002-11-26 | Eric Madill [80%] | 6.4h |

| ID | WBS | Task | Duration | Start | Finish | Predecessors | Complete | Remaining | Total slack | Free slack | Constraint | Resources | Work | Actual work |
| --- | --- | --- | --- | --- | --- | --- | --- | --- | --- | --- | --- | --- | --- | --- |
| 606 | 2.8.11 | **FMV’s** | 6d? | 2002-11-26 | 2002-12-03 |  |  |  | 0d |  |  |  | 72h |  |
| 607 | 4.8.2.1 | Fmv 3 will be completed and ready for sound | 1d? | 2002-11-26 | 2002-11-26 |  |  |  | 0d |  | start no earlier than 2002-11-26 | Jeremy Mesana [25%]; Ron Sombilon [25%]; Yousuf Mapara [25%]; Trevor Lim [25%] | 8h |  |
| 608 | 4.8.2.2 | Fmv 1 final fixes with lighting and rendering (ie Homer’s skintone) | 1d? | 2002-11-27 | 2002-11-27 | 607 |  |  | 0d |  | start no earlier than 2002-11-26 | Jeremy Mesana [25%]; Ron Sombilon [25%]; Yousuf Mapara [25%]; Trevor Lim [25%] | 8h |  |
| 609 | 4.8.2.3 | Fmv 2 40% complete (waiting on dialogue) | 1d? | 2002-11-28 | 2002-11-28 | 608 |  |  | 0d |  | start no earlier than 2002-11-26 | Jeremy Mesana [25%]; Ron Sombilon [25%]; Yousuf Mapara [25%]; Trevor Lim [25%] | 8h |  |
| 610 | 2.8.12 | Fmv 4 Models, scene, lighting complete animatic 70 % | 1d? | 2002-11-29 | 2002-11-29 | 609 |  |  | 0d |  |  | Jeremy Mesana [25%]; Ron Sombilon [25%]; Yousuf Mapara [25%]; Trevor Lim [25%] | 8h |  |
| 611 | 2.8.13 | FMv 5 Models, scene, lighting complete animatic 50 % | 1d? | 2002-12-02 | 2002-12-02 | 610 |  |  | 0d |  |  | Jeremy Mesana [25%]; Ron Sombilon [25%]; Yousuf Mapara [25%]; Trevor Lim [25%] | 8h |  |
| 612 | 2.8.15 | Fmv 7 Models, scene, lighting complete animatic 50 % | 1d? | 2002-12-03 | 2002-12-03 | 611 |  |  | 0d |  |  | Jeremy Mesana [25%]; Ron Sombilon [25%]; Yousuf Mapara [25%]; Trevor Lim [25%] | 8h |  |
| 613 | 4.8.2.7 | Task 1 | 1d? | 2002-11-26 | 2002-11-26 |  |  |  | 190d |  | start no earlier than 2002-11-26 | Jeremy Mesana [25%]; Ron Sombilon [25%]; Yousuf Mapara [25%]; Trevor Lim [25%] | 8h |  |
| 614 | 4.8.2.8 | Task 2 | 1d? | 2002-11-26 | 2002-11-26 |  |  |  | 190d |  | start no earlier than 2002-11-26 | Jeremy Mesana [25%]; Ron Sombilon [25%]; Yousuf Mapara [25%]; Trevor Lim [25%] | 8h |  |
| 615 | 4.8.2.9 | Task 3 | 1d? | 2002-11-26 | 2002-11-26 |  |  |  | 190d |  | start no earlier than 2002-11-26 | Jeremy Mesana [25%]; Ron Sombilon [25%]; Yousuf Mapara [25%]; Trevor Lim [25%] | 8h |  |
| 616 | 4.8.3 | **World Builders** | 12d? | 2002-11-26 A | 2002-12-11 |  | 38% | 7.39d? | 179d |  |  |  | 518.4h | 204.8h |
| 617 | 2.8.16 | **Complete Level 2 Downtown** | 6d? | 2002-12-04 A | 2002-12-11 | 612 | 49% | 3.07d? | 179d |  |  |  | 134.4h | 70.4h |
| 618 | 2.8.17 | Final textures and geometry | 1d? | 2002-12-04 A | 2002-12-04 |  | 80% | 0.2d? | 163.6d | 0d |  | Sarah Meagher; Vincent Chin | 16h | 12.8h |
| 619 | 2.8.18 | CBV foundation for lighting | 1d? | 2002-12-05 A | 2002-12-05 | 618 | 80% | 0.2d? | 162.8d | 0d |  | Sarah Meagher; Vincent Chin | 16h | 12.8h |
| 620 | 4.8.3.1.3 | All local world sphere and main world sphere | 1d? | 2002-12-06 A | 2002-12-06 | 619 | 70% | 0.3d? | 162.1d | 0d | start no earlier than 2002-11-26 | Sarah Meagher; Vincent Chin | 16h | 11.2h |
| 621 | 4.8.3.1.4 | Phone booth placement | 1d? | 2002-12-09 A | 2002-12-09 | 620 | 90% | 0.1d? | 161.2d | 0d | start no earlier than 2002-11-26 | Sarah Meagher; Vincent Chin | 16h | 14.4h |
| 622 | 4.8.3.1.5 | Moveable and breakable prop placement | 1d? | 2002-12-10 A | 2002-12-10 | 621 | 90% | 0.1d? | 160.3d | 0d | start no earlier than 2002-11-26 | Sarah Meagher; Vincent Chin | 16h | 14.4h |
| 623 | 4.8.3.1.6 | Simpson’s billboard signs | 1d? | 2002-12-11 A | 2002-12-11 | 622 | 30% | 0.7d? | 160d | 0d | start no earlier than 2002-11-26 | Sarah Meagher; Vincent Chin | 16h | 4.8h |
| 624 | 4.8.3.1.7 | Task 1 | 1d? | 2002-12-04 | 2002-12-04 |  |  |  | 184d |  | start no earlier than 2002-11-26 | Sarah Meagher [80%]; Vincent Chin [80%] | 12.8h |  |
| 625 | 4.8.3.1.8 | Task 2 | 1d? | 2002-12-04 | 2002-12-04 |  |  |  | 184d |  | start no earlier than 2002-11-26 | Sarah Meagher [80%]; Vincent Chin [80%] | 12.8h |  |
| 626 | 4.8.3.1.9 | Task 3 | 1d? | 2002-12-04 | 2002-12-04 |  |  |  | 184d |  | start no earlier than 2002-11-26 | Sarah Meagher [80%]; Vincent Chin [80%] | 12.8h |  |
| 627 | 4.8.3.2 | **Complete Level 3 Seaside** | 1d? | 2002-11-26 A | 2002-11-26 |  | 38% | 0.62d? | 190d |  |  |  | 134.4h | 55.2h |
| 628 | 4.8.3.2.1 | Final textures and geometry | 1d? | 2002-11-26 A | 2002-11-26 |  | 85% | 0.15d? | 190d |  | start no earlier than 2002-11-26 | Sanela Mickovic; Ross Young | 16h | 13.6h |
| 629 | 4.8.3.2.2 | CBV foundation for lighting | 1d? | 2002-11-26 A | 2002-11-26 |  | 85% | 0.15d? | 190d |  | start no earlier than 2002-11-26 | Sanela Mickovic; Ross Young | 16h | 13.6h |
| 630 | 4.8.3.2.3 | All local world sphere and main world sphere | 1d? | 2002-11-26 A | 2002-11-26 |  | 85% | 0.15d? | 190d |  | start no earlier than 2002-11-26 | Sanela Mickovic; Ross Young | 16h | 13.6h |
| 631 | 4.8.3.2.4 | Phone booth placement | 1d? | 2002-11-26 | 2002-11-26 |  |  |  | 190d |  | start no earlier than 2002-11-26 | Sanela Mickovic; Ross Young | 16h |  |
| 632 | 4.8.3.2.5 | Moveable and breakable prop placement | 1d? | 2002-11-26 A | 2002-11-26 |  | 90% | 0.1d? | 190d |  | start no earlier than 2002-11-26 | Sanela Mickovic; Ross Young | 16h | 14.4h |
| 633 | 4.8.3.2.6 | Simpson’s billboard signs | 1d? | 2002-11-26 | 2002-11-26 |  |  |  | 190d |  | start no earlier than 2002-11-26 | Sanela Mickovic; Ross Young | 16h |  |
| 634 | 4.8.3.2.7 | Task 1 | 1d? | 2002-11-26 | 2002-11-26 |  |  |  | 190d |  | start no earlier than 2002-11-26 | Sanela Mickovic [80%]; Ross Young [80%] | 12.8h |  |
| 635 | 4.8.3.2.8 | Task 2 | 1d? | 2002-11-26 | 2002-11-26 |  |  |  | 190d |  | start no earlier than 2002-11-26 | Sanela Mickovic [80%]; Ross Young [80%] | 12.8h |  |
| 636 | 4.8.3.2.9 | Task 3 | 1d? | 2002-11-26 | 2002-11-26 |  |  |  | 190d |  | start no earlier than 2002-11-26 | Sanela Mickovic [80%]; Ross Young [80%] | 12.8h |  |

| ID | WBS | Task | Duration | Start | Finish | Predecessors | Complete | Remaining | Total slack | Free slack | Constraint | Resources | Work | Actual work |
| --- | --- | --- | --- | --- | --- | --- | --- | --- | --- | --- | --- | --- | --- | --- |
| 637 | 4.8.3.3 | **Complete Level 1 Suburbs** | 1d? | 2002-11-26 A | 2002-11-26 |  | 30% | 0.7d? | 190d |  |  |  | 249.6h | 79.2h |
| 638 | 4.8.3.3.1 | Redesign of suburbs layout | 1d? | 2002-11-26 A | 2002-11-26 |  | 80% | 0.2d? | 190d |  | start no earlier than 2002-11-26 | Jeff Pidsadny; Robert Peet; Eric Madill | 24h | 19.2h |
| 639 | 4.8.3.3.2 | Massing and geometry placement | 1d? | 2002-11-26 A | 2002-11-26 |  | 80% | 0.2d? | 190d |  | start no earlier than 2002-11-26 | Jeff Pidsadny; Robert Peet; Eric Madill | 24h | 19.2h |
| 640 | 4.8.3.3.3 | Final textures and geometry | 1d? | 2002-11-26 A | 2002-11-26 |  | 60% | 0.4d? | 190d |  | start no earlier than 2002-11-26 | Jeff Pidsadny; Robert Peet; Eric Madill | 24h | 14.4h |
| 641 | 4.8.3.3.4 | CBV foundation for lighting | 1d? | 2002-11-26 A | 2002-11-26 |  | 50% | 0.5d? | 190d |  | start no earlier than 2002-11-26 | Jeff Pidsadny; Robert Peet; Eric Madill | 24h | 12h |
| 642 | 4.8.3.3.5 | All local world sphere and main world sphere | 1d? | 2002-11-26 A | 2002-11-26 |  | 60% | 0.4d? | 190d |  | start no earlier than 2002-11-26 | Jeff Pidsadny; Robert Peet; Eric Madill | 24h | 14.4h |
| 643 | 4.8.3.3.6 | Phone booth placement | 1d? | 2002-11-26 | 2002-11-26 |  |  |  | 190d |  | start no earlier than 2002-11-26 | Jeff Pidsadny; Robert Peet; Eric Madill | 24h |  |
| 644 | 4.8.3.3.7 | Moveable and breakable prop placement | 1d? | 2002-11-26 | 2002-11-26 |  |  |  | 190d |  | start no earlier than 2002-11-26 | Jeff Pidsadny; Robert Peet; Eric Madill | 24h |  |
| 645 | 4.8.3.3.8 | Simpson’s billboard signs | 1d? | 2002-11-26 | 2002-11-26 |  |  |  | 190d |  | start no earlier than 2002-11-26 | Jeff Pidsadny; Robert Peet; Eric Madill | 24h |  |
| 646 | 4.8.3.3.9 | Task 1 | 1d? | 2002-11-26 | 2002-11-26 |  |  |  | 190d |  | start no earlier than 2002-11-26 | Jeff Pidsadny [80%]; Robert Peet [80%]; Eric Madill [80%] | 19.2h |  |
| 647 | 4.8.3.3.10 | Task 2 | 1d? | 2002-11-26 | 2002-11-26 |  |  |  | 190d |  | start no earlier than 2002-11-26 | Jeff Pidsadny [80%]; Robert Peet [80%]; Eric Madill [80%] | 19.2h |  |
| 648 | 4.8.3.3.11 | Task 3 | 1d? | 2002-11-26 | 2002-11-26 |  |  |  | 190d |  | start no earlier than 2002-11-26 | Jeff Pidsadny [80%]; Robert Peet [80%]; Eric Madill [80%] | 19.2h |  |
| 649 | 4.8.4 | **Slava** | 19d? | 2002-12-12 | 2003-01-07 |  |  |  | 160d |  |  |  | 140.8h |  |
| 650 | 2.8.19 | **30 Generic Pedestrians (includes 600 hi and 200 low res) (1 per day)** | 4d? | 2002-12-12 | 2002-12-17 | 623 |  |  | 160d |  |  |  | 25.6h |  |
| 651 | 4.8.4.1.1 | 10 adult females | 1d? | 2002-12-12 | 2002-12-12 |  |  |  | 160d | 0d | start no earlier than 2002-11-26 | Jaroslav Chorny [80%] | 6.4h |  |
| 652 | 4.8.4.1.2 | 10 adult males | 1d? | 2002-12-13 | 2002-12-13 | 651 |  |  | 160d | 0d | start no earlier than 2002-11-26 | Jaroslav Chorny [80%] | 6.4h |  |
| 653 | 4.8.4.1.3 | 5 male kids | 1d? | 2002-12-16 | 2002-12-16 | 652 |  |  | 160d | 0d | start no earlier than 2002-11-26 | Jaroslav Chorny [80%] | 6.4h |  |
| 654 | 4.8.4.1.4 | 5 female kids | 1d? | 2002-12-17 | 2002-12-17 | 653 |  |  | 160d | 0d | start no earlier than 2002-11-26 | Jaroslav Chorny [80%] | 6.4h |  |
| 655 | 4.8.4.2 | Finalize specular on user walker characters (1 day) | 1d? | 2002-12-18 | 2002-12-18 | 654 |  |  | 160d | 0d | start no earlier than 2002-11-26 | Jaroslav Chorny [80%] | 6.4h |  |
| 656 | 4.8.4.3 | **14 Bonus Characters (1 character 2 days)** | 14d? | 2002-12-19 | 2003-01-07 | 655 |  |  | 160d |  |  |  | 108.8h |  |
| 657 | 4.8.4.3.1 | Homer in his underwear | 1d? | 2002-12-19 | 2002-12-19 |  |  |  | 160d | 0d | start no earlier than 2002-11-26 | Jaroslav Chorny [80%] | 6.4h |  |
| 658 | 4.8.4.3.2 | Homer in Stonecutters Robe | 1d? | 2002-12-20 | 2002-12-20 | 657 |  |  | 160d | 0d | start no earlier than 2002-11-26 | Jaroslav Chorny [80%] | 6.4h |  |
| 659 | 4.8.4.3.3 | Fat Homer | 1d? | 2002-12-23 | 2002-12-23 | 658 |  |  | 160d | 0d | start no earlier than 2002-11-26 | Jaroslav Chorny [80%] | 6.4h |  |
| 660 | 4.8.4.3.4 | Homer with donut for head | 1d? | 2002-12-24 | 2002-12-24 | 659 |  |  | 160d | 0d | start no earlier than 2002-11-26 | Jaroslav Chorny [80%] | 6.4h |  |
| 661 | 4.8.4.3.5 | Bart in military dress uniform | 1d? | 2002-12-25 | 2002-12-25 | 660 |  |  | 160d | 0d | start no earlier than 2002-11-26 | Jaroslav Chorny [80%] | 6.4h |  |
| 662 | 4.8.4.3.6 | Bart in Ninja outfit | 1d? | 2002-12-26 | 2002-12-26 | 661 |  |  | 160d | 0d | start no earlier than 2002-11-26 | Jaroslav Chorny [80%] | 6.4h |  |
| 663 | 4.8.4.3.7 | Bartman outfit with Cape | 1d? | 2002-12-27 | 2002-12-27 | 662 |  |  | 160d | 0d | start no earlier than 2002-11-26 | Jaroslav Chorny [80%] | 6.4h |  |
| 664 | 4.8.4.3.8 | Bart in football uniform | 1d? | 2002-12-30 | 2002-12-30 | 663 |  |  | 160d | 0d | start no earlier than 2002-11-26 | Jaroslav Chorny [80%] | 6.4h |  |
| 665 | 4.8.4.3.9 | Lisa cool Lisa | 1d? | 2002-12-31 | 2002-12-31 | 664 |  |  | 160d | 0d | start no earlier than 2002-11-26 | Jaroslav Chorny [80%] | 6.4h |  |
| 666 | 4.8.4.3.10 | Lisa in hockey jersey | 1d? | 2003-01-01 | 2003-01-01 | 665 |  |  | 160d | 0d | start no earlier than 2002-11-26 | Jaroslav Chorny [80%] | 6.4h |  |
| 667 | 4.8.4.3.11 | Marge in police outfit | 1d? | 2003-01-02 | 2003-01-02 | 666 |  |  | 160d | 0d | start no earlier than 2002-11-26 | Jaroslav Chorny [80%] | 6.4h |  |
| 668 | 4.8.4.3.12 | Marge in florida prison uniform | 1d? | 2003-01-03 | 2003-01-03 | 667 |  |  | 160d | 0d | start no earlier than 2002-11-26 | Jaroslav Chorny [80%] | 6.4h |  |
| 669 | 4.8.4.3.13 | Apu in All American suit | 1d? | 2003-01-06 | 2003-01-06 | 668 |  |  | 160d | 0d | start no earlier than 2002-11-26 | Jaroslav Chorny [80%] | 6.4h |  |
| 670 | 4.8.4.3.14 | Apu in Indian Army uniform | 1d? | 2003-01-07 | 2003-01-07 | 669 |  |  | 160d |  | start no earlier than 2002-11-26 | Jaroslav Chorny [80%] | 6.4h |  |
| 671 | 4.8.4.3.15 | Task 1 | 1d? | 2002-12-19 | 2002-12-19 |  |  |  | 173d |  | start no earlier than 2002-11-26 | Jaroslav Chorny [80%] | 6.4h |  |
| 672 | 4.8.4.3.16 | Task 2 | 1d? | 2002-12-19 | 2002-12-19 |  |  |  | 173d |  | start no earlier than 2002-11-26 | Jaroslav Chorny [80%] | 6.4h |  |
| 673 | 4.8.4.3.17 | Task 3 | 1d? | 2002-12-19 | 2002-12-19 |  |  |  | 173d |  | start no earlier than 2002-11-26 | Jaroslav Chorny [80%] | 6.4h |  |

| ID | WBS | Task | Duration | Start | Finish | Predecessors | Complete | Remaining | Total slack | Free slack | Constraint | Resources | Work | Actual work |
| --- | --- | --- | --- | --- | --- | --- | --- | --- | --- | --- | --- | --- | --- | --- |
| 674 | 4.8.5 | **Kevin Fink** | 41.88d? | 2002-10-15 A | 2002-12-11 |  | 22% | 32.66d? | 179d |  |  |  | 155.2h | 35.2h |
| 675 | 4.8.5.1 | Rework of Duff truck in the game | 1d? | 2002-11-26 A | 2002-11-26 A |  | 100% |  |  |  | start no earlier than 2002-11-26 | Kevin Fink | 8h | 8h |
| 676 | 4.8.5.2 | Main vehicles shadows need to look sharper (Talk to James Harrison) | 1d? | 2002-11-26 A | 2002-11-26 |  | 90% | 0.1d? | 190d |  | start no earlier than 2002-11-26 | Kevin Fink | 8h | 7.2h |
| 677 | 4.8.5.3 | **Ensure all environmental mapping is working Top quality in game.** | 1d? | 2002-11-26 | 2002-11-26 |  |  |  | 190d |  |  |  | 8h |  |
| 678 | 4.8.5.3.1 | -Need to address damage states on vehicles with Environmental mapping | 1d? | 2002-11-26 | 2002-11-26 |  |  |  | 190d |  | start no earlier than 2002-11-26 | Kevin Fink | 8h |  |
| 679 | 4.8.5.4 | **Oversee issue of Lighting per level on vehicles.** | 1d? | 2002-11-26 | 2002-11-26 |  |  |  | 190d |  |  |  | 8h |  |
| 680 | 4.8.5.4.1 | -Talk to Joel and Devin. | 1d? | 2002-11-26 | 2002-11-26 |  |  |  | 190d |  | start no earlier than 2002-11-26 | Kevin Fink | 8h |  |
| 681 | 4.8.5.5 | **Tweaks to existing Driver Vehicles** | 1d? | 2002-10-15 A | 2002-10-16 A |  | 100% |  |  |  |  |  | 8h | 8h |
| 682 | 2.8.26 | -Based on feedback from vehicle meeting. | 1d? | 2002-10-15 A | 2002-10-16 A |  | 100% |  |  |  | start no earlier than 2002-10-15 | Kevin Fink | 8h | 8h |
| 683 | 4.8.5.6 | **Specific Particle effects for driver vehicles: Includes trunk gags.** | 1d? | 2002-11-26 | 2002-11-26 | 682 |  |  | 190d |  |  |  | 8h |  |
| 684 | 4.8.5.6.1 | Chris Mitchell to come up with design list | 1d? | 2002-11-26 | 2002-11-26 |  |  |  | 190d |  | start no earlier than 2002-11-26 | Kevin Fink | 8h |  |
| 685 | 4.8.5.7 | **Break lights and headlights working in-game:** | 1d? | 2002-11-27 A | 2002-11-27 A | 684 | 100% |  |  |  |  |  | 8h | 8h |
| 686 | 4.8.5.7.1 | Headlight glow and cone on main vehicle and glows only for traffic vehicles. Establish pipeline with Carey B or Greg. | 1d? | 2002-11-27 A | 2002-11-27 A |  | 100% |  |  |  | start no earlier than 2002-11-26 | Kevin Fink | 8h | 8h |
| 687 | 4.8.5.8 | **Build and texture Museum with T-Rex. (First pass)** | 1d? | 2002-11-28 | 2002-11-28 | 686 |  |  | 5d |  |  |  | 8h |  |
| 688 | 4.8.5.8.1 | Need design and reference (Talk to Vincent) | 1d? | 2002-11-28 | 2002-11-28 |  |  |  | 5d | 0d | start no earlier than 2002-11-26 | Kevin Fink | 8h |  |
| 689 | 4.8.5.9 | Fix skid marks (Too light right now) | 1d? | 2002-11-29 | 2002-11-29 | 688 |  |  | 5d | 0d | start no earlier than 2002-11-26 | Kevin Fink | 8h |  |
| 690 | 4.8.5.10 | Remaining reward vehicles | 1d? | 2002-12-02 | 2002-12-02 | 689 |  |  | 5d | 0d | start no earlier than 2002-11-26 | Kevin Fink | 8h |  |
| 691 | 4.8.5.11 | **Get all in with main texture only** | 7d? | 2002-12-03 A | 2002-12-11 | 690 | 5% | 6.65d? | 179d |  |  |  | 75.2h | 4h |
| 692 | 4.8.5.11.1 | Moe's Sedan | 1d? | 2002-12-03 | 2002-12-03 |  |  |  | 179.5d | 0d | start no earlier than 2002-11-26 | Kevin Fink | 8h |  |
| 693 | 4.8.5.11.2 | Book Burning Mobile | 1d? | 2002-12-04 | 2002-12-04 | 692 |  |  | 179.5d | 0d | start no earlier than 2002-11-26 | Kevin Fink | 8h |  |
| 694 | 4.8.5.11.3 | F1/Nascar | 1d? | 2002-12-05 | 2002-12-05 | 693 |  |  | 179.5d | 0d | start no earlier than 2002-11-26 | Kevin Fink | 8h |  |
| 695 | 4.8.5.11.4 | School Bus | 1d? | 2002-12-06 | 2002-12-06 | 694 |  |  | 179.5d | 0d | start no earlier than 2002-11-26 | Kevin Fink | 8h |  |
| 696 | 4.8.5.11.5 | PlowKing | 1d? | 2002-12-09 | 2002-12-09 | 695 |  |  | 179.5d | 0d | start no earlier than 2002-11-26 | Kevin Fink | 8h |  |
| 697 | 4.8.5.11.6 | Scorpio Car | 1d? | 2002-12-10 A | 2002-12-10 | 696 | 50% | 0.5d? | 179d | 0d | start no earlier than 2002-11-26 | Kevin Fink | 8h | 4h |
| 698 | 4.8.5.11.7 | Willie Tractor | 1d? | 2002-12-11 | 2002-12-11 | 697 |  |  | 179d |  | start no earlier than 2002-11-26 | Kevin Fink | 8h |  |
| 699 | 4.8.5.11.8 | Task 1 | 1d? | 2002-12-03 | 2002-12-03 |  |  |  | 185d |  | start no earlier than 2002-11-26 | Kevin Fink [80%] | 6.4h |  |
| 700 | 4.8.5.11.9 | Task 2 | 1d? | 2002-12-03 | 2002-12-03 |  |  |  | 185d |  | start no earlier than 2002-11-26 | Kevin Fink [80%] | 6.4h |  |
| 701 | 4.8.5.11.10 | Task 3 | 1d? | 2002-12-03 | 2002-12-03 |  |  |  | 185d |  | start no earlier than 2002-11-26 | Kevin Fink [80%] | 6.4h |  |

| ID | WBS | Task | Duration | Start | Finish | Predecessors | Total slack | Free slack | Constraint | Resources | Work |
| --- | --- | --- | --- | --- | --- | --- | --- | --- | --- | --- | --- |
| 702 | 4.8.6 | **Ting** | 16d? | 2002-11-26 | 2002-12-17 |  | 175d |  |  |  | 219.2h |
| 703 | 4.8.6.1 | **Front End:** | 16d? | 2002-11-26 | 2002-12-17 |  | 175d |  |  |  | 219.2h |
| 704 | 4.8.6.1.1 | **Card Gallery Screen:** | 1d? | 2002-11-26 | 2002-11-26 |  | 190d |  |  |  | 48h |
| 705 | 4.8.6.1.1.1 | **Collector Cards** | 1d? | 2002-11-26 | 2002-11-26 |  | 190d |  |  |  | 16h |
| 706 | 4.8.6.1.1.1.1 | 6 remaing cards to create | 1d? | 2002-11-26 | 2002-11-26 |  | 190d |  | start no earlier than 2002-11-26 | Ting Ting Chen | 8h |
| 707 | 4.8.6.1.1.1.2 | 7 Bonus cards | 1d? | 2002-11-26 | 2002-11-26 |  | 190d |  | start no earlier than 2002-11-26 | Ting Ting Chen | 8h |
| 708 | 4.8.6.1.1.2 | **Card Gallery** | 1d? | 2002-11-26 | 2002-11-26 |  | 190d |  |  |  | 32h |
| 709 | 4.8.6.1.1.2.1 | Finalize screen layout | 1d? | 2002-11-26 | 2002-11-26 |  | 190d |  | start no earlier than 2002-11-26 | Ting Ting Chen | 8h |
| 710 | 4.8.6.1.1.2.2 | Reassess highlight cursor and card (Yayoi to confirm) | 1d? | 2002-11-26 | 2002-11-26 |  | 190d |  | start no earlier than 2002-11-26 | Ting Ting Chen | 8h |
| 711 | 4.8.6.1.1.2.3 | Card gallery arrows to game specific art | 1d? | 2002-11-26 | 2002-11-26 |  | 190d |  | start no earlier than 2002-11-26 | Ting Ting Chen | 8h |
| 712 | 4.8.6.1.1.2.4 | Card info screen need to create character icons | 1d? | 2002-11-26 | 2002-11-26 |  | 190d |  | start no earlier than 2002-11-26 | Ting Ting Chen | 8h |
| 713 | 4.8.6.1.2 | **Option Screen:** | 16d? | 2002-11-26 | 2002-12-17 |  | 175d |  |  |  | 171.2h |
| 714 | 4.8.6.1.2.1 | **Controller** | 1d? | 2002-11-26 | 2002-11-26 |  | 190d |  |  |  | 16h |
| 715 | 4.8.6.1.2.1.1 | Create game specific buttons | 1d? | 2002-11-26 | 2002-11-26 |  | 190d |  | start no earlier than 2002-11-26 | Ting Ting Chen | 8h |
| 716 | 4.8.6.1.2.1.2 | *double check on the doc, 10- 12 text lines space required | 1d? | 2002-11-26 | 2002-11-26 |  | 190d |  | start no earlier than 2002-11-26 | Ting Ting Chen | 8h |
| 717 | 4.8.6.1.2.2 | **Vibration** | 1d? | 2002-11-26 | 2002-11-26 |  | 190d |  |  |  | 8h |
| 718 | 4.8.6.1.2.2.1 | Need to know if this is necessary (Designer to determine) | 1d? | 2002-11-26 | 2002-11-26 |  | 190d |  | start no earlier than 2002-11-26 | Ting Ting Chen | 8h |
| 719 | 2.8.33 | **Sound** | 2d? | 2002-11-26 | 2002-11-27 |  | 175d |  |  |  | 16h |
| 720 | 4.8.6.1.2.3.1 | Sound icon (Need to be reviewed by Yayoi) | 1d? | 2002-11-26 | 2002-11-26 |  | 175d | 0d | start no earlier than 2002-11-26 | Ting Ting Chen | 8h |
| 721 | 4.8.6.1.2.3.2 | Create model and texture Krusty baby monitor 3d. | 1d? | 2002-11-27 | 2002-11-27 | 720 | 175d | 0d | start no earlier than 2002-11-26 | Ting Ting Chen | 8h |
| 722 | 4.8.6.1.2.4 | **Fonts:** | 1d? | 2002-11-28 | 2002-11-28 | 721 | 175d |  |  |  | 8h |
| 723 | 4.8.6.1.2.4.1 | Finalize all fonts for the game | 1d? | 2002-11-28 | 2002-11-28 |  | 175d | 0d | start no earlier than 2002-11-26 | Ting Ting Chen | 8h |
| 724 | 4.8.6.1.2.5 | **HUD:** | 4d? | 2002-11-29 | 2002-12-04 | 723 | 175d |  |  |  | 32h |
| 725 | 4.8.6.1.2.5.1 | Redesign of icons for nav map. | 1d? | 2002-11-29 | 2002-11-29 |  | 175d | 0d | start no earlier than 2002-11-26 | Ting Ting Chen | 8h |
| 726 | 4.8.6.1.2.5.2 | Navigation map finalize art (with Borders) | 1d? | 2002-12-02 | 2002-12-02 | 725 | 175d | 0d | start no earlier than 2002-11-26 | Ting Ting Chen | 8h |
| 727 | 4.8.6.1.2.5.3 | Create mission icon collectibles (Need to determine with designers) | 1d? | 2002-12-03 | 2002-12-03 | 726 | 175d | 0d | start no earlier than 2002-11-26 | Ting Ting Chen | 8h |
| 728 | 4.8.6.1.2.5.4 | Action button reassess | 1d? | 2002-12-04 | 2002-12-04 | 727 | 175d | 0d | start no earlier than 2002-11-26 | Ting Ting Chen | 8h |

| ID | WBS | Task | Duration | Start | Finish | Predecessors | Total slack | Free slack | Constraint | Resources | Work |
| --- | --- | --- | --- | --- | --- | --- | --- | --- | --- | --- | --- |
| 729 | 4.8.6.1.2.6 | **Loading screen:** | 2d? | 2002-12-05 | 2002-12-06 | 728 | 175d |  |  |  | 16h |
| 730 | 4.8.6.1.2.6.1 | All level loading newspaper headline screen (need reference) (Talk to Chris) | 1d? | 2002-12-05 | 2002-12-05 |  | 175d | 0d | start no earlier than 2002-11-26 | Ting Ting Chen | 8h |
| 731 | 4.8.6.1.2.6.2 | Create in-game generic loading screen (Yayoi to determine) (Itchy and Scratchy) | 1d? | 2002-12-06 | 2002-12-06 | 730 | 175d | 0d | start no earlier than 2002-11-26 | Ting Ting Chen | 8h |
| 732 | 4.8.6.1.2.7 | **Pause menu:** | 7d? | 2002-12-09 | 2002-12-17 | 731 | 175d |  |  |  | 75.2h |
| 733 | 4.8.6.1.2.7.1 | Finalize Pause menu screen | 1d? | 2002-12-09 | 2002-12-09 |  | 175d | 0d | start no earlier than 2002-11-26 | Ting Ting Chen | 8h |
| 734 | 4.8.6.1.2.7.2 | Pause menu Map (Need to determined if needed) | 1d? | 2002-12-10 | 2002-12-10 | 733 | 175d | 0d | start no earlier than 2002-11-26 | Ting Ting Chen | 8h |
| 735 | 4.8.6.1.2.7.3 | Save game layout finalize | 1d? | 2002-12-11 | 2002-12-11 | 734 | 175d | 0d | start no earlier than 2002-11-26 | Ting Ting Chen | 8h |
| 736 | 2.8.34 | Quit game layout finalize | 1d? | 2002-12-12 | 2002-12-12 | 735 | 175d | 0d |  | Ting Ting Chen | 8h |
| 737 | 2.8.35 | Mission info text font finalize | 1d? | 2002-12-13 | 2002-12-13 | 736 | 175d | 0d |  | Ting Ting Chen | 8h |
| 738 | 2.8.36 | Redesign of card screen in pause menu maybe (Tech to investigate) | 1d? | 2002-12-16 | 2002-12-16 | 737 | 175d | 0d |  | Ting Ting Chen | 8h |
| 739 | 2.8.37 | Warning message overlay | 1d? | 2002-12-17 | 2002-12-17 | 738 | 175d |  |  | Ting Ting Chen | 8h |
| 740 | 4.8.6.1.2.7.8 | Task 1 | 1d? | 2002-12-09 | 2002-12-09 |  | 181d |  | start no earlier than 2002-11-26 | Ting Ting Chen [80%] | 6.4h |
| 741 | 4.8.6.1.2.7.9 | Task 2 | 1d? | 2002-12-09 | 2002-12-09 |  | 181d |  | start no earlier than 2002-11-26 | Ting Ting Chen [80%] | 6.4h |
| 742 | 4.8.6.1.2.7.10 | Task 3 | 1d? | 2002-12-09 | 2002-12-09 |  | 181d |  | start no earlier than 2002-11-26 | Ting Ting Chen [80%] | 6.4h |
| 743 | 2.9 | **Milestone 15 - (Old Alpha (Jan 15th) (Temp))** | 51d? | 2002-12-16 | 2003-02-24 |  | 125.88d |  |  |  | 533.6h |
| 744 | 2.9.1 | All mission effects (Final) | 1d? | 2002-12-16 | 2002-12-17 |  | 125.88d | 0d | start no earlier than 2002-12-16 | Aryan Hanbeck | 8h |
| 745 | 2.9.2 | Mission effects Remaining for suburbs | 1d? | 2002-12-17 | 2002-12-18 | 744 | 125.88d | 0d |  | Aryan Hanbeck | 8h |
| 746 | 2.9.3 | Special effects for location volumes | 1d? | 2002-12-18 | 2002-12-19 | 745 | 125.88d | 0d |  | Aryan Hanbeck | 8h |
| 747 | 2.9.4 | Special effects for powerplant | 1d? | 2002-12-19 | 2002-12-20 | 746 | 125.88d | 0d |  | Aryan Hanbeck | 8h |
| 748 | 2.9.5 | Special effects for Downtown | 1d? | 2002-12-20 | 2002-12-23 | 747 | 125.88d | 0d |  | Aryan Hanbeck | 8h |
| 749 | 2.9.6 | Mission effects for Downtown (Probably done once suburbs mission effects final) | 1d? | 2002-12-23 | 2002-12-24 | 748 | 125.88d | 0d |  | Aryan Hanbeck | 8h |
| 750 | 2.9.7 | Breakables for Downtown | 1d? | 2002-12-24 | 2002-12-25 | 749 | 125.88d | 0d |  | Aryan Hanbeck | 8h |
| 751 | 2.9.8 | Breakables for Suburbs final | 1d? | 2002-12-25 | 2002-12-26 | 750 | 125.88d | 0d |  | Aryan Hanbeck | 8h |
| 752 | 2.9.9 | 2 interiors for Downtown complete | 1d? | 2002-12-26 | 2002-12-27 | 751 | 125.88d | 0d | start no earlier than 2002-10-15 | Eric Madill | 8h |
| 753 | 2.9.10 | design 2 interior for Seaside | 1d? | 2002-12-27 | 2002-12-30 | 752 | 125.88d | 0d |  | Eric Madill | 8h |
| 754 | 2.9.11 | Finalize intro movie (Pending Title for game approved) | 1d? | 2002-12-30 | 2002-12-31 | 753 | 125.88d | 0d | start no earlier than 2002-10-15 | Jeremy Mesana [25%]; Ron Sombilon [25%]; Yousuf Mapara [25%]; Trevor Lim [25%] | 8h |
| 755 | 2.9.12 | FMV #2 40% complete (% percentage will be higher if dialogue recorded) | 1d? | 2002-12-31 | 2003-01-01 | 754 | 125.88d | 0d |  | Jeremy Mesana [25%]; Ron Sombilon [25%]; Yousuf Mapara [25%]; Trevor Lim [25%] | 8h |
| 756 | 2.9.13 | Remaining in-game animations final (dependent on Driver, passenger, pedestrian all implemented in game) | 1d? | 2003-01-01 | 2003-01-02 | 755 | 125.88d | 0d |  | Jeremy Mesana [25%]; Ron Sombilon [25%]; Yousuf Mapara [25%]; Trevor Lim [25%] | 8h |

| ID | WBS | Task | Duration | Start | Finish | Predecessors | Total slack | Free slack | Constraint | Resources | Work |
| --- | --- | --- | --- | --- | --- | --- | --- | --- | --- | --- | --- |
| 757 | 2.9.14 | **FMV #2 - 7 animatic completed (Pending on FOx Approval)** | 5d? | 2003-01-02 | 2003-01-09 | 756 | 125.88d | 0d |  | Jeremy Mesana [25%]; Ron Sombilon [25%]; Yousuf Mapara [25%]; Trevor Lim [25%] | 80h |
| 758 | 2.9.14.1 | FMV #3 | 1d? | 2003-01-02 | 2003-01-03 |  | 125.88d | 0d |  | Jeremy Mesana [25%]; Ron Sombilon [25%]; Yousuf Mapara [25%]; Trevor Lim [25%] | 8h |
| 759 | 2.9.14.2 | FMV #4 | 1d? | 2003-01-03 | 2003-01-06 | 758 | 125.88d | 0d |  | Jeremy Mesana [25%]; Ron Sombilon [25%]; Yousuf Mapara [25%]; Trevor Lim [25%] | 8h |
| 760 | 2.9.14.3 | FMV #5 | 1d? | 2003-01-06 | 2003-01-07 | 759 | 125.88d | 0d |  | Jeremy Mesana [25%]; Ron Sombilon [25%]; Yousuf Mapara [25%]; Trevor Lim [25%] | 8h |
| 761 | 2.9.14.4 | FMV #6 | 1d? | 2003-01-07 | 2003-01-08 | 760 | 125.88d | 0d |  | Jeremy Mesana [25%]; Ron Sombilon [25%]; Yousuf Mapara [25%]; Trevor Lim [25%] | 8h |
| 762 | 2.9.14.5 | FMV #7 | 1d? | 2003-01-08 | 2003-01-09 | 761 | 125.88d |  |  | Jeremy Mesana [25%]; Ron Sombilon [25%]; Yousuf Mapara [25%]; Trevor Lim [25%] | 8h |
| 763 | 2.9.15 | Gags all working for suburbs and Downtown | 1d? | 2003-01-09 | 2003-01-10 | 757 | 125.88d | 0d |  | Jeremy Mesana [25%]; Ron Sombilon [25%]; Yousuf Mapara [25%]; Trevor Lim [25%] | 8h |
| 764 | 2.9.16 | 2 weeks on Seaside (all people) | 1d? | 2003-01-10 | 2003-01-13 | 763 | 125.88d | 0d | start no earlier than 2002-10-15 | Jeff Pidsadny [15%]; Sanela Mickovic [15%]; Ross Young [15%]; Robert Peet [15%]; Sarah Meagher [15%]; Vincent Chin [15%]; Allister Jones | 7.2h |
| 765 | 2.9.17 | 1 week halloween complete (2 people) | 1d? | 2003-01-13 | 2003-01-14 | 764 | 125.88d | 0d |  | Jeff Pidsadny [15%]; Sanela Mickovic [15%]; Ross Young [15%]; Robert Peet [15%]; Sarah Meagher [15%]; Vincent Chin [15%]; Allister Jones | 7.2h |
| 766 | 2.9.18 | 1 week Seaside complete (3 people) | 1d? | 2003-01-14 | 2003-01-15 | 765 | 125.88d | 0d |  | Jeff Pidsadny [15%]; Sanela Mickovic [15%]; Ross Young [15%]; Robert Peet [15%]; Sarah Meagher [15%]; Vincent Chin [15%]; Allister Jones | 7.2h |
| 767 | 2.9.19 | Selma | 1d? | 2003-01-15 | 2003-01-16 | 766 | 125.88d | 0d | start no earlier than 2002-10-15 | Jaroslav Chorny | 8h |
| 768 | 2.9.20 | Skinner | 1d? | 2003-01-16 | 2003-01-17 | 767 | 125.88d | 0d |  | Jaroslav Chorny | 8h |
| 769 | 2.9.21 | Sea Captain | 1d? | 2003-01-17 | 2003-01-20 | 768 | 125.88d | 0d |  | Jaroslav Chorny | 8h |
| 770 | 2.9.22 | Sideshow Bob float | 1d? | 2003-01-20 | 2003-01-21 | 769 | 125.88d | 0d |  | Jaroslav Chorny | 8h |
| 771 | 2.9.23 | **Generic Pedestrians** | 4d? | 2003-01-21 | 2003-01-27 | 770 | 125.88d | 0d |  | Jaroslav Chorny | 64h |
| 772 | 2.9.23.1 | Generic ped kid F | 1d? | 2003-01-21 | 2003-01-22 |  | 125.88d | 0d |  | Jaroslav Chorny | 8h |
| 773 | 2.9.23.2 | Generic ped kid M | 1d? | 2003-01-22 | 2003-01-23 | 772 | 125.88d | 0d |  | Jaroslav Chorny | 8h |
| 774 | 2.9.23.3 | Generic ped adult M2 | 1d? | 2003-01-23 | 2003-01-24 | 773 | 125.88d | 0d |  | Jaroslav Chorny | 8h |
| 775 | 2.9.23.4 | Generic ped adult F2 | 1d? | 2003-01-24 | 2003-01-27 | 774 | 125.88d |  |  | Jaroslav Chorny | 8h |
| 776 | 2.9.24 | Zombie character | 1d? | 2003-01-27 | 2003-01-28 | 771 | 125.88d | 0d |  | Jaroslav Chorny | 8h |
| 777 | 2.9.25 | (Need to find out from designers about monkey status) | 1d? | 2003-01-28 | 2003-01-29 | 776 | 125.88d | 0d |  | Jaroslav Chorny | 8h |
| 778 | 2.9.26 | Damage states for all driver vehicles complete | 1d? | 2003-01-29 | 2003-01-30 | 777 | 125.88d | 0d | start no earlier than 2002-10-15 | Kevin Fink | 8h |
| 779 | 2.9.27 | Cartoonify Traffic vehicles | 1d? | 2003-01-30 | 2003-01-31 | 778 | 125.88d | 0d |  | Kevin Fink | 8h |
| 780 | 2.9.28 | Environmental mapping complete on vehicles. | 1d? | 2003-01-31 | 2003-02-03 | 779 | 125.88d | 0d |  | Kevin Fink | 8h |
| 781 | 2.9.29 | Track sprays and SKid marks final | 1d? | 2003-02-03 | 2003-02-04 | 780 | 125.88d | 0d |  | Kevin Fink | 8h |
| 782 | 2.9.30 | More vehicles | 1d? | 2003-02-04 | 2003-02-05 | 781 | 125.88d | 0d |  | Kevin Fink | 8h |

Notes:
- 772: (Slava talk to Dusit about More gens)

| ID | WBS | Task | Duration | Start | Finish | Predecessors | Total slack | Free slack | Constraint | Resources | Work |
| --- | --- | --- | --- | --- | --- | --- | --- | --- | --- | --- | --- |
| 783 | 2.9.31 | **Generic Gremlin (Race)** | 7d? | 2003-02-05 | 2003-02-14 | 782 | 125.88d | 0d |  | Kevin Fink | 112h |
| 784 | 2.9.31.1 | (3) Black Limo (Chase and Destroy)* | 1d? | 2003-02-05 | 2003-02-06 |  | 125.88d | 0d |  | Kevin Fink | 8h |
| 785 | 2.9.31.2 | (5) Cola truck and Black Sedans (Chase and evade) (red /white siren ) | 1d? | 2003-02-06 | 2003-02-07 | 784 | 125.88d | 0d |  | Kevin Fink | 8h |
| 786 | 2.9.31.3 | (5) Armored Truck (Chase and destroy) | 1d? | 2003-02-07 | 2003-02-10 | 785 | 125.88d | 0d |  | Kevin Fink | 8h |
| 787 | 2.9.31.4 | (5) Curator vehicle (Race) | 1d? | 2003-02-10 | 2003-02-11 | 786 | 125.88d | 0d |  | Kevin Fink | 8h |
| 788 | 2.9.31.5 | (6) Krusty> '> s Limo (race) | 1d? | 2003-02-11 | 2003-02-12 | 787 | 125.88d | 0d |  | Kevin Fink | 8h |
| 789 | 2.9.31.6 | (7) Black Ferrini (race) | 1d? | 2003-02-12 | 2003-02-13 | 788 | 125.88d | 0d |  | Kevin Fink | 8h |
| 790 | 2.9.31.7 | (7) Generic Zombie Hearse Vehicle ???? ( Evade) (green/orange siren ) | 1d? | 2003-02-13 | 2003-02-14 | 789 | 125.88d | 0d |  | Kevin Fink | 8h |
| 791 | 2.9.32 | more reward vehicles (have yet to be determined with designers) | 1d? | 2003-02-14 | 2003-02-15 | 790, 783 | 125.88d | 0d |  | Kevin Fink | 8h |
| 792 | 2.9.33 | Finalize Navigation map on hud (Needs redesign) | 1d? | 2003-02-15 | 2003-02-17 | 791 | 125.88d | 0d | start no earlier than 2002-10-15 | Ting Ting Chen | 8h |
| 793 | 2.9.34 | Mission object icons for HUD | 1d? | 2003-02-17 | 2003-02-18 | 792 | 125.88d | 0d |  | Ting Ting Chen | 8h |
| 794 | 2.9.35 | All collector cards complete for all levels (This may not be feasible pending new design changes) | 1d? | 2003-02-18 | 2003-02-19 | 793 | 125.88d | 0d |  | Ting Ting Chen | 8h |
| 795 | 2.9.36 | Finalize Card Gallery | 1d? | 2003-02-19 | 2003-02-20 | 794 | 125.88d | 0d |  | Ting Ting Chen | 8h |
| 796 | 2.9.37 | Finalize Pause Menu | 1d? | 2003-02-20 | 2003-02-21 | 795 | 125.88d | 0d |  | Ting Ting Chen | 8h |
| 797 | 2.9.38 | Design menu screens for new designs (Need to clarify with Carey) | 1d? | 2003-02-21 | 2003-02-24 | 796 | 125.88d |  |  | Ting Ting Chen | 8h |
| 798 | 2.10 | **Milestone 16 - (Old Beta ) (Temp)** | 51d? | 2003-01-16 | 2003-03-26 |  | 102.88d |  |  |  | 533.6h |
| 799 | 2.10.1 | All mission effects (Final) | 1d? | 2003-01-16 | 2003-01-17 |  | 102.88d | 0d | start no earlier than 2003-01-16 | Aryan Hanbeck | 8h |
| 800 | 2.10.2 | Mission effects Remaining for suburbs | 1d? | 2003-01-17 | 2003-01-20 | 799 | 102.88d | 0d |  | Aryan Hanbeck | 8h |
| 801 | 2.10.3 | Special effects for location volumes | 1d? | 2003-01-20 | 2003-01-21 | 800 | 102.88d | 0d |  | Aryan Hanbeck | 8h |
| 802 | 2.10.4 | Special effects for powerplant | 1d? | 2003-01-21 | 2003-01-22 | 801 | 102.88d | 0d |  | Aryan Hanbeck | 8h |
| 803 | 2.10.5 | Special effects for Downtown | 1d? | 2003-01-22 | 2003-01-23 | 802 | 102.88d | 0d |  | Aryan Hanbeck | 8h |
| 804 | 2.10.6 | Mission effects for Downtown (Probably done once suburbs mission effects final) | 1d? | 2003-01-23 | 2003-01-24 | 803 | 102.88d | 0d |  | Aryan Hanbeck | 8h |
| 805 | 2.10.7 | Breakables for Downtown | 1d? | 2003-01-24 | 2003-01-27 | 804 | 102.88d | 0d |  | Aryan Hanbeck | 8h |
| 806 | 2.10.8 | Breakables for Suburbs final | 1d? | 2003-01-27 | 2003-01-28 | 805 | 102.88d | 0d |  | Aryan Hanbeck | 8h |
| 807 | 2.10.9 | 2 interiors for Downtown complete | 1d? | 2003-01-28 | 2003-01-29 | 806 | 102.88d | 0d | start no earlier than 2002-10-15 | Eric Madill | 8h |
| 808 | 2.10.10 | design 2 interior for Seaside | 1d? | 2003-01-29 | 2003-01-30 | 807 | 102.88d | 0d |  | Eric Madill | 8h |
| 809 | 2.10.11 | Finalize intro movie (Pending Title for game approved) | 1d? | 2003-01-30 | 2003-01-31 | 808 | 102.88d | 0d | start no earlier than 2002-10-15 | Jeremy Mesana [25%]; Ron Sombilon [25%]; Yousuf Mapara [25%]; Trevor Lim [25%] | 8h |
| 810 | 2.10.12 | FMV #2 40% complete (% percentage will be higher if dialogue recorded) | 1d? | 2003-01-31 | 2003-02-03 | 809 | 102.88d | 0d |  | Jeremy Mesana [25%]; Ron Sombilon [25%]; Yousuf Mapara [25%]; Trevor Lim [25%] | 8h |
| 811 | 2.10.13 | Remaining in-game animations final (dependent on Driver, passenger, pedestrian all implemented in game) | 1d? | 2003-02-03 | 2003-02-04 | 810 | 102.88d | 0d |  | Jeremy Mesana [25%]; Ron Sombilon [25%]; Yousuf Mapara [25%]; Trevor Lim [25%] | 8h |

| ID | WBS | Task | Duration | Start | Finish | Predecessors | Total slack | Free slack | Constraint | Resources | Work |
| --- | --- | --- | --- | --- | --- | --- | --- | --- | --- | --- | --- |
| 812 | 2.10.14 | **FMV #2 - 7 animatic completed (Pending on FOx Approval)** | 5d? | 2003-02-04 | 2003-02-11 | 811 | 102.88d | 0d |  | Jeremy Mesana [25%]; Ron Sombilon [25%]; Yousuf Mapara [25%]; Trevor Lim [25%] | 80h |
| 813 | 2.10.14.1 | FMV #3 | 1d? | 2003-02-04 | 2003-02-05 |  | 102.88d | 0d |  | Jeremy Mesana [25%]; Ron Sombilon [25%]; Yousuf Mapara [25%]; Trevor Lim [25%] | 8h |
| 814 | 2.10.14.2 | FMV #4 | 1d? | 2003-02-05 | 2003-02-06 | 813 | 102.88d | 0d |  | Jeremy Mesana [25%]; Ron Sombilon [25%]; Yousuf Mapara [25%]; Trevor Lim [25%] | 8h |
| 815 | 2.10.14.3 | FMV #5 | 1d? | 2003-02-06 | 2003-02-07 | 814 | 102.88d | 0d |  | Jeremy Mesana [25%]; Ron Sombilon [25%]; Yousuf Mapara [25%]; Trevor Lim [25%] | 8h |
| 816 | 2.10.14.4 | FMV #6 | 1d? | 2003-02-07 | 2003-02-10 | 815 | 102.88d | 0d |  | Jeremy Mesana [25%]; Ron Sombilon [25%]; Yousuf Mapara [25%]; Trevor Lim [25%] | 8h |
| 817 | 2.10.14.5 | FMV #7 | 1d? | 2003-02-10 | 2003-02-11 | 816 | 102.88d |  |  | Jeremy Mesana [25%]; Ron Sombilon [25%]; Yousuf Mapara [25%]; Trevor Lim [25%] | 8h |
| 818 | 2.10.15 | Gags all working for suburbs and Downtown | 1d? | 2003-02-11 | 2003-02-12 | 812 | 102.88d | 0d |  | Jeremy Mesana [25%]; Ron Sombilon [25%]; Yousuf Mapara [25%]; Trevor Lim [25%] | 8h |
| 819 | 2.10.16 | 2 weeks on Seaside (all people) | 1d? | 2003-02-12 | 2003-02-13 | 818 | 102.88d | 0d | start no earlier than 2002-10-15 | Jeff Pidsadny [15%]; Sanela Mickovic [15%]; Ross Young [15%]; Robert Peet [15%]; Sarah Meagher [15%]; Vincent Chin [15%]; Allister Jones | 7.2h |
| 820 | 2.10.17 | 1 week halloween complete (2 people) | 1d? | 2003-02-13 | 2003-02-14 | 819 | 102.88d | 0d |  | Jeff Pidsadny [15%]; Sanela Mickovic [15%]; Ross Young [15%]; Robert Peet [15%]; Sarah Meagher [15%]; Vincent Chin [15%]; Allister Jones | 7.2h |
| 821 | 2.10.18 | 1 week Seaside complete (3 people) | 1d? | 2003-02-14 | 2003-02-15 | 820 | 102.88d | 0d |  | Jeff Pidsadny [15%]; Sanela Mickovic [15%]; Ross Young [15%]; Robert Peet [15%]; Sarah Meagher [15%]; Vincent Chin [15%]; Allister Jones | 7.2h |
| 822 | 2.10.19 | Selma | 1d? | 2003-02-15 | 2003-02-17 | 821 | 102.88d | 0d | start no earlier than 2002-10-15 | Jaroslav Chorny | 8h |
| 823 | 2.10.20 | Skinner | 1d? | 2003-02-17 | 2003-02-18 | 822 | 102.88d | 0d |  | Jaroslav Chorny | 8h |
| 824 | 2.10.21 | Sea Captain | 1d? | 2003-02-18 | 2003-02-19 | 823 | 102.88d | 0d |  | Jaroslav Chorny | 8h |
| 825 | 2.10.22 | Sideshow Bob float | 1d? | 2003-02-19 | 2003-02-20 | 824 | 102.88d | 0d |  | Jaroslav Chorny | 8h |
| 826 | 2.10.23 | **Generic Pedestrians** | 4d? | 2003-02-20 | 2003-02-26 | 825 | 102.88d | 0d |  | Jaroslav Chorny | 64h |
| 827 | 2.10.23.1 | Generic ped kid F | 1d? | 2003-02-20 | 2003-02-21 |  | 102.88d | 0d |  | Jaroslav Chorny | 8h |
| 828 | 2.10.23.2 | Generic ped kid M | 1d? | 2003-02-21 | 2003-02-24 | 827 | 102.88d | 0d |  | Jaroslav Chorny | 8h |
| 829 | 2.10.23.3 | Generic ped adult M2 | 1d? | 2003-02-24 | 2003-02-25 | 828 | 102.88d | 0d |  | Jaroslav Chorny | 8h |
| 830 | 2.10.23.4 | Generic ped adult F2 | 1d? | 2003-02-25 | 2003-02-26 | 829 | 102.88d |  |  | Jaroslav Chorny | 8h |
| 831 | 2.10.24 | Zombie character | 1d? | 2003-02-26 | 2003-02-27 | 826 | 102.88d | 0d |  | Jaroslav Chorny | 8h |
| 832 | 2.10.25 | (Need to find out from designers about monkey status) | 1d? | 2003-02-27 | 2003-02-28 | 831 | 102.88d | 0d |  | Jaroslav Chorny | 8h |
| 833 | 2.10.26 | Damage states for all driver vehicles complete | 1d? | 2003-02-28 | 2003-03-03 | 832 | 102.88d | 0d | start no earlier than 2002-10-15 | Kevin Fink | 8h |
| 834 | 2.10.27 | Cartoonify Traffic vehicles | 1d? | 2003-03-03 | 2003-03-04 | 833 | 102.88d | 0d |  | Kevin Fink | 8h |
| 835 | 2.10.28 | Environmental mapping complete on vehicles. | 1d? | 2003-03-04 | 2003-03-05 | 834 | 102.88d | 0d |  | Kevin Fink | 8h |
| 836 | 2.10.29 | Track sprays and SKid marks final | 1d? | 2003-03-05 | 2003-03-06 | 835 | 102.88d | 0d |  | Kevin Fink | 8h |
| 837 | 2.10.30 | More vehicles | 1d? | 2003-03-06 | 2003-03-07 | 836 | 102.88d | 0d |  | Kevin Fink | 8h |

Notes:
- 827: (Slava talk to Dusit about More gens)

| ID | WBS | Task | Duration | Start | Finish | Predecessors | Total slack | Free slack | Constraint | Resources | Work |
| --- | --- | --- | --- | --- | --- | --- | --- | --- | --- | --- | --- |
| 838 | 2.10.31 | **Generic Gremlin (Race)** | 7d? | 2003-03-07 | 2003-03-17 | 837 | 102.88d | 0d |  | Kevin Fink | 112h |
| 839 | 2.10.31.1 | (3) Black Limo (Chase and Destroy)* | 1d? | 2003-03-07 | 2003-03-10 |  | 102.88d | 0d |  | Kevin Fink | 8h |
| 840 | 2.10.31.2 | (5) Cola truck and Black Sedans (Chase and evade) (red /white siren ) | 1d? | 2003-03-10 | 2003-03-11 | 839 | 102.88d | 0d |  | Kevin Fink | 8h |
| 841 | 2.10.31.3 | (5) Armored Truck (Chase and destroy) | 1d? | 2003-03-11 | 2003-03-12 | 840 | 102.88d | 0d |  | Kevin Fink | 8h |
| 842 | 2.10.31.4 | (5) Curator vehicle (Race) | 1d? | 2003-03-12 | 2003-03-13 | 841 | 102.88d | 0d |  | Kevin Fink | 8h |
| 843 | 2.10.31.5 | (6) Krusty> '> s Limo (race) | 1d? | 2003-03-13 | 2003-03-14 | 842 | 102.88d | 0d |  | Kevin Fink | 8h |
| 844 | 2.10.31.6 | (7) Black Ferrini (race) | 1d? | 2003-03-14 | 2003-03-15 | 843 | 102.88d | 0d |  | Kevin Fink | 8h |
| 845 | 2.10.31.7 | (7) Generic Zombie Hearse Vehicle ???? ( Evade) (green/orange siren ) | 1d? | 2003-03-15 | 2003-03-17 | 844 | 102.88d | 0d |  | Kevin Fink | 8h |
| 846 | 2.10.32 | more reward vehicles (have yet to be determined with designers) | 1d? | 2003-03-17 | 2003-03-18 | 845, 838 | 102.88d | 0d |  | Kevin Fink | 8h |
| 847 | 2.10.33 | Finalize Navigation map on hud (Needs redesign) | 1d? | 2003-03-18 | 2003-03-19 | 846 | 102.88d | 0d | start no earlier than 2002-10-15 | Ting Ting Chen | 8h |
| 848 | 2.10.34 | Mission object icons for HUD | 1d? | 2003-03-19 | 2003-03-20 | 847 | 102.88d | 0d |  | Ting Ting Chen | 8h |
| 849 | 2.10.35 | All collector cards complete for all levels (This may not be feasible pending new design changes) | 1d? | 2003-03-20 | 2003-03-21 | 848 | 102.88d | 0d |  | Ting Ting Chen | 8h |
| 850 | 2.10.36 | Finalize Card Gallery | 1d? | 2003-03-21 | 2003-03-24 | 849 | 102.88d | 0d |  | Ting Ting Chen | 8h |
| 851 | 2.10.37 | Finalize Pause Menu | 1d? | 2003-03-24 | 2003-03-25 | 850 | 102.88d | 0d |  | Ting Ting Chen | 8h |
| 852 | 2.10.38 | Design menu screens for new designs (Need to clarify with Carey) | 1d? | 2003-03-25 | 2003-03-26 | 851 | 102.88d |  |  | Ting Ting Chen | 8h |
| 853 | 2.11 | **Milestone 17 - (old Final (March 30th) (Temp))** | 51d? | 2003-03-03 | 2003-05-12 |  | 69.88d |  |  |  | 533.6h |
| 854 | 2.11.1 | All mission effects (Final) | 1d? | 2003-03-03 | 2003-03-04 |  | 69.88d | 0d | start no earlier than 2003-03-03 | Aryan Hanbeck | 8h |
| 855 | 2.11.2 | Mission effects Remaining for suburbs | 1d? | 2003-03-04 | 2003-03-05 | 854 | 69.88d | 0d |  | Aryan Hanbeck | 8h |
| 856 | 2.11.3 | Special effects for location volumes | 1d? | 2003-03-05 | 2003-03-06 | 855 | 69.88d | 0d |  | Aryan Hanbeck | 8h |
| 857 | 2.11.4 | Special effects for powerplant | 1d? | 2003-03-06 | 2003-03-07 | 856 | 69.88d | 0d |  | Aryan Hanbeck | 8h |
| 858 | 2.11.5 | Special effects for Downtown | 1d? | 2003-03-07 | 2003-03-10 | 857 | 69.88d | 0d |  | Aryan Hanbeck | 8h |
| 859 | 2.11.6 | Mission effects for Downtown (Probably done once suburbs mission effects final) | 1d? | 2003-03-10 | 2003-03-11 | 858 | 69.88d | 0d |  | Aryan Hanbeck | 8h |
| 860 | 2.11.7 | Breakables for Downtown | 1d? | 2003-03-11 | 2003-03-12 | 859 | 69.88d | 0d |  | Aryan Hanbeck | 8h |
| 861 | 2.11.8 | Breakables for Suburbs final | 1d? | 2003-03-12 | 2003-03-13 | 860 | 69.88d | 0d |  | Aryan Hanbeck | 8h |
| 862 | 2.11.9 | 2 interiors for Downtown complete | 1d? | 2003-03-13 | 2003-03-14 | 861 | 69.88d | 0d | start no earlier than 2002-10-15 | Eric Madill | 8h |
| 863 | 2.11.10 | design 2 interior for Seaside | 1d? | 2003-03-14 | 2003-03-15 | 862 | 69.88d | 0d |  | Eric Madill | 8h |
| 864 | 2.11.11 | Finalize intro movie (Pending Title for game approved) | 1d? | 2003-03-15 | 2003-03-17 | 863 | 69.88d | 0d | start no earlier than 2002-10-15 | Jeremy Mesana [25%]; Ron Sombilon [25%]; Yousuf Mapara [25%]; Trevor Lim [25%] | 8h |
| 865 | 2.11.12 | FMV #2 40% complete (% percentage will be higher if dialogue recorded) | 1d? | 2003-03-17 | 2003-03-18 | 864 | 69.88d | 0d |  | Jeremy Mesana [25%]; Ron Sombilon [25%]; Yousuf Mapara [25%]; Trevor Lim [25%] | 8h |
| 866 | 2.11.13 | Remaining in-game animations final (dependent on Driver, passenger, pedestrian all implemented in game) | 1d? | 2003-03-18 | 2003-03-19 | 865 | 69.88d | 0d |  | Jeremy Mesana [25%]; Ron Sombilon [25%]; Yousuf Mapara [25%]; Trevor Lim [25%] | 8h |

| ID | WBS | Task | Duration | Start | Finish | Predecessors | Total slack | Free slack | Constraint | Resources | Work |
| --- | --- | --- | --- | --- | --- | --- | --- | --- | --- | --- | --- |
| 867 | 2.11.14 | **FMV #2 - 7 animatic completed (Pending on FOx Approval)** | 5d? | 2003-03-19 | 2003-03-26 | 866 | 69.88d | 0d |  | Jeremy Mesana [25%]; Ron Sombilon [25%]; Yousuf Mapara [25%]; Trevor Lim [25%] | 80h |
| 868 | 2.11.14.1 | FMV #3 | 1d? | 2003-03-19 | 2003-03-20 |  | 69.88d | 0d |  | Jeremy Mesana [25%]; Ron Sombilon [25%]; Yousuf Mapara [25%]; Trevor Lim [25%] | 8h |
| 869 | 2.11.14.2 | FMV #4 | 1d? | 2003-03-20 | 2003-03-21 | 868 | 69.88d | 0d |  | Jeremy Mesana [25%]; Ron Sombilon [25%]; Yousuf Mapara [25%]; Trevor Lim [25%] | 8h |
| 870 | 2.11.14.3 | FMV #5 | 1d? | 2003-03-21 | 2003-03-24 | 869 | 69.88d | 0d |  | Jeremy Mesana [25%]; Ron Sombilon [25%]; Yousuf Mapara [25%]; Trevor Lim [25%] | 8h |
| 871 | 2.11.14.4 | FMV #6 | 1d? | 2003-03-24 | 2003-03-25 | 870 | 69.88d | 0d |  | Jeremy Mesana [25%]; Ron Sombilon [25%]; Yousuf Mapara [25%]; Trevor Lim [25%] | 8h |
| 872 | 2.11.14.5 | FMV #7 | 1d? | 2003-03-25 | 2003-03-26 | 871 | 69.88d |  |  | Jeremy Mesana [25%]; Ron Sombilon [25%]; Yousuf Mapara [25%]; Trevor Lim [25%] | 8h |
| 873 | 2.11.15 | Gags all working for suburbs and Downtown | 1d? | 2003-03-26 | 2003-03-27 | 867 | 69.88d | 0d |  | Jeremy Mesana [25%]; Ron Sombilon [25%]; Yousuf Mapara [25%]; Trevor Lim [25%] | 8h |
| 874 | 2.11.16 | 2 weeks on Seaside (all people) | 1d? | 2003-03-27 | 2003-03-28 | 873 | 69.88d | 0d | start no earlier than 2002-10-15 | Jeff Pidsadny [15%]; Sanela Mickovic [15%]; Ross Young [15%]; Robert Peet [15%]; Sarah Meagher [15%]; Vincent Chin [15%]; Allister Jones | 7.2h |
| 875 | 2.11.17 | 1 week halloween complete (2 people) | 1d? | 2003-03-28 | 2003-03-31 | 874 | 69.88d | 0d |  | Jeff Pidsadny [15%]; Sanela Mickovic [15%]; Ross Young [15%]; Robert Peet [15%]; Sarah Meagher [15%]; Vincent Chin [15%]; Allister Jones | 7.2h |
| 876 | 2.11.18 | 1 week Seaside complete (3 people) | 1d? | 2003-03-31 | 2003-04-01 | 875 | 69.88d | 0d |  | Jeff Pidsadny [15%]; Sanela Mickovic [15%]; Ross Young [15%]; Robert Peet [15%]; Sarah Meagher [15%]; Vincent Chin [15%]; Allister Jones | 7.2h |
| 877 | 2.11.19 | Selma | 1d? | 2003-04-01 | 2003-04-02 | 876 | 69.88d | 0d | start no earlier than 2002-10-15 | Jaroslav Chorny | 8h |
| 878 | 2.11.20 | Skinner | 1d? | 2003-04-02 | 2003-04-03 | 877 | 69.88d | 0d |  | Jaroslav Chorny | 8h |
| 879 | 2.11.21 | Sea Captain | 1d? | 2003-04-03 | 2003-04-04 | 878 | 69.88d | 0d |  | Jaroslav Chorny | 8h |
| 880 | 2.11.22 | Sideshow Bob float | 1d? | 2003-04-04 | 2003-04-07 | 879 | 69.88d | 0d |  | Jaroslav Chorny | 8h |
| 881 | 2.11.23 | **Generic Pedestrians** | 4d? | 2003-04-07 | 2003-04-11 | 880 | 69.88d | 0d |  | Jaroslav Chorny | 64h |
| 882 | 2.11.23.1 | Generic ped kid F | 1d? | 2003-04-07 | 2003-04-08 |  | 69.88d | 0d |  | Jaroslav Chorny | 8h |
| 883 | 2.11.23.2 | Generic ped kid M | 1d? | 2003-04-08 | 2003-04-09 | 882 | 69.88d | 0d |  | Jaroslav Chorny | 8h |
| 884 | 2.11.23.3 | Generic ped adult M2 | 1d? | 2003-04-09 | 2003-04-10 | 883 | 69.88d | 0d |  | Jaroslav Chorny | 8h |
| 885 | 2.11.23.4 | Generic ped adult F2 | 1d? | 2003-04-10 | 2003-04-11 | 884 | 69.88d |  |  | Jaroslav Chorny | 8h |
| 886 | 2.11.24 | Zombie character | 1d? | 2003-04-11 | 2003-04-14 | 881 | 69.88d | 0d |  | Jaroslav Chorny | 8h |
| 887 | 2.11.25 | (Need to find out from designers about monkey status) | 1d? | 2003-04-14 | 2003-04-15 | 886 | 69.88d | 0d |  | Jaroslav Chorny | 8h |
| 888 | 2.11.26 | Damage states for all driver vehicles complete | 1d? | 2003-04-15 | 2003-04-16 | 887 | 69.88d | 0d | start no earlier than 2002-10-15 | Kevin Fink | 8h |
| 889 | 2.11.27 | Cartoonify Traffic vehicles | 1d? | 2003-04-16 | 2003-04-17 | 888 | 69.88d | 0d |  | Kevin Fink | 8h |
| 890 | 2.11.28 | Environmental mapping complete on vehicles. | 1d? | 2003-04-17 | 2003-04-18 | 889 | 69.88d | 0d |  | Kevin Fink | 8h |
| 891 | 2.11.29 | Track sprays and SKid marks final | 1d? | 2003-04-18 | 2003-04-21 | 890 | 69.88d | 0d |  | Kevin Fink | 8h |
| 892 | 2.11.30 | More vehicles | 1d? | 2003-04-21 | 2003-04-22 | 891 | 69.88d | 0d |  | Kevin Fink | 8h |

Notes:
- 882: (Slava talk to Dusit about More gens)

| ID | WBS | Task | Duration | Start | Finish | Predecessors | Complete | Remaining | Total slack | Free slack | Constraint | Resources | Work | Actual work |
| --- | --- | --- | --- | --- | --- | --- | --- | --- | --- | --- | --- | --- | --- | --- |
| 893 | 2.11.31 | **Generic Gremlin (Race)** | 7d? | 2003-04-22 | 2003-05-01 | 892 |  |  | 69.88d | 0d |  | Kevin Fink | 112h |  |
| 894 | 2.11.31.1 | (3) Black Limo (Chase and Destroy)* | 1d? | 2003-04-22 | 2003-04-23 |  |  |  | 69.88d | 0d |  | Kevin Fink | 8h |  |
| 895 | 2.11.31.2 | (5) Cola truck and Black Sedans (Chase and evade) (red /white siren ) | 1d? | 2003-04-23 | 2003-04-24 | 894 |  |  | 69.88d | 0d |  | Kevin Fink | 8h |  |
| 896 | 2.11.31.3 | (5) Armored Truck (Chase and destroy) | 1d? | 2003-04-24 | 2003-04-25 | 895 |  |  | 69.88d | 0d |  | Kevin Fink | 8h |  |
| 897 | 2.11.31.4 | (5) Curator vehicle (Race) | 1d? | 2003-04-25 | 2003-04-28 | 896 |  |  | 69.88d | 0d |  | Kevin Fink | 8h |  |
| 898 | 2.11.31.5 | (6) Krusty> '> s Limo (race) | 1d? | 2003-04-28 | 2003-04-29 | 897 |  |  | 69.88d | 0d |  | Kevin Fink | 8h |  |
| 899 | 2.11.31.6 | (7) Black Ferrini (race) | 1d? | 2003-04-29 | 2003-04-30 | 898 |  |  | 69.88d | 0d |  | Kevin Fink | 8h |  |
| 900 | 2.11.31.7 | (7) Generic Zombie Hearse Vehicle ???? ( Evade) (green/orange siren ) | 1d? | 2003-04-30 | 2003-05-01 | 899 |  |  | 69.88d | 0d |  | Kevin Fink | 8h |  |
| 901 | 2.11.32 | more reward vehicles (have yet to be determined with designers) | 1d? | 2003-05-01 | 2003-05-02 | 900, 893 |  |  | 69.88d | 0d |  | Kevin Fink | 8h |  |
| 902 | 2.11.33 | Finalize Navigation map on hud (Needs redesign) | 1d? | 2003-05-02 | 2003-05-05 | 901 |  |  | 69.88d | 0d | start no earlier than 2002-10-15 | Ting Ting Chen | 8h |  |
| 903 | 2.11.34 | Mission object icons for HUD | 1d? | 2003-05-05 | 2003-05-06 | 902 |  |  | 69.88d | 0d |  | Ting Ting Chen | 8h |  |
| 904 | 2.11.35 | All collector cards complete for all levels (This may not be feasible pending new design changes) | 1d? | 2003-05-06 | 2003-05-07 | 903 |  |  | 69.88d | 0d |  | Ting Ting Chen | 8h |  |
| 905 | 2.11.36 | Finalize Card Gallery | 1d? | 2003-05-07 | 2003-05-08 | 904 |  |  | 69.88d | 0d |  | Ting Ting Chen | 8h |  |
| 906 | 2.11.37 | Finalize Pause Menu | 1d? | 2003-05-08 | 2003-05-09 | 905 |  |  | 69.88d | 0d |  | Ting Ting Chen | 8h |  |
| 907 | 2.11.38 | Design menu screens for new designs (Need to clarify with Carey) | 1d? | 2003-05-09 | 2003-05-12 | 906 |  |  | 69.88d |  |  | Ting Ting Chen | 8h |  |
| 908 | 5 | **Milestone 18 - Alpha April 15** | 21d? | 2003-03-17 A | 2003-04-14 |  | 3% | 20.43d? | 89d |  |  |  | 2963.33h | 61.33h |
| 909 | 5.1 | **Effects: (Aryan, Brad, Mike M.)** | 16d? | 2003-03-18 | 2003-04-08 |  |  |  | 93d |  |  |  | 603.12h |  |
| 910 | 5.1.1 | All general in-game effects complete (In-game) | 1d? | 2003-03-18 | 2003-03-18 |  |  |  | 108d |  | start no earlier than 2003-03-18 | Aryan Hanbeck [26.7%]; Brad Dixon [26.7%]; Mike Maraffa [26.7%] | 6.4h |  |
| 911 | 5.1.2 | General in-game effects review | 1d? | 2003-03-18 | 2003-03-19 |  |  |  | 107.88d |  | start no earlier than 2003-03-18 | Aryan Hanbeck [26.7%]; Brad Dixon [26.7%]; Mike Maraffa [26.7%] | 6.4h |  |
| 912 | 5.1.3 | All interactive gag props complete (In-game) | 1d? | 2003-03-18 | 2003-03-19 |  |  |  | 107.88d |  | start no earlier than 2003-03-18 | Aryan Hanbeck [26.7%]; Brad Dixon [26.7%]; Mike Maraffa [26.7%] | 6.4h |  |
| 913 | 5.1.4 | Interactive gag props review | 1d? | 2003-03-19 | 2003-03-20 |  |  |  | 106.88d |  | start no earlier than 2003-03-19 | Aryan Hanbeck [26.7%]; Brad Dixon [26.7%]; Mike Maraffa [26.7%] | 6.4h |  |
| 914 | 5.1.5 | 3 variations of Game-play icon effects to send to FOX (Yayoi/Aryan) | 1d? | 2003-03-20 | 2003-03-21 |  |  |  | 105.88d |  | start no earlier than 2003-03-20 | Aryan Hanbeck [26.7%]; Brad Dixon [26.7%]; Mike Maraffa [26.7%] | 6.4h |  |
| 915 | 5.1.6 | Define Full design for coin collection game play (Designers) | 1d? | 2003-03-20 | 2003-03-21 |  |  |  | 105.88d |  | start no earlier than 2003-03-20 | Aryan Hanbeck [26.7%]; Brad Dixon [26.7%]; Mike Maraffa [26.7%] | 6.4h |  |
| 916 | 5.1.7 | Interactive gag props final for all levels | 5d | 2003-03-24 | 2003-03-28 |  |  |  | 100d |  | finish no earlier than 2003-03-28 | Aryan Hanbeck [27%]; Brad Dixon [27%]; Mike Maraffa [27%] | 32.4h |  |
| 917 | 5.1.8 | All general in-game effects complete following review | 5d | 2003-03-24 | 2003-03-28 |  |  |  | 100d |  | finish no earlier than 2003-03-28 | Aryan Hanbeck [27%]; Brad Dixon [27%]; Mike Maraffa [27%] | 32.4h |  |
| 918 | 5.1.9 | Current Mission collectible icons complete (See April 4th) | 5d | 2003-03-24 | 2003-03-28 |  |  |  | 100d |  | finish no earlier than 2003-03-28 | Aryan Hanbeck [27%]; Brad Dixon [27%]; Mike Maraffa [27%] | 32.4h |  |
| 919 | 5.1.10 | Current Mission Icon screenshots (See April 4th) | 5d | 2003-03-24 | 2003-03-28 |  |  |  | 100d |  | finish no earlier than 2003-03-28 | Aryan Hanbeck [27%]; Brad Dixon [27%]; Mike Maraffa [27%] | 32.4h |  |
| 920 | 5.1.11 | Rotating Signs 3 per level (Complete in all levels) | 5d | 2003-03-31 | 2003-04-04 |  |  |  | 95d |  | finish no earlier than 2003-04-04 | Aryan Hanbeck [27%]; Brad Dixon [27%]; Mike Maraffa [27%] | 32.4h |  |
| 921 | 5.1.12 | Gameplay icons complete (based on FOX feedback) | 5d | 2003-03-31 | 2003-04-04 |  |  |  | 95d |  | finish no earlier than 2003-04-04 | Aryan Hanbeck [27%]; Brad Dixon [27%]; Mike Maraffa [27%] | 32.4h |  |
| 922 | 5.1.13 | Any remaining Mission Collectible icons complete | 5d | 2003-03-31 | 2003-04-04 |  |  |  | 95d |  | finish no earlier than 2003-04-04 | Aryan Hanbeck [27%]; Brad Dixon [27%]; Mike Maraffa [27%] | 32.4h |  |
| 923 | 5.1.14 | Any remaining Mission icon screenshots | 5d | 2003-03-31 | 2003-04-04 |  |  |  | 95d |  | finish no earlier than 2003-04-04 | Aryan Hanbeck [27%]; Brad Dixon [27%]; Mike Maraffa [27%] | 32.4h |  |
| 924 | 5.1.15 | Wasp Art for all functionality complete (Fox feedback may come) | 5d | 2003-03-31 | 2003-04-04 |  |  |  | 95d |  | finish no earlier than 2003-04-04 | Aryan Hanbeck [27%]; Brad Dixon [27%]; Mike Maraffa [27%] | 32.4h |  |
| 925 | 5.1.16 | Coin art for all functionality complete (includes breakables etc..) | 5d | 2003-03-31 | 2003-04-04 |  |  |  | 95d |  | finish no earlier than 2003-04-04 | Aryan Hanbeck [27%]; Brad Dixon [27%]; Mike Maraffa [27%] | 32.4h |  |
| 926 | 5.1.17 | Purchase and reward screen designed (Yayoi) | 5d | 2003-03-31 | 2003-04-04 |  |  |  | 95d |  | finish no earlier than 2003-04-04 | Aryan Hanbeck [27%]; Brad Dixon [27%]; Mike Maraffa [27%] | 32.4h |  |
| 927 | 4.12.1.18 | Video of Gameplay icons | 1d? | 2003-03-21 | 2003-03-21 |  |  |  | 105d |  | finish no earlier than 2003-03-21 | Aryan Hanbeck [80%] | 6.4h |  |
| 928 | 4.12.1.19 | 2 dice icons for gambling | 5d | 2003-03-24 | 2003-03-28 |  |  |  | 100d |  | start no earlier than 2003-03-24 | Aryan Hanbeck [80%] | 32h |  |
| 929 | 4.12.1.20 | Navigation arrow redesign | 5d | 2003-03-24 | 2003-03-28 |  |  |  | 100d |  | start no earlier than 2003-03-24 | Aryan Hanbeck [80%] | 32h |  |
| 930 | 4.12.1.21 | 2 pedestrian model (Yy to determine) | 5d | 2003-03-31 | 2003-04-04 |  |  |  | 95d |  | finish no earlier than 2003-04-04 | Aryan Hanbeck [80%] | 32h |  |
| 931 | 4.12.1.22 | Highlight feature for FE | 5d | 2003-03-24 | 2003-03-28 |  |  |  | 100d |  | start no earlier than 2003-03-24 | Mike Maraffa | 40h |  |
| 932 | 4.12.1.23 | Clothing and Purchase screen | 5d | 2003-03-24 | 2003-03-28 |  |  |  | 100d |  | start no earlier than 2003-03-24 | Mike Maraffa | 40h |  |
| 933 | 4.12.1.18 | Halloween mission flow all art complete (Follow up with designers) | 2d | 2003-04-07 | 2003-04-08 |  |  |  | 93d |  | finish no earlier than 2003-04-08 | Aryan Hanbeck [27%]; Brad Dixon [27%]; Mike Maraffa [27%] | 12.96h |  |
| 934 | 4.12.1.19 | Memory card icons (PS2) and Xbox | 2d | 2003-04-07 | 2003-04-08 |  |  |  | 93d |  | finish no earlier than 2003-04-08 | Aryan Hanbeck [27%]; Brad Dixon [27%]; Mike Maraffa [27%] | 12.96h |  |

| ID | WBS | Task | Duration | Start | Finish | Complete | Remaining | Total slack | Constraint | Resources | Work | Actual work |
| --- | --- | --- | --- | --- | --- | --- | --- | --- | --- | --- | --- | --- |
| 935 | 5.2 | **Animation: (Jeremy, Ron, Trevor, Yousuf)** | 14d? | 2003-03-18 | 2003-04-04 |  |  | 95d |  |  | 204.8h |  |
| 936 | 5.2.1 | Confirm remaining dialogue when to be delivered (Vlad) | 1d? | 2003-03-18 | 2003-03-18 |  |  | 108d | start no earlier than 2003-03-18 | Jeremy Mesana [20%]; Ron Sombilon [20%]; Trevor Lim [20%]; Yousuf Mapara [20%] | 6.4h |  |
| 937 | 5.2.2 | All idles complete | 1d? | 2003-03-18 | 2003-03-19 |  |  | 107.88d | start no earlier than 2003-03-18 | Jeremy Mesana [20%]; Ron Sombilon [20%]; Trevor Lim [20%]; Yousuf Mapara [20%] | 6.4h |  |
| 938 | 5.2.3 | Idles type-up list for FOX (Jeremy) | 1d? | 2003-03-18 | 2003-03-19 |  |  | 107.88d | start no earlier than 2003-03-18 | Jeremy Mesana [20%]; Ron Sombilon [20%]; Trevor Lim [20%]; Yousuf Mapara [20%] | 6.4h |  |
| 939 | 5.2.4 | Idle animation video tape for FOX | 1d? | 2003-03-20 | 2003-03-21 |  |  | 105.88d | start no earlier than 2003-03-20 | Jeremy Mesana [20%]; Ron Sombilon [20%]; Trevor Lim [20%]; Yousuf Mapara [20%] | 6.4h |  |
| 940 | 5.2.5 | Itchy and Scratchy Story Board (Pending Fox approval) | 1d? | 2003-03-20 | 2003-03-21 |  |  | 105.88d | start no earlier than 2003-03-20 | Jeremy Mesana [20%]; Ron Sombilon [20%]; Trevor Lim [20%]; Yousuf Mapara [20%] | 6.4h |  |
| 941 | 5.2.6 | FMVS: Intro, 1A, 3, and 6 complete for FOX review | 5d | 2003-03-24 | 2003-03-28 |  |  | 100d | finish no earlier than 2003-03-28 | Jeremy Mesana [20%]; Ron Sombilon [20%]; Trevor Lim [20%]; Yousuf Mapara [20%] | 32h |  |
| 942 | 5.2.7 | Gag animations complete for Review | 3d | 2003-03-24 | 2003-03-26 |  |  | 102d | start no earlier than 2003-03-24 | Jeremy Mesana [20%]; Ron Sombilon [20%]; Trevor Lim [20%]; Yousuf Mapara [20%] | 19.2h |  |
| 943 | 5.2.8 | Gag animations review | 4d | 2003-03-24 | 2003-03-27 |  |  | 101d | start no earlier than 2003-03-24 | Jeremy Mesana [20%]; Ron Sombilon [20%]; Trevor Lim [20%]; Yousuf Mapara [20%] | 25.6h |  |
| 944 | 5.2.10 | Itchy and Scratch Scene set up | 5d | 2003-03-24 | 2003-03-28 |  |  | 100d | start no earlier than 2003-03-24 | Jeremy Mesana [20%]; Ron Sombilon [20%]; Trevor Lim [20%]; Yousuf Mapara [20%] | 32h |  |
| 945 | 5.2.11 | All in-game animations complete | 5d | 2003-03-31 | 2003-04-04 |  |  | 95d | finish no earlier than 2003-04-04 | Jeremy Mesana [20%]; Ron Sombilon [20%]; Trevor Lim [20%]; Yousuf Mapara [20%] | 32h |  |
| 946 | 5.2.12 | Wasp animation complete (Functionality complete) | 5d | 2003-03-31 | 2003-04-04 |  |  | 95d | finish no earlier than 2003-04-04 | Jeremy Mesana [20%]; Ron Sombilon [20%]; Trevor Lim [20%]; Yousuf Mapara [20%] | 32h |  |
| 947 | 5.3 | **Levels: (Sarah, Vincent, Bob, Ross, Sanela, Dustin, Eric)** | 17d? | 2003-03-17 A | 2003-04-08 |  | 16.94d? | 93d |  |  | 482.72h | 1.6h |
| 948 | 5.3.1 | Phone booth placement design from designers | 1d? | 2003-03-17 A | 2003-03-17 | 17% | 0.83d? | 109d | finish no earlier than 2003-03-17 | Sarah Meagher [13.3%]; Vincent Chin [13.3%]; Robert Peet [13.3%]; Ross Young [13.3%]; Sanela Mickovic [13.3%]; Eric Madill [13.3%] | 6.4h | 1.07h |
| 949 | 5.3.2 | Phone booth placement for 1, 2, 3 in game complete | 1d? | 2003-03-20 A | 2003-03-21 | 9% | 0.91d? | 105.88d | start no earlier than 2003-03-20 | Sarah Meagher [16.3%]; Vincent Chin [16.3%]; Robert Peet [16.3%]; Ross Young [16.3%]; Sanela Mickovic [16.3%] | 6.4h | 0.53h |
| 950 | 4.12.3.3 | Bart interior in 1st pass | 1d? | 2003-03-21 | 2003-03-21 |  |  | 105d | finish no earlier than 2003-03-21 | Eric Madill [80%] | 6.4h |  |
| 951 | 4.12.3.4 | Bart interior complete | 5d | 2003-03-24 | 2003-03-28 |  |  | 100d | start no earlier than 2003-03-24 | Eric Madill [80%] | 32h |  |
| 952 | 4.12.3.5 | All halloween interior and lighting complete | 5d | 2003-03-31 | 2003-04-04 |  |  | 95d | finish no earlier than 2003-04-04 | Eric Madill [80%] | 32h |  |
| 953 | 5.3.3 | **Levels 1 2 3 complete** | 5d | 2003-03-24 | 2003-03-28 |  |  | 100d |  |  | 96h |  |
| 954 | 4.12.3.6.1 | Level 1 | 5d | 2003-03-24 | 2003-03-28 |  |  | 100d | start no earlier than 2003-03-24 | Sanela Mickovic [40%]; Vincent Chin [40%] | 32h |  |
| 955 | 4.12.3.6.2 | Level 2 | 5d | 2003-03-24 | 2003-03-28 |  |  | 100d | start no earlier than 2003-03-24 | Sarah Meagher [40%]; Robert Peet [40%] | 32h |  |
| 956 | 4.12.3.6.3 | Level 3 | 5d | 2003-03-24 | 2003-03-28 |  |  | 100d | start no earlier than 2003-03-24 | Ross Young [80%] | 32h |  |
| 957 | 5.3.4 | Remaining 4 minitrack Designs complete from Designers | 1d? | 2003-03-17 | 2003-03-17 |  |  | 109d | finish no earlier than 2003-03-17 | Sarah Meagher [16%]; Vincent Chin [16%]; Robert Peet [16%]; Ross Young [16%]; Sanela Mickovic [16%] | 6.4h |  |
| 958 | 5.3.5 | 4 minitracks 1st pass game flow complete for testing | 1d? | 2003-03-20 | 2003-03-21 |  |  | 105.88d | start no earlier than 2003-03-20 | Sarah Meagher [16%]; Vincent Chin [16%]; Robert Peet [16%]; Ross Young [16%]; Sanela Mickovic [16%] | 6.4h |  |
| 959 | 5.3.6 | Jump cameras for all levels complete | 1d? | 2003-03-20 | 2003-03-21 |  |  | 105.88d | start no earlier than 2003-03-20 | Sarah Meagher [13.3%]; Vincent Chin [13.3%]; Robert Peet [13.3%]; Ross Young [13.3%]; Sanela Mickovic [13.3%]; Eric Madill [13.3%] | 6.4h |  |
| 960 | 5.3.7 | Interior and interactive gag cameras for all levels complete | 1d? | 2003-03-20 | 2003-03-21 |  |  | 105.88d | start no earlier than 2003-03-20 | Sarah Meagher [13.3%]; Vincent Chin [13.3%]; Robert Peet [13.3%]; Ross Young [13.3%]; Sanela Mickovic [13.3%]; Eric Madill [13.3%] | 6.4h |  |
| 962 | 5.3.9 | Race circuit design from game designers (Joe) finalized | 1d? | 2003-03-20 | 2003-03-21 |  |  | 105.88d | start no earlier than 2003-03-20 | Sarah Meagher [16%]; Vincent Chin [16%]; Robert Peet [16%]; Ross Young [16%]; Sanela Mickovic [16%] | 6.4h |  |
| 963 | 5.3.10 | First 3 minitrack designed locked down by designers | 1d? | 2003-03-20 | 2003-03-21 |  |  | 105.88d | start no earlier than 2003-03-20 | Sarah Meagher [15.6%]; Vincent Chin [15.6%]; Robert Peet [15.6%]; Ross Young [15.6%]; Sanela Mickovic [15.6%] | 6.24h |  |

Notes:
- 938: Jeremy Mesana (Tue 3/25/03): yayoi has done this
- 940: Jeremy Mesana (Tue 3/25/03): this won't be done, we will go directly to animation setups
- 946: ?nothing from April 7 - 11? / check with Yayoi / Trevor Lim (Wed 19/03/03): ==== Published to Microsoft Project server by Wolfgang Hamann on 19/03/03 12:25 PM ===== / ?nothing from April 7 - 11? / check with Yayoi / Jeremy Mesana (Tue 3/25/03): ==== Republished to Microsoft Project server by whamann on 3/24/03 6:30 PM ===== / ?nothing from April 7 - 11? / check with Yayoi / Trevor Lim (Wed 19/03/03): ==== Published to Microsoft Project server by Wolfgang Hamann on 19/03/03 12:25 PM ===== / ?nothing from April 7 - 11? / check with Yayoi
- 947: (Completion definition: Lighting, Collision, custom lighting, Art tweaks, Billboard placement, Phonebooth placements, Backgrounds) / The other world-builders have said they might like another few days to do final polishing & designer requests for the first 3 levels. They believe time-of day change should take less than a week (changing to levels 4,6 at least), so this should not affect our next submission. I will talk to Yayoi about this at our 1pm meeting today, and Ross & Sanela said they'd talk to her as well. / ---------- / Hi, / Here are the tasks & dates that you worked out with Yayoi last week. Let me know if any of these have changed since then. / Please accept via the email

| ID | WBS | Task | Duration | Start | Finish | Complete | Remaining | Total slack | Constraint | Resources | Work | Actual work |
| --- | --- | --- | --- | --- | --- | --- | --- | --- | --- | --- | --- | --- |
| 964 | 5.3.11 | **Levels 4 and 6 complete** | 5d | 2003-03-31 | 2003-04-04 |  |  | 95d |  |  | 64h |  |
| 965 | 4.12.3.13.1 | Level 4 | 5d | 2003-03-31 | 2003-04-04 |  |  | 95d | finish no earlier than 2003-04-04 | Sanela Mickovic [40%]; Vincent Chin [40%] | 32h |  |
| 966 | 4.12.3.13.2 | Level 6 | 5d | 2003-03-31 | 2003-04-04 |  |  | 95d | finish no earlier than 2003-04-04 | Ross Young [80%] | 32h |  |
| 967 | 5.3.12 | First 3 mini tracks 2nd pass complete | 5d | 2003-03-24 | 2003-03-28 |  |  | 100d | finish no earlier than 2003-03-28 | Sarah Meagher [15.6%]; Vincent Chin [15.6%]; Robert Peet [15.6%]; Ross Young [15.6%]; Sanela Mickovic [15.6%] | 31.2h |  |
| 968 | 5.3.13 | Race circuit for levels 1 and 2 complete | 5d | 2003-03-24 | 2003-03-28 |  |  | 100d | finish no earlier than 2003-03-28 | Sarah Meagher [13%]; Vincent Chin [13%]; Robert Peet [13%]; Ross Young [13%]; Sanela Mickovic [13%]; Eric Madill [13%] | 31.2h |  |
| 969 | 5.3.14 | Race circuit for levels 3 and 4 and 5 complete (Ross to assist) | 5d | 2003-03-31 | 2003-04-04 |  |  | 95d | finish no earlier than 2003-04-04 | Sarah Meagher [13%]; Vincent Chin [13%]; Robert Peet [13%]; Ross Young [13%]; Sanela Mickovic [13%]; Eric Madill [13%] | 31.2h |  |
| 970 | 5.3.15 | 4 remaining mini-tracks 2nd pass complete | 5d | 2003-03-31 | 2003-04-04 |  |  | 95d | start no earlier than 2003-03-31 | Sarah Meagher [15.6%]; Vincent Chin [15.6%]; Robert Peet [15.6%]; Ross Young [15.6%]; Sanela Mickovic [15.6%] | 31.2h |  |
| 971 | 4.12.3.16 | **Levels 5 and 7 complete** | 5d | 2003-04-02 | 2003-04-08 |  |  | 93d |  |  | 64h |  |
| 972 | 4.12.3.18.1 | Level 5 | 5d | 2003-04-02 | 2003-04-08 |  |  | 93d | finish no earlier than 2003-04-08 | Sarah Meagher [40%]; Robert Peet [40%] | 32h |  |
| 973 | 4.12.3.18.2 | Level 7 | 5d | 2003-04-02 | 2003-04-08 |  |  | 93d | finish no earlier than 2003-04-08 | Vincent Chin [40%]; Sanela Mickovic [40%] | 32h |  |
| 974 | 4.12.3.17 | Race Circuit for Level 7 complete | 2d | 2003-04-07 | 2003-04-08 |  |  | 93d | finish no earlier than 2003-04-08 | Sarah Meagher [13%]; Vincent Chin [13%]; Robert Peet [13%]; Ross Young [13%]; Sanela Mickovic [13%]; Eric Madill [13%] | 12.48h |  |
| 975 | 5.4 | **Front end, HUD and Presentation: (Ting, Dallas, Mike M)** | 20d | 2003-03-18 A | 2003-04-14 | 7% | 18.64d | 89d |  |  | 1199.09h | 59.73h |
| 976 | 5.4.1 | Scrapbook images for Character, postcard, vehicle complete | 4d | 2003-03-18 A | 2003-03-21 A | 100% |  |  | finish no earlier than 2003-03-21 | Ting Ting Chen [26.7%]; Mike Maraffa [26.7%] | 8.53h | 8.53h |
| 977 | 5.4.2 | Pause menu Layout, Card gallery, Stat screen layout | 4d | 2003-03-18 | 2003-03-21 |  |  | 105d | start no earlier than 2003-03-18 | Ting Ting Chen [40%]; Mike Maraffa [40%] | 25.6h |  |
| 978 | 5.4.3 | 3d Minitrack in FE camera path complete | 4d | 2003-03-18 A | 2003-03-21 A | 100% |  |  | start no earlier than 2003-03-18 | Ting Ting Chen [40%]; Mike Maraffa [40%] | 25.6h | 25.6h |
| 979 | 5.4.4 | 3d Podium for Minitrack race complete presentation | 4d | 2003-03-18 A | 2003-03-21 A | 100% |  |  | start no earlier than 2003-03-18 | Ting Ting Chen [40%]; Mike Maraffa [40%] | 25.6h | 25.6h |
| 980 | 5.4.5 | Bonus mini-game FE screens layout interface | 5d | 2003-03-24 | 2003-03-28 |  |  | 100d | finish no earlier than 2003-03-28 | Ting Ting Chen [40.5%]; Mike Maraffa [40.5%] | 32.4h |  |
| 981 | 5.4.6 | Draw all remaining 2d mission image screens | 5d | 2003-03-26 | 2003-04-01 |  |  | 98d | finish no earlier than 2003-04-01 | Ting Ting Chen [40.5%]; Mike Maraffa [40.5%] | 32.4h |  |
| 982 | 5.4.8 | Hit and Run Logo design to send to FOX | 5d | 2003-03-24 | 2003-03-28 |  |  | 100d | finish no earlier than 2003-03-28 | Ting Ting Chen [40.5%]; Mike Maraffa [40.5%] | 32.4h |  |
| 983 | 5.4.9 | Demo movie Design (Chris) | 5d | 2003-03-24 | 2003-03-28 |  |  | 100d | finish no earlier than 2003-03-28 | Ting Ting Chen [40.5%]; Mike Maraffa [40.5%] | 32.4h |  |
| 984 | 5.4.10 | Credit Movie design (Chris) | 5d | 2003-03-24 | 2003-03-28 |  |  | 100d | finish no earlier than 2003-03-28 | Ting Ting Chen [40.5%]; Mike Maraffa [40.5%] | 32.4h |  |
| 985 | 5.4.11 | Halloween logo intro layout designed (Chris/Jeff P.) | 5d | 2003-03-24 | 2003-03-28 |  |  | 100d | finish no earlier than 2003-03-28 | Ting Ting Chen [40.5%]; Mike Maraffa [40.5%] | 32.4h |  |
| 986 | 4.12.4.11 | Navigation radar with hit and run metre | 5d | 2003-03-24 | 2003-03-28 |  |  | 100d | start no earlier than 2003-03-24 | Ting Ting Chen [80%] | 32h |  |
| 987 | 4.12.4.12 | Circuit Race screen | 5d | 2003-03-24 | 2003-03-28 |  |  | 100d | start no earlier than 2003-03-24 | Ting Ting Chen [80%] | 32h |  |
| 988 | 4.12.4.13 | Debreifing screen background | 5d | 2003-03-24 | 2003-03-28 |  |  | 100d | start no earlier than 2003-03-24 | Ting Ting Chen [80%] | 32h |  |
| 989 | 4.12.4.14 | Wager race Screen | 5d | 2003-03-31 | 2003-04-07 |  |  | 94.88d | start no earlier than 2003-03-31 | Ting Ting Chen [80%] | 32h |  |
| 990 | 4.12.4.15 | Create 5 2d images for Wager, Street Race screens for April 1st | 7d | 2003-03-24 | 2003-04-01 |  |  | 98d | finish no earlier than 2003-04-01 | Dallas Bolton | 56h |  |
| 991 | 4.12.4.16 | Tutorial 2d Image | 3d | 2003-03-24 | 2003-03-27 |  |  | 101.88d | start no earlier than 2003-03-24 | Dallas Bolton | 24h |  |
| 992 | 4.12.4.17 | Level 3 - 2d image 3d background | 3d | 2003-03-24 | 2003-03-27 |  |  | 101.88d | start no earlier than 2003-03-24 | Dallas Bolton | 24h |  |
| 993 | 4.12.4.18 | Level 3 image- 2d image complete | 5d | 2003-03-24 | 2003-03-28 |  |  | 100d | finish no earlier than 2003-03-28 | Dallas Bolton | 40h |  |

Notes:
- 964: (Completion definition: Lighting, Collision, custom lighting, Art tweaks, Billboard placement, Backgrounds) / Sanela Mickovic (Wed 19/03/03): ==== Published to Microsoft Project server by Wolfgang Hamann on 19/03/03 12:26 PM ===== / (Completion definition: Lighting, Collision, custom lighting, Art tweaks, Billboard placement, Backgrounds) / Sarah Meagher (Wed 19/03/03): ==== Published to Microsoft Project server by Wolfgang Hamann on 19/03/03 12:26 PM ===== / (Completion definition: Lighting, Collision, custom lighting, Art tweaks, Billboard placement, Backgrounds)
- 971: (Completion definition: Lighting, Collision, custom lighting, Art tweaks, Billboard placement, Backgrounds) / Sanela Mickovic (Wed 19/03/03): ==== Published to Microsoft Project server by Wolfgang Hamann on 19/03/03 12:26 PM ===== / (Completion definition: Lighting, Collision, custom lighting, Art tweaks, Billboard placement, Backgrounds) / Sarah Meagher (Wed 19/03/03): ==== Published to Microsoft Project server by Wolfgang Hamann on 19/03/03 12:26 PM ===== / (Completion definition: Lighting, Collision, custom lighting, Art tweaks, Billboard placement, Backgrounds) / Vincent Chin (Tue 3/25/03): ==== Published to Microsoft Project server by whamann on 3/25/03 10:23 AM ===== / (Completion definition: Lighting, Collision, custom lighting, Art tweaks, Billboard placement, Backgrounds) / Sanela Mickovic (Wed 19/03/03): ==== Published to Microsoft Project server by Wolfgang Hamann on 19/03/03 12:26 PM ===== / (Completion definition: Lighting, Collision, custom lighting, Art tweaks, Billboard placement, Backgrounds) / Sarah Meagher (Wed 19/03/03): ==== Published to Microsoft Project server by Wolfgang Hamann on 19/03/03 12:26 PM ===== / (Completion definition: Lighting, Collision, custom lighting, Art tweaks, Billboard placement, Backgrounds) / Robert Peet (Tue 3/25/03): ==== Published to Microsoft Project server by whamann on 3/25/03 10:23 AM ===== / (Completion definition: Lighting, Collision, custom lighting, Art tweaks, Billboard placement, Backgrounds) / Sanela Mickovic (Wed 19/03/03): ==== Published to Microsoft Project server by Wolfgang Hamann on 19/03/03 12:26 PM ===== / (Completion definition: Lighting, Collision, custom lighting, Art tweaks, Billboard placement, Backgrounds) / Sarah Meagher (Wed 19/03/03): ==== Published to Microsoft Project server by Wolfgang Hamann on 19/03/03 12:26 PM ===== / (Completion definition: Lighting, Collision, custom lighting, Art tweaks, Billboard placement, Backgrounds) / Eric Madill (Tue 3/25/03): ==== Republished to Microsoft Project server by whamann on 3/24/03 6:30 PM ===== / (Completion definition: Lighting, Collision, custom lighting, Art tweaks, Billboard placement, Backgrounds) / Sanela Mickovic (Wed 19/03/03): ==== Published to Microsoft Project server by Wolfgang Hamann on 19/03/03 12:26 PM ===== / (Completion definition: Lighting, Collision, custom lighting, Art tweaks, Billboard placement, Backgrounds) / Sarah Meagher (Wed 19/03/03): ==== Published to Microsoft Project server by Wolfgang Hamann on 19/03/03 12:26 PM ===== / (Completion definition: Lighting, Collision, custom lighting, Art tweaks, Billboard placement, Backgrounds)

| ID | WBS | Task | Duration | Start | Finish | Total slack | Constraint | Calendar | Resources | Work |
| --- | --- | --- | --- | --- | --- | --- | --- | --- | --- | --- |
| 994 | 4.12.4.19 | **2d Images Mission Drawing All:** | 4d | 2003-03-26 | 2003-04-01 | 98.88d |  |  |  | 192h |
| 995 | 4.12.4.19.1 | Hit & Run | 4d | 2003-03-26 | 2003-04-01 | 98.88d | start no earlier than 2003-03-26 |  | Dallas Bolton | 32h |
| 996 | 4.12.4.19.2 | Newspaper screen | 4d | 2003-03-26 | 2003-04-01 | 98.88d | start no earlier than 2003-03-26 |  | Dallas Bolton | 32h |
| 997 | 4.12.4.19.3 | Halloween Logo | 4d | 2003-03-26 | 2003-04-01 | 98.88d | start no earlier than 2003-03-26 |  | Dallas Bolton | 32h |
| 998 | 4.12.4.19.4 | Krusty - Stamp of Approval | 4d | 2003-03-26 | 2003-04-01 | 98.88d | start no earlier than 2003-03-26 |  | Dallas Bolton | 32h |
| 999 | 4.12.4.19.5 | Tutorial 2d Image screen | 4d | 2003-03-26 | 2003-04-01 | 98.88d | start no earlier than 2003-03-26 |  | Dallas Bolton | 32h |
| 1000 | 4.12.4.19.6 | Five Images screen of Louie, Milhouse, Ralph, Patty Selma, Nelson | 4d | 2003-03-26 | 2003-04-01 | 98.88d | start no earlier than 2003-03-26 |  | Dallas Bolton | 32h |
| 1001 | 4.12.4.20 | Explosion Bitmap screen | 4d | 2003-03-31 | 2003-04-03 | 96d | start no earlier than 2003-03-31 |  | Dallas Bolton | 32h |
| 1003 | 4.12.4.12 | Work on all Mission Collectible icons for HUD | 2d | 2003-03-31 | 2003-04-01 | 98d | finish no earlier than 2003-04-01 |  | Ting Ting Chen [40.5%]; Mike Maraffa [40.5%] | 12.96h |
| 1004 | 4.12.4.13 | Radar icon design complete (Designers) | 2d | 2003-03-31 | 2003-04-01 | 98d | finish no earlier than 2003-04-01 |  | Ting Ting Chen [40.5%]; Mike Maraffa [40.5%] | 12.96h |
| 1005 | 4.12.4.14 | Radar icons complete | 5d | 2003-03-31 | 2003-04-04 | 95d | finish no earlier than 2003-04-04 |  | Ting Ting Chen [40.5%]; Mike Maraffa [40.5%] | 32.4h |
| 1006 | 4.12.4.15 | Current Mission Collectible icons for HUD complete (See April 18th) | 5d | 2003-04-07 | 2003-04-11 | 90d | finish no earlier than 2003-04-11 |  | Ting Ting Chen [40.5%]; Mike Maraffa [40.5%] | 32.4h |
| 1007 | 4.12.4.16 | Continuation of 2d mission images screens in colour | 5d | 2003-04-07 | 2003-04-11 | 90d | finish no earlier than 2003-04-11 |  | Ting Ting Chen [40.5%]; Mike Maraffa [40.5%] | 32.4h |
| 1008 | 4.12.4.17 | Finalize Design of Damage and Proximity meter (Designers) | 5d | 2003-04-07 | 2003-04-11 | 90d | finish no earlier than 2003-04-11 |  | Ting Ting Chen [40.5%]; Mike Maraffa [40.5%] | 32.4h |
| 1009 | 4.12.4.18 | 3d Background for Purchase and Reward screen & other 3d props | 5d | 2003-04-07 | 2003-04-11 | 90d | finish no earlier than 2003-04-11 |  | Ting Ting Chen [40.5%]; Mike Maraffa [40.5%] | 32.4h |
| 1010 | 4.12.4.28 | 2d mission image to Fox for approval | 4d | 2003-03-31 | 2003-04-04 | 95.88d | start no earlier than 2003-03-31 |  | Dallas Bolton | 32h |
| 1011 | 4.12.4.29 | 5 image drawings (after drawings of 2 mission image completed) | 5d | 2003-03-31 | 2003-04-04 | 95d | start no earlier than 2003-03-31 |  | Dallas Bolton | 40h |
| 1012 | 4.12.4.30 | Colour of level 4 & 5 & 3d background (3d background to be done by Mike M. ) | 5d | 2003-04-07 | 2003-04-11 | 90d | finish no earlier than 2003-04-11 |  | Dallas Bolton | 40h |
| 1013 | 4.12.4.31 | Newspaper Level 1 screen image | 5d | 2003-04-07 | 2003-04-11 | 90d | finish no earlier than 2003-04-11 |  | Dallas Bolton | 40h |
| 1014 | 4.12.4.32 | 2d Image screen 1 - 7 coloured complete | 4d | 2003-04-09 | 2003-04-14 | 89d | finish no earlier than 2003-04-14 |  | Dallas Bolton | 32h |
| 1015 | 4.12.4.33 | 3d background screenshots | 4d | 2003-04-07 | 2003-04-11 | 90.88d | finish no earlier than 2003-04-11 |  | Mike Maraffa | 32h |
| 1016 | 4.12.4.19 | Font Redesign for FE | 3d | 2003-04-12 | 2003-04-14 | 123.12d | finish no earlier than 2003-04-14 | Milestone Calendar | Ting Ting Chen [40.5%]; Mike Maraffa [40.5%] | 6.48h |
| 1017 | 4.12.4.20 | Purchase and reward screen complete | 3d | 2003-04-12 | 2003-04-14 | 123.12d | finish no earlier than 2003-04-14 | Milestone Calendar | Ting Ting Chen [40.5%]; Mike Maraffa [40.5%] | 6.48h |
| 1018 | 4.12.4.21 | Mission Briefing screen for Levels 1, 2, 3, 4, 5, 6 Complete | 3d | 2003-04-12 | 2003-04-14 | 123.12d | finish no earlier than 2003-04-14 | Milestone Calendar | Ting Ting Chen [40.5%]; Mike Maraffa [40.5%] | 6.48h |

Notes:
- 1003: due date? / Ting Ting Chen (Tue 3/25/03): ==== Republished to Microsoft Project server by whamann on 3/24/03 6:30 PM ===== / due date? / Ting Ting Chen (Tue 3/25/03): ==== Published to Microsoft Project server by whamann on 3/25/03 10:23 AM ===== / due date?
- 1010: I will accept this MISSION! But it will be done after the 2D Mission Screens are complete!

| ID | WBS | Task | Duration | Start | Finish | Total slack | Constraint | Resources | Work |
| --- | --- | --- | --- | --- | --- | --- | --- | --- | --- |
| 1019 | 5.5 | **Character Modeling: (Slava)** | 14d | 2003-03-18 | 2003-04-04 | 95d |  |  | 473.6h |
| 1020 | 5.5.1 | Reference material from Chris | 4d | 2003-03-18 | 2003-03-21 | 105d | start no earlier than 2003-03-18 | Jaroslav Chorny [80%] | 25.6h |
| 1021 | 5.5.2 | Itchy and scratchy model | 5d | 2003-03-24 | 2003-03-28 | 100d | finish no earlier than 2003-03-28 | Jaroslav Chorny [80%] | 32h |
| 1022 | 5.5.3 | Scratchy muscular model | 5d | 2003-03-24 | 2003-03-28 | 100d | finish no earlier than 2003-03-28 | Jaroslav Chorny [80%] | 32h |
| 1023 | 4.12.5.4 | fix halloween models - fox feedback | 5d | 2003-03-24 | 2003-03-28 | 100d | start no earlier than 2003-03-24 | Jaroslav Chorny [80%] | 32h |
| 1024 | 4.12.5.5 | Create 2 generic pedestrian - fox Feedback. | 5d | 2003-03-24 | 2003-03-28 | 100d | start no earlier than 2003-03-24 | Jaroslav Chorny [80%] | 32h |
| 1026 | 4.12.5.6 | Optimization of all vehicles | 5d | 2003-03-24 | 2003-03-28 | 100d | start no earlier than 2003-03-24 | Kevin Fink [80%] | 32h |
| 1027 | 4.12.5.7 | Scale (Testers have list) vehicles | 5d | 2003-03-24 | 2003-03-28 | 100d | start no earlier than 2003-03-24 | Kevin Fink [80%] | 32h |
| 1028 | 4.12.5.8 | Review of Vehicles | 5d | 2003-03-24 | 2003-03-28 | 100d | start no earlier than 2003-03-24 | Kevin Fink [80%] | 32h |
| 1029 | 4.12.5.9 | Fix NTSC on Vehicles | 5d | 2003-03-24 | 2003-03-28 | 100d | start no earlier than 2003-03-24 | Kevin Fink [80%] | 32h |
| 1030 | 4.12.5.10 | Fix environmental mapping | 5d | 2003-03-24 | 2003-03-28 | 100d | start no earlier than 2003-03-24 | Kevin Fink [80%] | 32h |
| 1031 | 4.12.5.11 | Add variation of higher poly characters | 5d | 2003-03-24 | 2003-03-28 | 100d | start no earlier than 2003-03-24 | Kevin Fink [80%] | 32h |
| 1032 | 4.12.5.12 | FMV MOdeling - YY to get list | 5d | 2003-03-31 | 2003-04-04 | 95d | finish no earlier than 2003-04-04 | Kevin Fink [80%] | 32h |
| 1033 | 4.12.5.13 | 4 variations of ALien FMV models | 5d | 2003-03-31 | 2003-04-04 | 95d | finish no earlier than 2003-04-04 | Kevin Fink [80%] | 32h |
| 1034 | 5.2.9 | Itchy and Scratchy Set models (Heart, World, Environment) | 5d | 2003-03-31 | 2003-04-04 | 95d | start no earlier than 2003-03-31 | Kevin Fink [80%] | 32h |
| 1035 | 5 | **Milestone 19 - Beta May 30** | 12.88d? | 2003-04-14 | 2003-04-30 | 77d |  |  | 1553.56h |
| 1036 | 5.1 | Effects: (Aryan, Brad, Mike M.) | 5d? | 2003-04-16 | 2003-04-23 | 82.88d |  |  | 420.7h |
| 1056 | 5.2 | **Animation: (Jeremy, Ron, Trevor, Yousuf)** | 12.88d? | 2003-04-14 | 2003-04-30 | 77d |  |  | 307.2h |
| 1057 | 5.2.1 | FMVs: 2 and 4 complete for FOX review | 4d | 2003-04-14 | 2003-04-18 | 85.88d | start no earlier than 2003-04-14 | Jeremy Mesana [20%]; Ron Sombilon [20%]; Trevor Lim [20%]; Yousuf Mapara [20%] | 25.6h |
| 1058 | 5.2.2 | FMVs: 5 and 7 Complete for FOX Review | 4d | 2003-04-21 | 2003-04-25 | 80.88d | start no earlier than 2003-04-21 | Jeremy Mesana [20%]; Ron Sombilon [20%]; Trevor Lim [20%]; Yousuf Mapara [20%] | 25.6h |
| 1059 | 5.2.3 | FMVs: Itchy and Scratchy complete | 4d | 2003-04-21 | 2003-04-25 | 80.88d | start no earlier than 2003-04-21 | Jeremy Mesana [20%]; Ron Sombilon [20%]; Trevor Lim [20%]; Yousuf Mapara [20%] | 25.6h |
| 1060 | 5.2.4 | All FMVs on videotape for Groening review | 3d | 2003-04-28 | 2003-04-30 | 77d | finish no earlier than 2003-04-30 | Jeremy Mesana [20%]; Ron Sombilon [20%]; Trevor Lim [20%]; Yousuf Mapara [20%] | 19.2h |
| 1069 | 5.3 | Levels: (Sarah, Vincent, Bob, Ross, Sanela, Dustin, Eric) | 5d? | 2003-04-16 | 2003-04-23 | 82.88d |  | Eric Madill [80%] | 276.8h |
| 1087 | 5.4 | **Front end, HUD and Presentation: (Ting, Dallas, Mike M)** | 10d? | 2003-04-16 | 2003-04-30 | 77.88d |  |  | 427.26h |
| 1088 | 5.4.1 | Memory Card warning screen re-design complete | 2d | 2003-04-16 | 2003-04-18 | 85.88d | start no earlier than 2003-04-16 | Ting Ting Chen [26.7%]; Mike Maraffa [26.7%]; Dallas Bolton [26.7%] | 12.8h |
| 1089 | 5.4.2 | Continuation of 2d mission images screens in colour | 2d | 2003-04-16 | 2003-04-18 | 85.88d | start no earlier than 2003-04-16 | Ting Ting Chen [26.7%]; Mike Maraffa [26.7%]; Dallas Bolton [26.7%] | 12.8h |
| 1102 | 4.13.4.15 | Hit & Run Logo | 2d | 2003-04-16 | 2003-04-18 | 85.88d | start no earlier than 2003-04-16 | Dallas Bolton [81%] | 12.96h |
| 1103 | 4.13.4.16 | Halloween Logo | 5d | 2003-04-16 | 2003-04-23 | 82.88d | start no earlier than 2003-04-16 | Dallas Bolton [81%] | 32.4h |
| 1104 | 4.13.4.17 | Krusty Stamp of Approval | 5d | 2003-04-23 | 2003-04-30 | 77.88d | start no earlier than 2003-04-23 | Dallas Bolton [81%] | 32.4h |
| 1109 | 5.5 | Character Modeling: (Slava) | 5d | 2003-04-16 | 2003-04-23 | 82.88d |  |  | 121.6h |

Notes:
- 1030: (Dependency on P3d) / Kevin Fink (Tue 3/25/03): ==== Republished to Microsoft Project server by whamann on 3/24/03 6:30 PM ===== / (Dependency on P3d)
- 1069: (Completion definition: Lighting, Collision, custom lighting, Art tweaks, Billboard placement, Phonebooth placements, Backgrounds)

| ID | WBS | Task | Type | Duration | Start | Finish | Predecessors | Complete | Remaining | Total slack | Constraint | Resources | Work | Actual work |
| --- | --- | --- | --- | --- | --- | --- | --- | --- | --- | --- | --- | --- | --- | --- |
| 1114 | 4.13.6 | **(GLOBAL Geoff and Shawn)** |  | 8d | 2003-04-21 | 2003-04-30 |  |  |  | 77d |  |  |  |  |
| 1115 | 4.13.6.1 | Demo movie complete |  | 8d | 2003-04-21 | 2003-04-30 |  |  |  | 77d | finish no earlier than 2003-04-30 |  |  |  |
| 1116 | 4.13.6.2 | Title Movie complete (Pending FOX approval) |  | 8d | 2003-04-21 | 2003-04-30 |  |  |  | 77d | finish no earlier than 2003-04-30 |  |  |  |
| 1117 | 4.13.6.3 | Radical logo movie complete |  | 8d | 2003-04-21 | 2003-04-30 |  |  |  | 77d | finish no earlier than 2003-04-30 |  |  |  |
| 1118 | 4.13.6.4 | Credit movie complete |  | 8d | 2003-04-21 | 2003-04-30 |  |  |  | 77d | finish no earlier than 2003-04-30 |  |  |  |
| 1119 | 20 | **CODING TASKS** |  | 304d? | 2002-04-16 A | 2003-06-12 |  | 15% | 257.73d? | 46.88d |  |  | 18344.2h | 3201.21h |
| 1120 | 21 | **Milestone 7 (May 15th)** |  | 66d | 2002-04-16 A | 2002-07-18 |  | 55% | 29.51d | 284.88d |  |  | 3503.5h | 2201.74h |
| 1121 | 21.1 | Dynamic Loading Design |  | 22d | 2002-04-16 | 2002-05-16 |  |  |  | 328.88d | start no earlier than 2002-04-16 | Joel DeYoung [50%] | 88h |  |
| 1122 | 21.2 | **First Driveable** |  | 22d | 2002-04-16 A | 2002-05-16 A |  | 100% |  |  |  | Greg Mayer | 352h | 352h |
| 1123 | 21.2.1 | Driving Engine (1st Pass) |  | 22d | 2002-04-16 A | 2002-05-16 A |  | 100% |  |  | start no earlier than 2002-04-16 | Greg Mayer | 176h | 176h |
| 1124 | 21.3 | **Loading Manager (1st Pass)** |  | 4d | 2002-04-16 A | 2002-04-22 A |  | 100% |  |  |  | Darwin Chau [50%] | 48h | 48h |
| 1125 | 21.3.1 | Implementation |  | 3d | 2002-04-16 A | 2002-04-19 A |  | 100% |  |  |  | Darwin Chau | 24h | 24h |
| 1126 | 21.3.2 | Testing |  | 1d | 2002-04-19 A | 2002-04-22 A | 1125 | 100% |  |  |  | Darwin Chau | 8h | 8h |
| 1127 | 21.4 | Memory Monitor Integrated |  | 12d | 2002-04-22 A | 2002-05-08 A | 1126 | 100% |  |  |  | Darwin Chau | 96h | 96h |
| 1128 | 21.5 | Proview + Evaluation |  | 1d | 2002-04-16 A | 2002-04-17 A |  | 100% |  |  |  | Darren Esau | 8h | 8h |
| 1129 | 21.6 | Getting PS2 CodeWarrior build going |  | 2d | 2002-04-17 A | 2002-04-19 A | 1128 | 100% |  |  |  | Darren Esau | 16h | 16h |
| 1130 | 21.7 | Write command-line script parser for World Builder |  | 4d | 2002-04-19 A | 2002-04-25 A | 1129 | 100% |  |  |  | Darren Esau | 32h | 32h |
| 1131 | 21.8 | Design a naming convention/directory structure for the sound files |  | 1.88d | 2002-04-25 A | 2002-04-26 A | 1130 | 100% |  |  |  | Darren Esau | 15h | 15h |
| 1132 | 21.9 | Take the makefile process from the prototype and incorporate it into SRR2, with .wav->.rsd conversion and type info generation | milestone | 0d | 2002-04-29 A | 2002-04-29 A | 1131 | 100% |  |  |  | Darren Esau |  |  |
| 1133 | 21.10 | Add first cut at cement file generation to pipeline | milestone | 0d | 2002-05-02 A | 2002-05-02 A | 1132 | 100% |  |  |  | Darren Esau |  |  |
| 1134 | 21.11 | **Controller System (1st Pass)** |  | 2.5d | 2002-04-16 A | 2002-04-18 A |  | 100% |  |  |  | Travis Brown-John [50%] | 30h | 30h |
| 1135 | 21.11.1 | Integrate controller system into new Game Architecture. |  | 0.5d | 2002-04-16 A | 2002-04-16 A |  | 100% |  |  |  | Travis Brown-John | 4h | 4h |
| 1136 | 21.11.2 | Clean up controller enumeration code. |  | 1d | 2002-04-16 A | 2002-04-17 A | 1135 | 100% |  |  |  | Travis Brown-John | 8h | 8h |
| 1137 | 21.11.3 | Make use of memory pools ( if available) for controller objects. |  | 1d | 2002-04-17 A | 2002-04-18 A | 1136 | 100% |  |  |  | Travis Brown-John | 8h | 8h |

Notes:
- 1134: working game specific controller interface using FTT controller. Full Controller functionality can be added by clients (Camera Control, Vehicle Control, etc).

| ID | WBS | Task | Type | Duration | Start | Finish | Predecessors | Complete | Remaining | Total slack | Constraint | Resources | Work | Actual work |
| --- | --- | --- | --- | --- | --- | --- | --- | --- | --- | --- | --- | --- | --- | --- |
| 1138 | 21.12 | **Integrate Choreo System** |  | 2.5d | 2002-04-18 A | 2002-04-23 A | 1137 | 100% |  |  |  | Travis Brown-John [50%] | 16.5h | 16.5h |
| 1139 | 21.12.1 | Add choreo.dsp to Xbox |  | 0.5d | 2002-04-18 A | 2002-04-19 A |  | 100% |  |  |  | Travis Brown-John | 4h | 4h |
| 1140 | 21.12.2 | Add choreo library to PS2 build |  | 0.88d | 2002-04-19 A | 2002-04-19 A | 1139 | 100% |  |  |  | Travis Brown-John | 7h | 7h |
| 1141 | 21.12.3 | Add choreo library to GameCube build | milestone | 0d | 2002-04-23 A | 2002-04-23 A | 1140 | 100% |  |  |  | Travis Brown-John |  |  |
| 1142 | 21.13 | **Pipelines Implemented (1st Pass)** |  | 8d | 2002-04-16 A | 2002-04-26 A |  | 100% |  |  |  | Cary Brisebois | 128h | 128h |
| 1143 | 21.13.1 | Art Database Design | milestone | 0d | 2002-04-16 A | 2002-04-16 A |  | 100% |  |  |  | Cary Brisebois |  |  |
| 1144 | 21.13.2 | Implement quick-build |  | 2d | 2002-04-16 A | 2002-04-18 A |  | 100% |  |  |  | Cary Brisebois | 16h | 16h |
| 1145 | 21.13.3 | Implement art library support (instancing) |  | 2d | 2002-04-18 A | 2002-04-22 A | 1144 | 100% |  |  |  | Cary Brisebois | 16h | 16h |
| 1146 | 21.13.4 | Implement (fix) art rules system |  | 2d | 2002-04-22 A | 2002-04-24 A | 1145 | 100% |  |  |  | Cary Brisebois | 16h | 16h |
| 1147 | 21.13.5 | Implement art database interface |  | 2d | 2002-04-24 A | 2002-04-26 A | 1146 | 100% |  |  |  | Cary Brisebois | 16h | 16h |
| 1148 | 21.14 | **Camera System (1st Pass)** |  | 15d | 2002-04-26 A | 2002-05-17 | 1147 | 73% | 4d | 327.88d |  | Cary Brisebois | 240h | 176h |
| 1149 | 21.14.1 | Camera Design | milestone | 0d | 2002-04-26 A | 2002-04-26 A |  | 100% |  |  |  | Cary Brisebois |  |  |
| 1150 | 21.14.2 | Implement Supercam Central |  | 2d | 2002-04-26 A | 2002-04-30 A |  | 100% |  |  |  | Cary Brisebois | 16h | 16h |
| 1151 | 21.14.3 | Implement Main Camera mode (In car) |  | 3d | 2002-04-30 A | 2002-05-03 A | 1150 | 100% |  |  |  | Cary Brisebois | 24h | 24h |
| 1152 | 21.14.4 | Implement Main Camera mode (on foot) |  | 3d | 2002-05-03 A | 2002-05-08 A | 1151 | 100% |  |  |  | Cary Brisebois | 24h | 24h |
| 1153 | 21.14.5 | Implement Head-Head Camera mode |  | 3d | 2002-05-08 | 2002-05-13 | 1152 |  |  | 331.88d |  | Cary Brisebois | 24h |  |
| 1154 | 21.14.6 | Implement Bumper-cam |  | 1d | 2002-05-13 A | 2002-05-14 A | 1153 | 100% |  |  |  | Cary Brisebois | 8h | 8h |
| 1155 | 21.14.7 | Implement Cut-camera system |  | 2d | 2002-05-14 A | 2002-05-16 A | 1154 | 100% |  |  |  | Cary Brisebois | 16h | 16h |
| 1156 | 21.14.8 | Implement "Race-Cam" |  | 1d | 2002-05-16 | 2002-05-17 | 1155 |  |  | 327.88d |  | Cary Brisebois | 8h |  |
| 1157 | 21.15 | **Rendering Engine (1st Pass)** |  | 26d | 2002-04-18 A | 2002-05-27 |  | 96% | 1.02d | 322.88d |  | Devin Murname | 608h | 583.84h |
| 1158 | 21.15.1 | **RenderManager** |  | 6.75d | 2002-04-18 A | 2002-04-26 A |  | 100% |  |  |  | Devin Murname | 92h | 92h |
| 1159 | 21.15.1.1 | Render Docs |  | 1d | 2002-04-18 A | 2002-04-19 A |  | 100% |  |  | start no earlier than 2002-04-18 |  |  |  |
| 1160 | 21.15.1.2 | Render Flow |  | 0.5d | 2002-04-19 A | 2002-04-19 A | 1159 | 100% |  |  |  |  |  |  |
| 1161 | 21.15.1.3 | Pure3D Views |  | 0.25d | 2002-04-22 A | 2002-04-22 A | 1160 | 100% |  |  | start no earlier than 2002-04-22 | Devin Murname | 2h | 2h |
| 1162 | 21.15.1.4 | Pure3D Context |  | 0.25d | 2002-04-22 A | 2002-04-22 A | 1161 | 100% |  |  |  | Devin Murname | 2h | 2h |
| 1163 | 21.15.1.5 | Pure3D Platform |  | 0.25d | 2002-04-22 A | 2002-04-22 A | 1162 | 100% |  |  |  | Devin Murname | 2h | 2h |
| 1164 | 21.15.1.6 | Renderables |  | 1d | 2002-04-22 A | 2002-04-23 A | 1163 | 100% |  |  |  | Devin Murname | 8h | 8h |
| 1165 | 21.15.1.7 | Layer System |  | 0.25d | 2002-04-23 A | 2002-04-24 A | 1164 | 100% |  |  |  | Devin Murname | 2h | 2h |
| 1166 | 21.15.1.8 | Add/Remove View |  | 0.25d | 2002-04-24 A | 2002-04-24 A | 1165 | 100% |  |  |  | Devin Murname | 2h | 2h |
| 1167 | 21.15.1.9 | Camera System |  | 0.5d | 2002-04-24 A | 2002-04-24 A | 1166 | 100% |  |  |  | Devin Murname | 4h | 4h |
| 1168 | 21.15.1.10 | Debugging |  | 2d | 2002-04-24 A | 2002-04-26 A | 1167 | 100% |  |  |  | Devin Murname | 16h | 16h |

Notes:
- 1138: choreo library integrated and building on all platforms (Xbox, Ps2, GameCube)
- 1144: This is the system where the artists can iterate art through the pipline with only the minimum of processing. Also, there will need to be a facility for creating secondary/tertiary scenegraphs so the main ones don't need to be rebuilt. / Depend: Devin supporting multiple Scenegraphs
- 1145: The artists will create a set of objects that reside in a central "library". The pipeline will take these library objects and replace selected objects with the library version. This will allow fast iteration of props and such. / Depend: Unclear how we will do instancing.
- 1146: Bryan Ewert is fixing the Art rules system. This task will apply the rules to given art files to test for art errors. Also includes the export-time rules checking. / Depend: Bryan Ewert fixing p3drule
- 1147: The art database will likely run the pipeline, however, it may be necessary to allow the pipeline to query statistics about art through the rules system. / Depend: Chuck and I completing the Design and some stubs
- 1150: Almost complete. I have already written most of the Supercam central code. All that remains is writing the camera loading code and how the Supercam central is updated. / Depend: Greg, world physics manager
- 1151: The camera system from SRR is sufficient. There needs to be changes for the new physics system, and some improvements to the designer interface for tweaking.
- 1152: This is a whole new camera system. IT will likely use most of the code from SRR 1, but it will need some customization.
- 1153: This camera system is also completely new. The main changes it needs is the ability to look at multiple targets.
- 1154: Same as last year.
- 1155: Same system as last year, but needs better logic for shutting down the camera-cut and possibly looking at multiple targets.
- 1156: This is the camera system that I implemented a couple of days afer final for SRR. I would like to put it into this game also.

| ID | WBS | Task | Duration | Start | Finish | Predecessors | Complete | Remaining | Total slack | Free slack | Constraint | Resources | Work | Actual work |
| --- | --- | --- | --- | --- | --- | --- | --- | --- | --- | --- | --- | --- | --- | --- |
| 1169 | 21.15.2 | **SceneGraph** | 7.5d | 2002-04-26 A | 2002-05-08 A | 1168 | 100% |  |  |  |  | Devin Murname | 120h | 120h |
| 1170 | 21.15.2.1 | SceneGraph (static geo) | 1d | 2002-04-26 A | 2002-04-29 A |  | 100% |  |  |  | start no earlier than 2002-04-26 | Devin Murname | 8h | 8h |
| 1171 | 21.15.2.2 | SceneGraph (dyn geo) | 1.5d | 2002-04-29 A | 2002-05-01 A | 1170 | 100% |  |  |  |  | Devin Murname | 12h | 12h |
| 1172 | 21.15.2.3 | Add/Remove Objects | 1d | 2002-05-01 A | 2002-05-02 A | 1171 | 100% |  |  |  |  | Devin Murname | 8h | 8h |
| 1173 | 21.15.2.4 | Static World Loader | 1.5d | 2002-05-02 A | 2002-05-03 A | 1172 | 100% |  |  |  |  | Devin Murname | 12h | 12h |
| 1174 | 21.15.2.5 | Debugging | 2.5d | 2002-05-03 A | 2002-05-08 A | 1173 | 100% |  |  |  |  | Devin Murname | 20h | 20h |
| 1175 | 21.15.3 | **World Geometry** | 4.25d | 2002-05-08 A | 2002-05-14 | 1174 | 76% | 1d | 330.38d |  |  | Devin Murname | 68h | 52h |
| 1176 | 21.15.3.1 | File Handlers | 0.5d | 2002-05-08 A | 2002-05-08 A |  | 100% |  |  |  |  | Devin Murname | 4h | 4h |
| 1177 | 21.15.3.2 | Simpsons Geo Loader | 0.5d | 2002-05-08 A | 2002-05-09 A | 1176 | 100% |  |  |  |  | Devin Murname | 4h | 4h |
| 1178 | 21.15.3.3 | Intf w/ LoadManager | 0.25d | 2002-05-09 A | 2002-05-09 A | 1177 | 100% |  |  |  |  | Devin Murname | 2h | 2h |
| 1179 | 21.15.3.4 | Pipeline Tools | 1d | 2002-05-09 | 2002-05-10 | 1178 |  |  | 332.38d |  |  | Devin Murname | 8h |  |
| 1180 | 21.15.3.5 | Debugging | 2d | 2002-05-10 A | 2002-05-14 A | 1179 | 100% |  |  |  |  | Devin Murname | 16h | 16h |
| 1181 | 21.15.4 | **Vehicles** | 7.5d | 2002-05-14 A | 2002-05-27 A | 1180 | 100% |  |  |  |  | Devin Murname | 120h | 120h |
| 1182 | 21.15.4.1 | Connect to Physics | 3d | 2002-05-14 A | 2002-05-17 A |  | 100% |  |  |  |  | Devin Murname | 24h | 24h |
| 1183 | 21.15.4.2 | Loading | 1.25d | 2002-05-17 A | 2002-05-21 A | 1182 | 100% |  |  |  |  | Devin Murname | 10h | 10h |
| 1184 | 21.15.4.3 | Render | 1d | 2002-05-21 A | 2002-05-22 A | 1183 | 100% |  |  |  |  | Devin Murname | 8h | 8h |
| 1185 | 21.15.4.4 | Debugging | 2.25d | 2002-05-22 A | 2002-05-27 A | 1184 | 100% |  |  |  |  | Devin Murname | 18h | 18h |
| 1186 | 21.16 | **Presentation Manager (1st Pass)** | 40.5d | 2002-04-16 A | 2002-06-12 |  | 46% | 22.05d | 310.38d |  |  | Darryl Long [50%] | 486h | 221.4h |
| 1187 | 21.16.1 | **Movie Player** | 12d | 2002-04-16 A | 2002-05-02 |  | 77% | 2.8d | 333.88d |  |  | Darryl Long [50%] | 96h | 73.6h |
| 1188 | 21.16.1.1 | MoviePlayer class | 1d | 2002-04-16 A | 2002-04-17 A |  | 100% |  |  |  |  | Darryl Long [50%] | 4h | 4h |
| 1189 | 21.16.1.2 | MoviePlayer code | 2d | 2002-04-17 A | 2002-04-19 A | 1188 | 100% |  |  |  |  | Darryl Long [50%] | 8h | 8h |
| 1190 | 21.16.1.3 | PlatformPlayer code | 2d | 2002-04-19 A | 2002-04-23 A | 1189 | 100% |  |  |  |  | Darryl Long [50%] | 8h | 8h |
| 1191 | 21.16.1.4 | Debugging | 7d | 2002-04-23 A | 2002-05-02 | 1190 | 60% | 2.8d | 333.88d | 0d |  | Darryl Long [50%] | 28h | 16.8h |
| 1192 | 21.16.2 | **NIS Player** | 14d | 2002-05-02 A | 2002-05-23 | 1191 | 64% | 5d | 324.88d |  |  | Darryl Long [50%] | 112h | 72h |
| 1193 | 21.16.2.1 | NISPlayer class | 1d | 2002-05-02 A | 2002-05-03 A |  | 100% |  |  |  |  | Darryl Long [50%] | 4h | 4h |
| 1194 | 21.16.2.2 | NIS queuing | 2d | 2002-05-03 A | 2002-05-07 A | 1193 | 100% |  |  |  |  | Darryl Long [50%] | 8h | 8h |
| 1195 | 21.16.2.3 | NIS loading | 2d | 2002-05-07 A | 2002-05-09 A | 1194 | 100% |  |  |  |  | Darryl Long [50%] | 8h | 8h |
| 1196 | 21.16.2.4 | Animation Controller | 2d | 2002-05-09 A | 2002-05-13 A | 1195 | 100% |  |  |  |  | Darryl Long [50%] | 8h | 8h |
| 1197 | 21.16.2.5 | Sound Streams | 1d | 2002-05-13 | 2002-05-14 | 1196 |  |  | 330.88d |  |  | Darryl Long [50%] | 4h |  |
| 1198 | 21.16.2.6 | Camera Animations | 2d | 2002-05-14 A | 2002-05-16 A | 1197 | 100% |  |  |  |  | Darryl Long [50%] | 8h | 8h |
| 1199 | 21.16.2.7 | Debugging | 4d | 2002-05-16 | 2002-05-23 | 1198 |  |  | 310.62d | 0d |  | Darryl Long [50%] | 16h |  |

| ID | WBS | Task | Duration | Start | Finish | Predecessors | Complete | Remaining | Total slack | Free slack | Resources | Work | Actual work |
| --- | --- | --- | --- | --- | --- | --- | --- | --- | --- | --- | --- | --- | --- |
| 1200 | 21.16.3 | **Gameplay Manager** | 4d | 2002-05-23 A | 2002-05-29 | 1199 | 6% | 3.75d | 310.38d |  | Darryl Long [50%] | 32h | 2h |
| 1201 | 21.16.3.1 | GPManager class | 1d | 2002-05-23 A | 2002-05-24 |  | 25% | 0.75d | 310.38d | 0d | Darryl Long [50%] | 4h | 1h |
| 1202 | 21.16.3.2 | Basic code | 3d | 2002-05-24 | 2002-05-29 | 1201 |  |  | 310.38d | 0d | Darryl Long [50%] | 12h |  |
| 1203 | 21.16.4 | **Presentation** | 10.5d | 2002-05-29 | 2002-06-12 | 1202 |  |  | 310.38d |  | Darryl Long [50%] | 84h |  |
| 1204 | 21.16.4.1 | Get list of events | 0.5d | 2002-05-29 | 2002-05-29 |  |  |  | 310.38d | 0d | Darryl Long [50%] | 2h |  |
| 1205 | 21.16.4.2 | Play music | 0.5d | 2002-05-29 | 2002-05-30 | 1204 |  |  | 310.38d | 0d | Darryl Long [50%] | 2h |  |
| 1206 | 21.16.4.3 | Play sounds | 0.5d | 2002-05-30 | 2002-05-30 | 1205 |  |  | 310.38d | 0d | Darryl Long [50%] | 2h |  |
| 1207 | 21.16.4.4 | Show overlays | 0.5d | 2002-05-30 | 2002-05-31 | 1206 |  |  | 310.38d | 0d | Darryl Long [50%] | 2h |  |
| 1208 | 21.16.4.5 | Hide overlays | 0.5d | 2002-05-31 | 2002-05-31 | 1207 |  |  | 310.38d | 0d | Darryl Long [50%] | 2h |  |
| 1209 | 21.16.4.6 | Start of Mission Sequence | 2d | 2002-05-31 | 2002-06-04 | 1208 |  |  | 310.38d | 0d | Darryl Long [50%] | 8h |  |
| 1210 | 21.16.4.7 | End of Mission Sequence | 3d | 2002-06-04 | 2002-06-07 | 1209 |  |  | 310.38d | 0d | Darryl Long [50%] | 12h |  |
| 1211 | 21.16.4.8 | Debugging | 3d | 2002-06-07 | 2002-06-12 | 1210 |  |  | 310.38d |  | Darryl Long [50%] | 12h |  |
| 1212 | 21.17 | **Head to Head (1st Pass)** | 32d | 2002-04-16 A | 2002-05-31 |  | 20% | 25.75d | 318.88d |  | Darryl Long [50%] | 360h | 63h |
| 1213 | 21.17.1 | **H2H Manager** | 9d | 2002-04-16 A | 2002-04-29 |  | 36% | 5.75d | 341.88d |  | Darryl Long [50%] | 72h | 26h |
| 1214 | 21.17.1.1 | H2HManager class | 0.5d | 2002-04-16 A | 2002-04-16 |  | 50% | 0.25d | 346.88d | 0d | Darryl Long [50%] | 2h | 1h |
| 1215 | 21.17.1.2 | H2HPlayer class | 0.5d | 2002-04-16 | 2002-04-17 | 1214 |  |  | 346.88d | 0d | Darryl Long [50%] | 2h |  |
| 1216 | 21.17.1.3 | Two rendering views | 3d | 2002-04-17 | 2002-04-22 | 1215 |  |  | 346.88d |  | Darryl Long [50%] | 12h |  |
| 1217 | 21.17.1.4 | Two controllers | 2d | 2002-04-22 A | 2002-04-24 A | 1216 | 100% |  |  |  | Darryl Long [50%] | 8h | 8h |
| 1218 | 21.17.1.5 | H2HMission class | 2d | 2002-04-24 A | 2002-04-26 | 1217 | 50% | 1d | 321.88d | 0d | Darryl Long [50%] | 8h | 4h |
| 1219 | 21.17.1.6 | SpawnFlag method start | 1d | 2002-04-26 | 2002-04-29 | 1218 |  |  | 321.88d | 0d | Darryl Long [50%] | 4h |  |
| 1220 | 21.17.2 | **H2H Gameplay** | 17d | 2002-04-29 | 2002-05-23 | 1219 |  |  | 321.88d |  | Darryl Long [50%] | 136h |  |
| 1221 | 21.17.2.1 | Get event requirements | 2d | 2002-04-29 | 2002-05-01 |  |  |  | 321.88d | 0d | Darryl Long [50%] | 8h |  |
| 1222 | 21.17.2.2 | Vehicle Collision | 0.5d | 2002-05-01 | 2002-05-01 | 1221 |  |  | 321.88d | 0d | Darryl Long [50%] | 2h |  |
| 1223 | 21.17.2.3 | Flag Switching | 0.5d | 2002-05-01 | 2002-05-02 | 1222 |  |  | 321.88d | 0d | Darryl Long [50%] | 2h |  |
| 1224 | 21.17.2.4 | Base Trigger | 0.5d | 2002-05-02 | 2002-05-02 | 1223 |  |  | 321.88d | 0d | Darryl Long [50%] | 2h |  |
| 1225 | 21.17.2.5 | Out of bounds | 0.5d | 2002-05-02 | 2002-05-03 | 1224 |  |  | 321.88d | 0d | Darryl Long [50%] | 2h |  |
| 1226 | 21.17.2.6 | Create sounds | 2d | 2002-05-03 | 2002-05-07 | 1225 |  |  | 321.88d | 0d | Darryl Long [50%] | 8h |  |
| 1227 | 21.17.2.7 | Start and end pres. | 2d | 2002-05-07 | 2002-05-09 | 1226 |  |  | 321.88d | 0d | Darryl Long [50%] | 8h |  |
| 1228 | 21.17.2.8 | Flag Render | 2d | 2002-05-09 | 2002-05-13 | 1227 |  |  | 321.88d | 0d | Darryl Long [50%] | 8h |  |
| 1229 | 21.17.2.9 | Finish H2HMission class | 2d | 2002-05-13 | 2002-05-15 | 1228 |  |  | 321.88d | 0d | Darryl Long [50%] | 8h |  |
| 1230 | 21.17.2.10 | Finish SpawnFlag method | 1d | 2002-05-15 | 2002-05-16 | 1229 |  |  | 321.88d | 0d | Darryl Long [50%] | 4h |  |
| 1231 | 21.17.2.11 | Watch for vehicle proximity | 0.5d | 2002-05-16 | 2002-05-16 | 1230 |  |  | 321.88d | 0d | Darryl Long [50%] | 2h |  |
| 1232 | 21.17.2.12 | Provide NavMap intf | 0.5d | 2002-05-16 | 2002-05-17 | 1231 |  |  | 321.88d | 0d | Darryl Long [50%] | 2h |  |
| 1233 | 21.17.2.13 | Debugging | 3d | 2002-05-17 | 2002-05-23 | 1232 |  |  | 321.88d | 0d | Darryl Long [50%] | 12h |  |

| ID | WBS | Task | Duration | Start | Finish | Predecessors | Complete | Remaining | Total slack | Free slack | Constraint | Resources | Work | Actual work |
| --- | --- | --- | --- | --- | --- | --- | --- | --- | --- | --- | --- | --- | --- | --- |
| 1234 | 21.17.3 | **Transitions** | 6d | 2002-05-23 A | 2002-05-31 | 1233 | 50% | 3d | 318.88d |  |  |  | 24h | 12h |
| 1235 | 21.17.3.1 | View/Layer Mgmt | 2d | 2002-05-23 A | 2002-05-27 A |  | 100% |  |  |  |  | Darryl Long [50%] | 8h | 8h |
| 1236 | 21.17.3.2 | Transition ViewWatcher | 0.5d | 2002-05-27 A | 2002-05-27 A | 1235 | 100% |  |  |  |  | Darryl Long [50%] | 2h | 2h |
| 1237 | 21.17.3.3 | Full screen alpha | 0.5d | 2002-05-27 | 2002-05-28 | 1236 |  |  | 321.88d |  |  | Darryl Long [50%] | 2h |  |
| 1238 | 21.17.3.4 | Left-to-right wipe | 0.5d | 2002-05-28 A | 2002-05-28 A | 1237 | 100% |  |  |  |  | Darryl Long [50%] | 2h | 2h |
| 1239 | 21.17.3.5 | Cross fade | 0.5d | 2002-05-28 | 2002-05-29 | 1238 |  |  | 307.38d | 0d |  | Darryl Long [50%] | 2h |  |
| 1240 | 21.17.3.6 | Debugging | 2d | 2002-05-29 | 2002-05-31 | 1239 |  |  | 307.38d | 0d |  | Darryl Long [50%] | 8h |  |
| 1241 | 21.18 | **Milestone preparation** | 11.5d | 2002-05-31 | 2002-06-17 | 1240 |  |  | 307.38d |  |  |  | 68h |  |
| 1242 | 21.18.1 | MoviePlayer | 2d | 2002-05-31 | 2002-06-04 |  |  |  | 307.38d | 0d |  | Darryl Long [50%] | 8h |  |
| 1243 | 21.18.2 | NIS Player | 1d | 2002-06-04 | 2002-06-05 | 1242 |  |  | 307.38d | 0d |  | Darryl Long [50%] | 4h |  |
| 1244 | 21.18.3 | Transitions | 2d | 2002-06-05 | 2002-06-07 | 1243 |  |  | 307.38d | 0d |  | Darryl Long [50%] | 8h |  |
| 1245 | 21.18.4 | Gameplay Manager | 1d | 2002-06-07 | 2002-06-10 | 1244 |  |  | 307.38d | 0d |  | Darryl Long [50%] | 4h |  |
| 1246 | 21.18.5 | Head to Head | 3d | 2002-06-10 | 2002-06-13 | 1245 |  |  | 307.38d | 0d |  | Darryl Long | 24h |  |
| 1247 | 21.18.6 | Final Debugging | 2.5d | 2002-06-13 | 2002-06-17 | 1246 |  |  | 307.38d |  |  | Darryl Long | 20h |  |
| 1248 | 21.19 | Integrate Watcher | 10d | 2002-04-16 A | 2002-04-30 A |  | 100% |  |  |  |  | Chuck Chow | 80h | 80h |
| 1249 | 21.20 | **Art Database** | 42d | 2002-04-30 A | 2002-06-28 |  | 50% | 21d | 284.88d |  |  | Chuck Chow | 672h | 336h |
| 1250 | 21.20.1 | Finalize Art Base Specs | 6d | 2002-04-30 A | 2002-05-08 A | 1248 | 100% |  |  |  | start no earlier than 2002-04-26 | Chuck Chow | 48h | 48h |
| 1251 | 21.20.2 | Create Backend to ArtDB (some kind of sql) | 20d | 2002-05-08 A | 2002-06-06 | 1250 | 75% | 5d | 284.88d | 0d |  | Chuck Chow | 160h | 120h |
| 1252 | 21.20.3 | Create Frontend to ArtDB | 16d | 2002-06-06 | 2002-06-28 | 1251 |  |  | 284.88d | 0d |  | Chuck Chow | 128h |  |
| 1253 | 21.21 | **Add Functionality** | 6d | 2002-06-28 | 2002-07-08 | 1252 |  |  | 284.88d |  |  | Chuck Chow | 96h |  |
| 1254 | 21.21.1 | Check for New textures | 2d | 2002-06-28 | 2002-07-02 |  |  |  | 284.88d | 0d |  | Chuck Chow | 16h |  |
| 1255 | 21.21.2 | Check for New/Different Geometry | 2d | 2002-07-02 | 2002-07-04 | 1254 |  |  | 284.88d | 0d |  | Chuck Chow | 16h |  |
| 1256 | 21.21.3 | Generates New Records Report | 2d | 2002-07-04 | 2002-07-08 | 1255 |  |  | 284.88d | 0d |  | Chuck Chow | 16h |  |
| 1257 | 21.22 | Integrate with Art Pipeline | 8d | 2002-07-08 | 2002-07-18 | 1256 |  |  | 284.88d |  |  | Chuck Chow | 64h |  |

| ID | WBS | Task | Duration | Start | Finish | Predecessors | Total slack | Free slack | Constraint | Resources | Work |
| --- | --- | --- | --- | --- | --- | --- | --- | --- | --- | --- | --- |
| 1258 | 22 | **Milestone 8 (June 15th)** | 22d | 2002-05-16 | 2002-06-18 |  | 306.88d |  |  |  | 1296h |
| 1259 | 22.1 | **Profiler Integrated** | 10d | 2002-05-16 | 2002-05-31 |  | 306.88d |  |  | Darwin Chau [50%] | 120h |
| 1260 | 22.1.1 | Investigate VTune for Xbox | 2d | 2002-05-16 | 2002-05-21 |  | 306.88d | 0d | start no earlier than 2002-05-16 | Darwin Chau | 16h |
| 1261 | 22.1.2 | Extract and cleanup Profiler from SRR | 2d | 2002-05-21 | 2002-05-23 | 1260 | 306.88d | 0d |  | Darwin Chau | 16h |
| 1262 | 22.1.3 | Integrate Profiler | 2d | 2002-05-23 | 2002-05-27 | 1261 | 306.88d | 0d |  | Darwin Chau | 16h |
| 1263 | 22.1.4 | Integrate Watcher | 1d | 2002-05-27 | 2002-05-28 | 1262 | 306.88d | 0d |  | Darwin Chau | 8h |
| 1264 | 22.1.5 | Investigate Alternatives to DebugInfo | 1d | 2002-05-28 | 2002-05-29 | 1263 | 306.88d | 0d |  | Darwin Chau | 8h |
| 1265 | 22.1.6 | Integrate DebugInfo | 2d | 2002-05-29 | 2002-05-31 | 1264 | 306.88d | 0d |  | Darwin Chau | 16h |
| 1266 | 22.2 | **Memory System** | 5d | 2002-05-31 | 2002-06-07 | 1265 | 306.88d |  |  | Darwin Chau | 80h |
| 1267 | 22.2.1 | Implement Memory Pools | 3d | 2002-05-31 | 2002-06-05 |  | 306.88d | 0d | start no earlier than 2002-05-16 | Darwin Chau | 24h |
| 1268 | 22.2.2 | Integrate Ftech Memory Monitor | 2d | 2002-06-05 | 2002-06-07 | 1267 | 306.88d | 0d |  | Darwin Chau | 16h |
| 1269 | 22.3 | **Scripting System (1st Pass)** | 7d | 2002-06-07 | 2002-06-18 |  | 306.88d |  |  | Darwin Chau | 112h |
| 1270 | 22.3.1 | Extract and Cleanup Scripter from Mirth | 3d | 2002-06-07 | 2002-06-12 | 1268 | 306.88d | 0d |  | Darwin Chau | 24h |
| 1271 | 22.3.2 | Integrate Scripter | 3d | 2002-06-12 | 2002-06-17 | 1270 | 306.88d | 0d |  | Darwin Chau | 24h |
| 1272 | 22.3.3 | Testing | 1d | 2002-06-17 | 2002-06-18 | 1271 | 306.88d |  |  | Darwin Chau | 8h |
| 1273 | 22.4 | Add DA sound layer code to game | 3d | 2002-05-29 | 2002-06-03 |  | 309.88d | 0d | start no earlier than 2002-05-29 | Darren Esau | 24h |
| 1274 | 22.5 | Knock dead and unneeded code out of layer | 3d | 2002-06-03 | 2002-06-06 | 1273 | 309.88d | 0d |  | Darren Esau | 24h |
| 1275 | 22.6 | Remove unneeded interfaces | 2d | 2002-06-06 | 2002-06-10 | 1274 | 309.88d | 0d |  | Darren Esau | 16h |
| 1276 | 22.7 | Write simple sound drivers to load scripts and prove that sounds can be made | 2d | 2002-06-10 | 2002-06-12 | 1275 | 309.88d | 0d |  | Darren Esau | 16h |
| 1277 | 22.8 | Add debug display code | 1d | 2002-06-12 | 2002-06-13 | 1276 | 309.88d |  |  | Darren Esau | 8h |
| 1278 | 22.9 | **World builder complete** | 13d | 2002-05-16 | 2002-06-05 |  | 307.88d |  |  |  | 104h |
| 1279 | 22.9.1 | Implement Tree-line Tool | 4d | 2002-05-16 | 2002-05-23 |  | 307.88d | 0d | start no earlier than 2002-05-16 | Cary Brisebois | 32h |
| 1280 | 22.9.2 | Implement Bilboarded Quad | 1d | 2002-05-23 | 2002-05-24 | 1279 | 307.88d | 0d |  | Cary Brisebois | 8h |
| 1281 | 22.9.3 | Update Existing World builder tools | 4d | 2002-05-24 | 2002-05-30 | 1280 | 307.88d | 0d |  | Cary Brisebois | 32h |
| 1282 | 22.9.4 | Create Locator Placement Plug-in | 2d | 2002-05-30 | 2002-06-03 | 1281 | 307.88d | 0d |  | Cary Brisebois | 16h |
| 1283 | 22.9.5 | Integrate Sound Script Parsing System | 2d | 2002-06-03 | 2002-06-05 | 1282 | 307.88d | 0d |  | Cary Brisebois | 16h |

Notes:
- 1278: Prototyped: / - Grounding Tool / - Bounding Vol. Fence Tool / These will need some updating to reflect designer requirements and bug fixes. / To do: / - Tree-line Tool / - Bilboarded Quad
- 1279: The tree line tool creates a series of quads that are automatically snaped to the surface (or y=0) and generate texture tiling automatically
- 1280: Bilboarded quads are supposed to be supported by Pure3d, but apparently they don't work. I will need some time to sort this out.
- 1281: The grounding tool and the boundign volume fence tool will need some time to update them.
- 1282: This already exists for the SRR version of locators trigger volumes.
- 1283: Esan is making a tool that will parse the sound scripts to determine what sound effects are available as locator-based sounds. This tool wil update the locators, and allow the placement of new ones.

| ID | WBS | Task | Duration | Start | Finish | Predecessors | Total slack | Free slack | Constraint | Resources | Work |
| --- | --- | --- | --- | --- | --- | --- | --- | --- | --- | --- | --- |
| 1284 | 22.10 | **Create Art Database** | 8d | 2002-06-05 | 2002-06-17 | 1283 | 307.88d |  |  |  | 64h |
| 1285 | 22.10.1 | Integrate with Art Library | 3d | 2002-06-05 | 2002-06-10 |  | 307.88d | 0d |  | Cary Brisebois | 24h |
| 1286 | 22.10.2 | Integrate with Art Pipeline Build | 2d | 2002-06-10 | 2002-06-12 | 1285 | 307.88d | 0d |  | Cary Brisebois | 16h |
| 1287 | 22.10.3 | Integrate with Rules Generation | 3d | 2002-06-12 | 2002-06-17 | 1286 | 307.88d |  |  | Cary Brisebois | 24h |
| 1288 | 22.11 | **Out of Car Functionality (1st Pass)** | 15d | 2002-05-16 | 2002-06-07 |  | 313.88d |  |  | Travis Brown-John [50%] | 292h |
| 1289 | 22.11.1 | **Avatar system** | 4d | 2002-05-16 | 2002-05-23 |  | 313.88d |  |  | Travis Brown-John | 64h |
| 1290 | 22.11.1.1 | Implement control (vehicle <--> character) switching logic. | 2d | 2002-05-16 | 2002-05-21 |  | 313.88d | 0d | start no earlier than 2002-05-16 | Travis Brown-John | 16h |
| 1291 | 22.11.1.2 | Implement event handler for GetInCar event | 0.5d | 2002-05-21 | 2002-05-21 | 1290 | 313.88d | 0d |  | Travis Brown-John | 4h |
| 1292 | 22.11.1.3 | Implement event handler for GetOutofCar event | 0.5d | 2002-05-21 | 2002-05-22 | 1291 | 313.88d | 0d |  | Travis Brown-John | 4h |
| 1293 | 22.11.1.4 | Implement VehicleControllerFactory | 1d | 2002-05-22 | 2002-05-23 | 1292 | 313.88d | 0d |  | Travis Brown-John | 8h |
| 1294 | 22.11.2 | **Character Manager** | 1d | 2002-05-23 | 2002-05-24 | 1293 | 313.88d |  |  | Travis Brown-John | 16h |
| 1295 | 22.11.2.1 | Implement Character Manager (Create/Init/update/destroy) | 1d | 2002-05-23 | 2002-05-24 |  | 313.88d | 0d |  | Travis Brown-John | 8h |
| 1296 | 22.11.3 | **Character Motion Controller** | 3d | 2002-05-24 | 2002-05-29 | 1295 | 313.88d |  |  | Travis Brown-John | 48h |
| 1297 | 22.11.3.1 | Implement Locomotion smooth acceleration/decel | 0.5d | 2002-05-24 | 2002-05-24 |  | 313.88d | 0d |  | Travis Brown-John | 4h |
| 1298 | 22.11.3.2 | Implement Locomotion smooth rotation | 0.5d | 2002-05-24 | 2002-05-27 | 1297 | 313.88d | 0d |  | Travis Brown-John | 4h |
| 1299 | 22.11.3.3 | Implement U turn transition | 1d | 2002-05-27 | 2002-05-28 | 1298 | 313.88d | 0d |  | Travis Brown-John | 8h |
| 1300 | 22.11.3.4 | Write basic Choreo script | 1d | 2002-05-28 | 2002-05-29 | 1299 | 313.88d | 0d |  | Travis Brown-John | 8h |
| 1301 | 22.11.4 | Physical Character Controller Implementation | 0.5d | 2002-05-29 | 2002-05-29 | 1300 | 313.88d | 0d |  | Travis Brown-John | 4h |
| 1302 | 22.11.5 | Physical Vehicle Controller Implementation | 0.5d | 2002-05-29 | 2002-05-30 | 1301 | 313.88d | 0d |  | Travis Brown-John | 4h |
| 1303 | 22.11.6 | **Character Animations** | 4d | 2002-05-30 | 2002-06-05 | 1302 | 313.88d |  |  | Travis Brown-John | 64h |
| 1304 | 22.11.6.1 | Implement Action Tree/Animation Sequencer (port from Hulk/Squidney) | 4d | 2002-05-30 | 2002-06-05 |  | 313.88d | 0d |  | Travis Brown-John | 32h |
| 1305 | 22.11.7 | **Character AI** | 2d | 2002-06-05 | 2002-06-07 | 1304 | 313.88d |  |  | Travis Brown-John | 32h |
| 1306 | 22.11.7.1 | Trigger GetInCar Event (poll input, test conditions: proximity to car) | 1d | 2002-06-05 | 2002-06-06 |  | 313.88d | 0d |  | Travis Brown-John | 8h |
| 1307 | 22.11.7.2 | Trigger GetOutofCar Event | 1d | 2002-06-06 | 2002-06-07 | 1306 | 313.88d |  |  | Travis Brown-John | 8h |

Notes:
- 1285: The art database will need to access the p3d chunks in the art library. This will need to use Toollib as part of the art database.
- 1286: The plan is to make the art database run the pipeline. This will be a GUI to the pipeline and possible tools to write pipeline ini files.
- 1287: The plan includes creating rules for the p3drule tool in the Art Data base tool / Depend: Bryan Ewert to make p3dRule work
- 1288: User will be able to "walk" in world with character.* User will be able to get in/out of car. Control will switch between character and vehicle. / Character will teleport into/out of car. / DEPENDICIES / Terrain system functional to give y height at xz coord. Locators in vehicle data for passenger sit, get in/out coordinates. Need to tell the camera system what to look at (character or vehicle).

| ID | WBS | Task | Duration | Start | Finish | Predecessors | Total slack | Free slack | Constraint | Resources | Work |
| --- | --- | --- | --- | --- | --- | --- | --- | --- | --- | --- | --- |
| 1308 | 22.12 | **World Sphere** | 1d | 2002-05-16 | 2002-05-17 |  | 327.88d |  |  | Devin Murname | 16h |
| 1309 | 22.12.1 | Loading | 0.13d | 2002-05-16 | 2002-05-16 |  | 327.88d | 0d | start no earlier than 2002-05-16 | Devin Murname | 1.03h |
| 1310 | 22.12.2 | Rendering | 0.62d | 2002-05-16 | 2002-05-16 | 1309 | 327.88d | 0d |  | Devin Murname | 4.97h |
| 1311 | 22.12.3 | Debugging | 0.25d | 2002-05-16 | 2002-05-17 | 1310 | 327.88d |  |  | Devin Murname | 2h |
| 1312 | 22.13 | Tuning Cars Possible | 21d | 2002-05-16 | 2002-06-17 |  | 307.88d |  | start no earlier than 2002-05-16 | Greg Mayer [20%] | 33.6h |
| 1313 | 22.14 | Car Damage States (1st Pass) | 21d | 2002-05-16 | 2002-06-17 |  | 307.88d |  | start no earlier than 2002-05-16 | Greg Mayer [40%] | 67.2h |
| 1314 | 22.15 | Collision Manager (1st Pass) | 21d | 2002-05-16 | 2002-06-17 |  | 307.88d |  | start no earlier than 2002-05-16 | Greg Mayer [40%] | 67.2h |
| 1315 | 22.16 | Track Editor Complete (1st Pass) | 21d | 2002-05-16 | 2002-06-17 |  | 307.88d |  | start no earlier than 2002-05-16 | Cary Brisebois [50%] | 84h |
| 1316 | 22.17 | Basic FE System | 21d | 2002-05-16 | 2002-06-17 |  | 307.88d |  | start no earlier than 2002-05-16 | Michael Riegger | 168h |
| 1317 | 23 | **Milestone 9 (July 15th)** | 27d? | 2002-06-17 | 2002-07-24 |  | 280.88d |  |  |  | 728h |
| 1318 | 23.1 | Write Sound Manager class, with component creation/destruction | 2d | 2002-06-17 | 2002-06-19 |  | 280.88d | 0d | start no earlier than 2002-06-17 | Darren Esau | 16h |
| 1319 | 23.2 | Write sound loader system | 4d | 2002-06-19 | 2002-06-25 | 1318 | 280.88d | 0d |  | Darren Esau | 32h |
| 1320 | 23.3 | Write global tuner | 2d | 2002-06-25 | 2002-06-27 | 1319 | 280.88d | 0d |  | Darren Esau | 16h |
| 1321 | 23.4 | Write SimpsonsSoundPlayer class | 3d | 2002-06-27 | 2002-07-02 | 1320 | 280.88d | 0d |  | Darren Esau | 24h |
| 1322 | 23.5 | Write avatar sound system structure, ignoring logic for walker sound | 5d | 2002-07-02 | 2002-07-09 | 1321 | 280.88d | 0d |  | Darren Esau | 40h |
| 1323 | 23.6 | Set up car sound system scripts with RadTuner support | 2d | 2002-07-09 | 2002-07-11 | 1322 | 280.88d | 0d |  | Darren Esau | 16h |
| 1324 | 23.7 | Write sound effect subsystem | 3d | 2002-07-11 | 2002-07-16 | 1323 | 280.88d | 0d |  | Darren Esau | 24h |
| 1325 | 23.8 | Write music subsystem | 3d | 2002-07-16 | 2002-07-19 | 1324 | 280.88d | 0d |  | Darren Esau | 24h |
| 1326 | 23.9 | Set up music and sound effect scripts with RadTuner support | 2d | 2002-07-19 | 2002-07-23 | 1325 | 280.88d | 0d |  | Darren Esau | 16h |
| 1327 | 23.10 | Add debug display code | 1d | 2002-07-23 | 2002-07-24 | 1326 | 280.88d |  |  | Darren Esau | 8h |
| 1328 | 23.11 | Fence tool runtime to bound worlds | 1d? | 2002-06-17 | 2002-06-18 |  | 306.88d |  | start no earlier than 2002-06-17 | Greg Mayer | 8h |
| 1329 | 23.12 | Character Out of Car Interactions w/ World Objects (1st Pass) | 21d | 2002-06-17 | 2002-07-16 |  | 286.88d |  | start no earlier than 2002-06-17 | Travis Brown-John [50%] | 84h |
| 1330 | 23.13 | Road Network System (1st Pass) | 21d | 2002-06-17 | 2002-07-16 |  | 286.88d |  | start no earlier than 2002-06-17 | Travis Brown-John [50%]; Cary Brisebois | 252h |
| 1331 | 23.14 | HUD Implemented (1st Pass) | 21d | 2002-06-17 | 2002-07-16 |  | 286.88d |  | start no earlier than 2002-06-17 | Michael Riegger | 168h |

Notes:
- 1317: Milestone 9 Build Features / ·6 CDs burned: NTSC and PAL on all platforms / ·PAL build process and directory structures complete / ·Firewire build working / ·2 Levels / oLevel 2 / §Final geometry, terrrain, and full representative textures on 2 adjacent zones and the 3 surrounding rails / §As much geometry, terrain, and textures as possible on the remainder of the level. / §Several examples of instanced objects, created with Carys instancing tool / §Several examples of dynamic objects that are meant to move around the world / §Several examples of bounding volumes laid down with Carys fence tool / §One world animation / §Baked lighting on part of level / §Initial shadow map complete / oLevel 8 (test track) / §8 driveable vehicles at once with ability for player to switch / ·Logo movies at startup using new movie player on all platforms / ·FE pipeline fully in place / ·HUD elements partly complete / oAll on-screen HUD elements complete for 1 and 2 player modes, except art for overhead map / oPause menu with continue and quit; can cycle indefinitely between game and frontend / ·Dynamic loading nominally working, loads and frees continually with unconstrained user movement through the world / ·Collidable object properties can be specified in the pipeline using the art DB / ·Fence runtime completely working / ·Car shadow working / ·Main player character shadow working / ·Engine sounds working and changing based on RPM / ·Player car skid sounds working / ·Out of car interaction example in a real level / oSimple jumping puzzle / oCharacter moves vertically and horizontally on animated platform / oCharacter triggers animation of moving platform with a button / oCharacter plays animation to push activation button / ·AI traffic cars (at least one) using real pipelined road data / Demonstration of mission system allowing a single mission to be played

| ID | WBS | Task | Duration | Start | Finish | Predecessors | Complete | Remaining | Total slack | Free slack | Constraint | Resources | Work | Actual work |
| --- | --- | --- | --- | --- | --- | --- | --- | --- | --- | --- | --- | --- | --- | --- |
| 1332 | 24 | **Milestone 10 (Aug 15th)** | 44d | 2002-06-17 | 2002-08-16 |  |  |  | 263.88d |  |  |  | 1088h |  |
| 1333 | 24.1 | **Write SpeechCoordinator dialog management system** | 8d | 2002-07-16 | 2002-07-26 |  |  |  | 263.88d |  |  |  | 64h |  |
| 1334 | 24.1.1 | Class Structure | 3d | 2002-07-16 | 2002-07-19 |  |  |  | 263.88d | 0d | start no earlier than 2002-07-16 | Darren Esau | 24h |  |
| 1335 | 24.1.2 | Parsing & sorting Code | 5d | 2002-07-19 | 2002-07-26 | 1334 |  |  | 263.88d | 0d |  | Darren Esau | 40h |  |
| 1336 | 24.2 | Write DialogCoordinator | 2d | 2002-07-26 | 2002-07-30 | 1335 |  |  | 263.88d | 0d |  | Darren Esau | 16h |  |
| 1337 | 24.3 | Write priority queue system | 5d | 2002-07-30 | 2002-08-06 | 1336 |  |  | 263.88d | 0d |  | Darren Esau | 40h |  |
| 1338 | 24.4 | Add in the Cone of Silence logic | 4d | 2002-08-06 | 2002-08-12 | 1337 |  |  | 263.88d | 0d |  | Darren Esau | 32h |  |
| 1339 | 24.5 | Linked conversation capability | 3d | 2002-08-12 | 2002-08-15 | 1338 |  |  | 263.88d | 0d |  | Darren Esau | 24h |  |
| 1340 | 24.6 | Add debug display code | 1d | 2002-08-15 | 2002-08-16 | 1339 |  |  | 263.88d |  |  | Darren Esau | 8h |  |
| 1341 | 24.7 | Chase/Evade Mission Playable | 23d | 2002-07-16 | 2002-08-16 |  |  |  | 263.88d |  | start no earlier than 2002-07-16 |  |  |  |
| 1342 | 24.8 | Collection Mission Playable | 23d | 2002-07-16 | 2002-08-16 |  |  |  | 263.88d |  | start no earlier than 2002-07-16 |  |  |  |
| 1343 | 24.9 | All Mission Types Possible | 23d | 2002-07-16 | 2002-08-16 |  |  |  | 263.88d |  | start no earlier than 2002-07-16 |  |  |  |
| 1344 | 24.10 | Chase AI (1st Pass) | 23d | 2002-07-16 | 2002-08-16 |  |  |  | 263.88d |  | start no earlier than 2002-07-16 | Travis Brown-John | 184h |  |
| 1345 | 24.11 | Evade AI (1st Pass) | 23d | 2002-07-16 | 2002-08-16 |  |  |  | 263.88d |  | start no earlier than 2002-07-16 | Travis Brown-John | 184h |  |
| 1346 | 24.12 | Traffic System AI (1st Pass) | 23d | 2002-07-16 | 2002-08-16 |  |  |  | 263.88d |  | start no earlier than 2002-07-16 | Cary Brisebois [50%] | 92h |  |
| 1347 | 24.13 | Counter Measures (1st Pass) | 23d | 2002-07-16 | 2002-08-16 |  |  |  | 263.88d |  | start no earlier than 2002-07-16 | Cary Brisebois [50%] | 92h |  |
| 1348 | 24.14 | Pedestrian AI (1st Pass) | 44d | 2002-06-17 | 2002-08-16 |  |  |  | 263.88d |  | start no earlier than 2002-06-17 | Darryl Long | 352h |  |
| 1349 | 25 | **Milestone 11 (Sep 15th)** | 95d? | 2002-04-16 | 2002-08-28 |  |  |  | 255.88d |  |  |  | 72h |  |
| 1350 | 25.1 | Write ambient sound system | 5d | 2002-08-16 | 2002-08-23 |  |  |  | 255.88d | 0d | start no earlier than 2002-08-16 | Darren Esau | 40h |  |
| 1351 | 25.2 | Write NIS sound system | 2d | 2002-08-23 | 2002-08-27 | 1350 |  |  | 255.88d | 0d |  | Darren Esau | 16h |  |
| 1352 | 25.3 | Add debug display code | 1d | 2002-08-27 | 2002-08-28 | 1351 |  |  | 255.88d |  |  | Darren Esau | 8h |  |
| 1353 | 25.4 | Xbox Ripping | 1d? | 2002-04-16 | 2002-04-17 |  |  |  | 349.88d |  |  | Darren Esau | 8h |  |
| 1354 | 3.6 | **Milestone 12 (Oct 15th)** | 19d? | 2002-09-16 A | 2002-10-11 |  | 7% | 17.69d? | 222.88d |  |  |  | 656h | 45.2h |
| 1355 | 3.6.1 | Ability to go to any mission from front end or pause menu | 1d? | 2002-09-16 | 2002-09-17 |  |  |  | 235.88d | 0d | start no earlier than 2002-09-16 | Cary Brisebois | 8h |  |
| 1356 | 3.6.2 | Missions: Work with mission team to make sure they work | 1d? | 2002-09-17 | 2002-09-18 | 1355 |  |  | 235.88d | 0d |  | Cary Brisebois | 8h |  |
| 1357 | 3.6.3 | Camera collisions: on foot | 1d? | 2002-09-18 | 2002-09-19 | 1356 |  |  | 235.88d | 0d |  | Cary Brisebois | 8h |  |
| 1358 | 3.6.4 | Camera collisions: driving | 1d? | 2002-09-19 | 2002-09-20 | 1357 |  |  | 235.88d | 0d |  | Cary Brisebois | 8h |  |
| 1359 | 3.6.5 | Camera collisions: interiors | 1d? | 2002-09-20 | 2002-09-23 | 1358 |  |  | 235.88d | 0d |  | Cary Brisebois | 8h |  |
| 1360 | 3.6.6 | Rail Cam improvements | 1d? | 2002-09-23 | 2002-09-24 | 1359 |  |  | 235.88d |  |  | Cary Brisebois | 8h |  |
| 1361 | 3.6.7 | Mission restart correctly resets the players position, mission elements, and returns to mission instruction screen | 1d? | 2002-09-16 | 2002-09-17 |  |  |  | 237.88d | 0d | start no earlier than 2002-09-16 | Chuck Chow | 8h |  |
| 1362 | 3.6.8 | Missions: Work with mission team to make sure they work | 1d? | 2002-09-17 | 2002-09-18 | 1361 |  |  | 237.88d | 0d |  | Chuck Chow | 8h |  |
| 1363 | 3.6.9 | Artist pipeline support | 1d? | 2002-09-18 | 2002-09-19 | 1362 |  |  | 237.88d | 0d |  | Chuck Chow | 8h |  |
| 1364 | 3.6.10 | Artist memory budget enforcement | 1d? | 2002-09-19 | 2002-09-20 | 1363 |  |  | 237.88d |  |  | Chuck Chow | 8h |  |
| 1365 | 3.6.11 | Audio for gag NISes | 1d? | 2002-09-16 A | 2002-09-17 |  | 75% | 0.25d? | 240.88d |  | start no earlier than 2002-09-16 | Darren Esau | 8h | 6h |
| 1366 | 3.6.12 | Engine sounds working correctly - 1st pass | 1d? | 2002-09-17 A | 2002-09-18 A | 1365 | 100% |  |  |  |  | Darren Esau | 8h | 8h |
| 1367 | 3.6.13 | Dialog system: eye blinking and mouth flapping | 1d? | 2002-09-18 | 2002-09-19 | 1366 |  |  | 238.88d |  |  | Darren Esau | 8h |  |
| 1368 | 3.6.14 | Interior sound effects - 1st pass | 1d? | 2002-09-19 A | 2002-09-20 A | 1367 | 100% |  |  |  |  | Darren Esau | 8h | 8h |
| 1369 | 3.6.15 | PS2 mipmap tuning | 1d? | 2002-09-20 | 2002-09-23 | 1368 |  |  | 236.88d |  |  | Darren Esau | 8h |  |
| 1370 | 3.6.16 | Interactive music integrated into the game | 1d? | 2002-09-23 A | 2002-09-24 A | 1369 | 100% |  |  |  |  | Darren Esau | 8h | 8h |
| 1371 | 3.6.17 | Addition of some final sound effects - 1st pass | 1d? | 2002-09-24 A | 2002-09-25 A | 1370 | 100% |  |  |  |  | Darren Esau | 8h | 8h |
| 1372 | 3.6.18 | Addition of placeholder audio (dialog, sound effects, engine sounds, music, etc) | 1d? | 2002-09-25 A | 2002-09-26 | 1371 | 90% | 0.1d? | 233.88d |  |  | Darren Esau | 8h | 7.2h |
| 1373 | 3.6.19 | Dialog system: eye blinking and mouth flapping | 1d? | 2002-09-16 | 2002-09-17 |  |  |  | 238.88d | 0d | start no earlier than 2002-09-16 | Darryl Long | 8h |  |
| 1374 | 3.6.20 | Mission system improvements | 1d? | 2002-09-17 | 2002-09-18 | 1373 |  |  | 238.88d | 0d |  | Darryl Long | 8h |  |
| 1375 | 3.6.21 | Vehicle AI system improvements | 1d? | 2002-09-18 | 2002-09-19 | 1374 |  |  | 238.88d |  |  | Darryl Long | 8h |  |
| 1376 | 3.6.22 | More granularity in memory tracking system | 1d? | 2002-09-16 | 2002-09-17 |  |  |  | 236.88d | 0d | start no earlier than 2002-09-16 | Darwin Chau | 8h |  |
| 1377 | 3.6.23 | Interior gag audio | 1d? | 2002-09-17 | 2002-09-18 | 1376 |  |  | 236.88d | 0d |  | Darwin Chau | 8h |  |
| 1378 | 3.6.24 | Enter/Exit interior presentation with iris transition | 1d? | 2002-09-18 | 2002-09-19 | 1377 |  |  | 236.88d | 0d |  | Darwin Chau | 8h |  |
| 1379 | 3.6.25 | General memory management ongoing tasks | 1d? | 2002-09-19 | 2002-09-20 | 1378 |  |  | 236.88d | 0d |  | Darwin Chau | 8h |  |
| 1380 | 3.6.26 | Level start into NIS (e.g. get up off the couch in level 1) | 1d? | 2002-09-20 | 2002-09-23 | 1379 |  |  | 236.88d |  |  | Darwin Chau | 8h |  |
| 1381 | 3.6.27 | Local world spheres triggering and rendering correctly | 1d? | 2002-09-16 | 2002-09-17 |  |  |  | 233.88d | 0d | start no earlier than 2002-09-16 | Devin Murname | 8h |  |
| 1382 | 3.6.28 | Z Sorting | 1d? | 2002-09-17 | 2002-09-18 | 1381 |  |  | 233.88d | 0d |  | Devin Murname | 8h |  |
| 1383 | 3.6.29 | Texture randomization (e.g. for church sign) | 1d? | 2002-09-18 | 2002-09-19 | 1382 |  |  | 233.88d | 0d |  | Devin Murname | 8h |  |
| 1384 | 3.6.30 | Billboard objects | 1d? | 2002-09-19 | 2002-09-20 | 1383 |  |  | 233.88d | 0d |  | Devin Murname | 8h |  |
| 1385 | 3.6.31 | Toon lines on 3D icons | 1d? | 2002-09-20 | 2002-09-23 | 1384 |  |  | 233.88d | 0d |  | Devin Murname | 8h |  |
| 1386 | 3.6.32 | DSG cleanup / abstract base class for DSG objects | 1d? | 2002-09-23 | 2002-09-24 | 1385 |  |  | 233.88d | 0d |  | Devin Murname | 8h |  |
| 1387 | 3.6.33 | General dynamic loading ongoing tasks | 1d? | 2002-09-24 | 2002-09-25 | 1386 |  |  | 233.88d | 0d |  | Devin Murname | 8h |  |
| 1388 | 3.6.34 | Load cancels working (dependent on P3D providing this) | 1d? | 2002-09-25 | 2002-09-26 | 1387 |  |  | 233.88d |  |  | Devin Murname | 8h |  |
| 1389 | 3.6.35 | AI Traffic system: intelligent behaviour | 1d? | 2002-09-16 | 2002-09-17 |  |  |  | 235.88d | 0d | start no earlier than 2002-09-16 | Dusit Eakkachaichanvet | 8h |  |
| 1390 | 3.6.36 | Chase AI | 1d? | 2002-09-17 | 2002-09-18 | 1389 |  |  | 235.88d | 0d |  | Dusit Eakkachaichanvet | 8h |  |
| 1391 | 3.6.37 | Mission vehicle AI improvements | 1d? | 2002-09-18 | 2002-09-19 | 1390 |  |  | 235.88d | 0d |  | Dusit Eakkachaichanvet | 8h |  |
| 1392 | 3.6.38 | Pedestrian data pipeline | 1d? | 2002-09-19 | 2002-09-20 | 1391 |  |  | 235.88d | 0d |  | Dusit Eakkachaichanvet | 8h |  |
| 1393 | 3.6.39 | Pedestrian AI | 1d? | 2002-09-20 | 2002-09-23 | 1392 |  |  | 235.88d | 0d |  | Dusit Eakkachaichanvet | 8h |  |
| 1394 | 3.6.40 | Pedestrian rendering | 1d? | 2002-09-23 | 2002-09-24 | 1393 |  |  | 235.88d |  |  | Dusit Eakkachaichanvet | 8h |  |
| 1395 | 3.6.41 | Mission based vehicle parameters | 1d? | 2002-09-16 | 2002-09-17 |  |  |  | 222.88d | 0d | start no earlier than 2002-09-16 | Greg Mayer | 8h |  |
| 1396 | 3.6.42 | damage states on vehicles | 1d? | 2002-09-17 | 2002-09-18 | 1395 |  |  | 222.88d | 0d |  | Greg Mayer | 8h |  |
| 1397 | 3.6.43 | ongoing collision optimizations | 1d? | 2002-09-18 | 2002-09-19 | 1396 |  |  | 222.88d | 0d |  | Greg Mayer | 8h |  |
| 1398 | 3.6.44 | rest test for dynamic objects | 1d? | 2002-09-19 | 2002-09-20 | 1397 |  |  | 222.88d | 0d |  | Greg Mayer | 8h |  |
| 1399 | 3.6.45 | dynamic objects using art database properties | 1d? | 2002-09-20 | 2002-09-23 | 1398 |  |  | 222.88d | 0d |  | Greg Mayer | 8h |  |
| 1400 | 3.6.46 | dynamic objects rest tests | 1d? | 2002-09-23 | 2002-09-24 | 1399 |  |  | 222.88d | 0d |  | Greg Mayer | 8h |  |
| 1401 | 3.6.47 | driving engine: brake stands, burnouts, donuts | 1d? | 2002-09-24 | 2002-09-25 | 1400 |  |  | 222.88d | 0d |  | Greg Mayer | 8h |  |

Notes:
- 1332: Milestone 10 Build Features / Art Cutoff: August 8 / CD delivery date: August 15 / ·Suburb level / oGeometry and terrain complete with 1st pass textures / oGeometry optimization partially complete / oPartially populated with moveable and breakable objects / oBounding volumes complete / oTrack data completely laid down / oSample world object animation / oBaked lighting and shadow maps complete / oA single interior completely modelled and textured / oSingle NIS gag animated / ·Seaside level / oGeometry and terrain complete with 1st pass textures / oGeometry optimization partially complete / oSome bounding volumes complete / oSome moveable objects / oSome track data laid down / oBaked lighting and shadow maps complete / ·8 cars built and tuned and driveable in the world / ·5 walker characters available for play / ·Can play the first few missions of Level 1 / ·Game demonstrates all mission types (chase, evade, collect, go to, destroy) / ·Game demonstrates ability to initiate, succeed, and fail at missions / ·Vehicle AI for missions completed (chase and evade) / ·Missions unload and load into memory correctly / ·Mission begin/end presentation complete: fades, loading screen, B&W freeze frame (time permitting) / ·Mission restart works correctly (all moveable objects and mission elements reset) / ·Front end NIS (the living room) with camera animations completed / ·Front end 2D screens and functionality partially completed / oMain menu / oMultiplayer setup / oMultiplayer choose character / oOptions / oOptions: Controller config / oOptions: Sound / oPause menu (single player and multiplayer) / oGame Over (single player and multiplayer) / ·Final fonts for front end and HUD completed / ·HUD final art completed / ·HUD map auto-generating in the pipeline / ·HUD map displaying correctly, with relevant game objects / ·Loading screen displaying for both F/E to game and game to F/E / ·Music system complete with 1st pass music / ·Music changes for: player in car, player out of car, player in an interior / ·Sound effects working with some placeholder sound effects / ·Locator based directional sounds working with 1st pass sound effects / ·Moveable and breakable objects working in game / ·Placeholder AI traffic driving in world / ·Animated bounding volumes working / ·Billboarded alpha quads working / ·Instanced objects are loaded and represented in memory correctly / ·Collectible cards displaying / ·Can pick up a collectible card and have the pause menu reflect the inventory of cards / ·Character behaves correctly on moving platforms / ·All out-of-car functionality for jumping puzzles complete: character collisions, push buttons, etc. / ·Car hailing system demonstrated (without NIS or presentation elements) / ·Can enter and exit one interior / ·Interior door entry/exit presentation works / ·Rendering of outside world turned on/off correctly when inside interior / ·Interior gag NIS plays correctly / ·Pipeline for all world data except SFX (missions, collectibles, sounds, H2H data, etc) complete / ·All loading happening asynchronously / ·All memory allocations being captured and directed to an appropriate heap / ·Can quit a level and restart from the front end without crashing / ·Death volumes pipeline complete
- 1349: Milestone 11 Build Features / Art Cutoff: September 6 / CD delivery date: September 13 / ·Level Art / oSuburbs / §All geometry, tracks, and final textures completed / §All collision volumes in place / §All moveable objects in place / §All breakable object in place / §Geometry optimization step complete (all geometry at final poly count) / §3 interiors in the level: / ·Final geometry, collisions, and character animations / ·Final textures / §All hailing points (phone booths and bus stops) modelled and placed / §All local world spheres completed / §All collectible cards placed in the level / §All food icons placed in the level / §All destructible cameras placed in the level / §All death volumes placed in the level / §Light maps and shadow maps complete / oDowntown / §Initial track layout complete / §Dynamic loading load triggers placed / §Terrain modelled / §Key exterior landmarks placed in level / §Few textures / §Some fine geometry (e.g. awnings on buildings) not complete / oSeaside track finalized / ·Dynamic loading / oLocal world spheres draw at correct times / oLoad cancels caused by quick turnarounds working / ·Environmental mapping on cars complete / ·Main car shadow in game / ·Main player character shadow in game / ·Billboarded alpha quads working / ·Boulevard heaps integrated into dynamic loading system / ·Shared level-wide textures correctly sorted into a statically loaded P3D file / ·Skid marks drawing on the terrain / ·Particle effects for skids on different terrain / ·Particle effects for character dashes / ·Collectable system completed / oCards, food, and all other collectibles are rendered correctly in the world / oFront end correctly reflects current inventory of cards / ·All action button functionality working with animations playing / oTelephones: Can activate them and the HUD presents a menu of cars to hail / oDoors to interiors: Enter and exit NIS character animations playing / oCameras / power couplings: Can destroy them and have this reflected in HUD, mission data, etc. / oSwitches in jumping puzzles for moving platforms, etc. / ·3 interiors in the game and working (Simpsons House, Kwik-E-Mart, School) / ·Interior gags playing correctly, with randomization / ·All frontend screens complete / oOptions / oMemory card screens / oCollector card screens / ·Can select levels 1 through 7 in front end (may need to duplicate Suburbs in pipeline for now) / ·All mission data and scripts for Levels 1, 4 and 7 (Suburbs) complete / ·All mission presentation features in place and working with actual missions / ·Character gets in correct side of car (driver or passenger) / ·Dialog system working / oDialog system pipeline complete / oSample dialog incorporated from Road Rage and Skate and used in-game / oAbility to approach characters in the world and talk to them. / ·Memory card loading/saving completely working / ·Pedestrians in game and walking around the world / ·Environmental / ambient sounds playing for suburb level / ·Environmental / ambient sounds playing in one interiors / ·Interior sound effects for at least two interiors / ·Some final sound effects in game / ·At least one car with final engine sounds (final source samples and tuning) / ·Fence run-time completion / ·All mission presentation aspects complete / ·Mission flow functionality adjusted / oStart level in sunday drive mode / oUpon failing a mission, reset the mission to the starting position and go to mission instruction screen / ·Mission restart (with object reset) completely working / ·All presentation aspects of car hailing system complete / ·Final AI traffic driving around in world / oDesigner-specified density control / oIntelligent driving on road networks (at intersections, etc) / oAI traffic goes into physics simulation mode correctly when hit / Special effect pipelines all established and implemented
- 1354: Milestone 12 Build Features / Art Cutoff: October 8 / CD delivery date: October 15 / ·Level Art / oDowntown and Suburbs / §All geometry, tracks, and final textures completed / §All collision volumes in place / §All moveable objects in place / §All breakable object in place / §Geometry optimization step complete (all geometry at final poly count) / §3 interiors in the level: / ·Final geometry, collisions, and character animations / ·Final textures / §All hailing points (phone booths and bus stops) modelled and placed / §All local world spheres completed / §All collectible cards placed in the level / §All food icons placed in the level / §All destructible cameras placed in the level / §All death volumes placed in the level / ·Pipeline for all special effects complete / ·Shadows for all cars in game / ·Shadows for all characters in game / ·Billboards working / ·Skid marks drawing on the terrain / ·All particle effects in the game / ·Environmental mapping on cars complete / ·Pedestrians in game and walking around the world / ·All collectible effects working correctly / ·Local world spheres rendering correctly / ·Z sorting working correctly and efficiently in the rendering engine / ·Load cancels caused by quick turnarounds working / ·All mipmap levels tuned / ·Texture tile optimizations being performed in the pipeline (new P3D tool) / ·Water rendering effects complete / ·Traffic and prop fading rendering effects complete / ·All special effects associated with collectibles complete / ·All particle effects complete / oCar / oOn-foot character / oOther particle effects (?) / ·Audio incorporated into interior gags / ·Mouth flapping and eye blinking working for conversations / ·Mission restart (with object reset) completely working / ·Car reset resets car to closest reset point / ·All mission data laid down for levels ??, ?? and ??/ ·Skinned collectibles working (e.g. monkeys) / ·Weeble effect on cars complete / ·Traffic density controllable by the Watcher (?) / ·Car door opens and closes for character entry/exit / ·Car behaves correctly on animated bounding volumes / ·Car brake stands and burnouts working correctly / ·Car encounter with steep terrain handled correctly / ·Toon line rendering on landmarks complete / ·Mouth flapping implemented in all cases where it is to be used / ·Eye blinking implemented and working on all characters / ·Boss missions functioning, except final boss mission / ·Damage states fully working on all player cars and AI cars, complete with textures, damage levels, and particle effects. / ·Player getting hit by a car handled and presented correctly / ·Death volumes with reset working for both in and out of car / ·Ability to go to any level, any mission from pause menu / oLoads other level if necessary / oStarts selected mission in post-presentation state (i.e.at the mission load instruction presentation screen) / ·Cheat input system completed / ·Ability to save and load a game to a memory card complete / ·All TRC related handling of memory cards completed (corrupt, missing, yanked cards, etc) / ·Some first pass engine sounds in game / ·Text-to-speech content integrated into dialogue system / ·Some first pass collision sounds in game / ·Logo movies final for both PAL and NTSC / ·Randomization of some dynamically loaded textures (for changing sign gags, e.g. church) / ·Improvements to vehicle AI (chase and evade) functionality as requested by the designers / ·Can play FMVs in game / ·Ability to jump to any mission from the front end / ·Ability to jump to any mission from the pause menu / ·Final AI traffic behaviour implemented / ·Abstract base class for DSG-contained objects (?) / ·Physics properties from art database being used / ·All breakable effects incorporated into the game / ·Camera collisions handled correctly (on foot, in car, and in interiors)
- 1365: code written but not tested / next ms: many small tasks ie. gear shifting, dialogue, traffic sounds (doppler), reverb (power plant), etc.
- 1367: push to next ms
- 1368: what is playing in the interiors
- 1369: next ms
- 1371: footsteps, need to know the surface
- 1392: (Must be completed by October 1 for art iteration)
- 1395: must be done by Sept 17th for designer iteration
- 1396: depot/users/greg/tasks.txt / damage states on vehicles - artist dependencies / must be done by sept 24 for art iteration

| ID | WBS | Task | Duration | Start | Finish | Predecessors | Total slack | Free slack | Constraint | Resources | Work |
| --- | --- | --- | --- | --- | --- | --- | --- | --- | --- | --- | --- |
| 1402 | 3.6.48 | driving engine: steep terrain handling - | 1d? | 2002-09-25 | 2002-09-26 | 1401 | 222.88d | 0d |  | Greg Mayer | 8h |
| 1403 | 3.6.49 | death volume handling for car | 1d? | 2002-09-26 | 2002-09-27 | 1402 | 222.88d | 0d |  | Greg Mayer | 8h |
| 1404 | 3.6.50 | car auto reset | 1d? | 2002-09-27 | 2002-09-30 | 1403 | 222.88d | 0d |  | Greg Mayer | 8h |
| 1405 | 3.6.51 | car reset to nearest reset point | 1d? | 2002-09-30 | 2002-10-01 | 1404 | 222.88d | 0d |  | Greg Mayer | 8h |
| 1406 | 3.6.52 | car moves correctly on moving platforms | 1d? | 2002-10-01 | 2002-10-02 | 1405 | 222.88d | 0d |  | Greg Mayer | 8h |
| 1407 | 3.6.53 | vehicle handling improvements | 1d? | 2002-10-02 | 2002-10-03 | 1406 | 222.88d | 0d |  | Greg Mayer | 8h |
| 1408 | 3.6.54 | Environmental mapping on cars | 1d? | 2002-10-03 | 2002-10-04 | 1407 | 222.88d | 0d | start no earlier than 2002-09-16 | Joel DeYoung | 8h |
| 1409 | 3.6.55 | Particle tranlusency | 1d? | 2002-10-04 | 2002-10-07 | 1408 | 222.88d | 0d |  | Joel DeYoung | 8h |
| 1410 | 3.6.56 | Better FMVs for Xbox and GC | 1d? | 2002-10-07 | 2002-10-08 | 1409 | 222.88d | 0d |  | Joel DeYoung | 8h |
| 1411 | 3.6.57 | Create final logo FMVs for all 6 platforms | 1d? | 2002-10-08 | 2002-10-09 | 1410 | 222.88d | 0d |  | Joel DeYoung | 8h |
| 1412 | 3.6.58 | FMVs playing in game (in between missions) | 1d? | 2002-10-09 | 2002-10-10 | 1411 | 222.88d | 0d |  | Joel DeYoung | 8h |
| 1413 | 3.6.59 | Xbox ripping | 1d? | 2002-10-10 | 2002-10-11 | 1412 | 222.88d |  |  | Joel DeYoung | 8h |
| 1414 | 3.6.60 | All breakable objects added to the game | 1d? | 2002-09-16 | 2002-09-17 |  | 235.88d | 0d | start no earlier than 2002-09-16 | Michael Riegger | 8h |
| 1415 | 3.6.61 | All particle effects added to the game | 1d? | 2002-09-17 | 2002-09-18 | 1414 | 235.88d | 0d |  | Michael Riegger | 8h |
| 1416 | 3.6.62 | All collectible effects added to the game | 1d? | 2002-09-18 | 2002-09-19 | 1415 | 235.88d | 0d |  | Michael Riegger | 8h |
| 1417 | 3.6.63 | Shadows added for all characters and cars | 1d? | 2002-09-19 | 2002-09-20 | 1416 | 235.88d | 0d |  | Michael Riegger | 8h |
| 1418 | 3.6.64 | Water effects working in game | 1d? | 2002-09-20 | 2002-09-23 | 1417 | 235.88d | 0d |  | Michael Riegger | 8h |
| 1419 | 3.6.65 | Skid marks on terrain | 1d? | 2002-09-23 | 2002-09-24 | 1418 | 235.88d |  |  | Michael Riegger | 8h |
| 1420 | 3.6.66 | Screen for selecting a mission from F/E | 1d? | 2002-09-16 | 2002-09-17 |  | 235.88d | 0d | start no earlier than 2002-09-16 | Tony Chu | 8h |
| 1421 | 3.6.67 | Screen for selecting a mission from pause menu | 1d? | 2002-09-17 | 2002-09-18 | 1420 | 235.88d | 0d |  | Tony Chu | 8h |
| 1422 | 3.6.68 | Mission presentation HUD art iteration ongoing task | 1d? | 2002-09-18 | 2002-09-19 | 1421 | 235.88d | 0d |  | Tony Chu | 8h |
| 1423 | 3.6.69 | Can load/save games on memory card | 1d? | 2002-09-19 | 2002-09-20 | 1422 | 235.88d | 0d |  | Tony Chu | 8h |
| 1424 | 3.6.70 | Memory card screens | 1d? | 2002-09-20 | 2002-09-23 | 1423 | 235.88d | 0d |  | Tony Chu | 8h |
| 1425 | 3.6.71 | Cheat input system | 1d? | 2002-09-23 | 2002-09-24 | 1424 | 235.88d |  |  | Tony Chu | 8h |
| 1426 | 3.6.72 | Hailing system: presentation | 1d? | 2002-09-16 | 2002-09-17 |  | 230.88d | 0d | start no earlier than 2002-09-16 | Travis Brown-John | 8h |
| 1427 | 3.6.73 | Proper car disappearance handling when hailing a car | 1d? | 2002-09-17 | 2002-09-18 | 1426 | 230.88d | 0d |  | Travis Brown-John | 8h |
| 1428 | 3.6.74 | Handling of player hit by car | 1d? | 2002-09-18 | 2002-09-19 | 1427 | 230.88d | 0d |  | Travis Brown-John | 8h |
| 1429 | 3.6.75 | Car door opens and closes properly on character entry/exit | 1d | 2002-09-19 | 2002-09-20 | 1428 | 230.88d | 0d |  | Travis Brown-John | 8h |
| 1430 | 3.6.76 | All collectible objects rendering correctly | 1d? | 2002-09-20 | 2002-09-23 | 1429 | 230.88d | 0d |  | Travis Brown-John | 8h |
| 1431 | 3.6.77 | All collectible functionality working (food boosts, cards reflected in F/E, etc) | 1d? | 2002-09-23 | 2002-09-24 | 1430 | 230.88d | 0d |  | Travis Brown-John | 8h |
| 1432 | 3.6.78 | Death volume handling for on foot | 1d? | 2002-09-24 | 2002-09-25 | 1431 | 230.88d | 0d |  | Travis Brown-John | 8h |
| 1433 | 3.6.79 | Boss missions implemented | 1d? | 2002-09-25 | 2002-09-26 | 1432 | 230.88d | 0d |  | Travis Brown-John | 8h |
| 1434 | 3.6.80 | In car character animations | 1d? | 2002-09-26 | 2002-09-27 | 1433 | 230.88d | 0d |  | Travis Brown-John | 8h |
| 1435 | 3.6.81 | Skinned collectibles working (i.e. monkeys) | 1d? | 2002-09-27 | 2002-09-30 | 1434 | 230.88d | 0d |  | Travis Brown-John | 8h |
| 1436 | 3.6.82 | On foot gameplay ongoing task | 1d? | 2002-09-30 | 2002-10-01 | 1435 | 230.88d |  |  | Travis Brown-John | 8h |

Notes:
- 1408: (Must be compelted by September 17 for art iteration)

| ID | WBS | Task | Type | Duration | Start | Finish | Predecessors | Complete | Remaining | Total slack | Free slack | Constraint | Resources | Work | Actual work |
| --- | --- | --- | --- | --- | --- | --- | --- | --- | --- | --- | --- | --- | --- | --- | --- |
| 1437 | 3.7 | **Milestone 13 (Nov 15th)** |  | 167.75d? | 2002-04-16 A | 2002-12-05 |  | 58% | 70.38d? | 183.12d |  |  |  | 572.32h | 264.44h |
| 1438 | 3.7.1 | Use pause and unpause function. (when resuming the game after pausing it, the music gets re-started as opposed to resume, those function work fine iwhen I test them in Radmusic) | milestone | 0d | 2002-10-16 A | 2002-10-16 A |  | 100% |  |  |  | start no earlier than 2002-10-16 | Darren Esau [13%] |  |  |
| 1439 | 3.7.2 | Engine sfx keeps playing when game is paused |  | 1d? | 2002-10-16 A | 2002-10-16 A | 1438 | 100% |  |  |  |  | Darren Esau [80%] | 6.4h | 6.4h |
| 1440 | 3.7.3 | Mission 1 should use Main part of song ( not the Chase segment of song eventhough it is a chase) |  | 1d? | 2002-10-17 | 2002-10-17 | 1439 |  |  | 216d | 0d |  | Darren Esau [80%] | 6.4h |  |
| 1441 | 3.7.4 | Getting out of Simpsons House trigger win mission song (happend in Mission 2) |  | 1d? | 2002-10-18 | 2002-10-18 | 1440 |  |  | 216d | 0d |  | Darren Esau [80%] | 6.4h |  |
| 1442 | 3.7.5 | Pause music during dialog mission sequences ( letter box sequence) |  | 1d? | 2002-10-21 | 2002-10-21 | 1441 |  |  | 216d |  |  | Darren Esau [80%] | 6.4h |  |
| 1443 | 3.7.6 | find the bug with collision sfx not playing (too low intensities get sent out maybe?) |  | 1d? | 2002-10-25 A | 2002-10-25 A | 1442 | 100% |  |  |  |  | Darren Esau [80%] | 6.4h | 6.4h |
| 1444 | 3.7.7 | Fix footsteps volume (can't adjust volume, control don't respond) |  | 1d? | 2002-10-21 A | 2002-10-21 A | 1443 | 100% |  |  |  |  | Darren Esau [80%] | 6.4h | 6.4h |
| 1445 | 3.7.8 | add 10 seconds to go event for Power Plant |  | 1d? | 2002-10-22 | 2002-10-22 | 1444 |  |  | 214d | 0d |  | Darren Esau [80%] | 6.4h |  |
| 1446 | 3.7.9 | add Sunday Drive game state for in between mission |  | 1d? | 2002-10-23 | 2002-10-23 | 1445 |  |  | 214d |  |  | Darren Esau [80%] | 6.4h |  |
| 1447 | 3.7.10 | add switch sfx call for Power Plant |  | 2d | 2002-10-31 A | 2002-11-01 A | 1446 | 100% |  |  |  |  | Darren Esau [40%] | 6.4h | 6.4h |
| 1448 | 3.7.11 | add Power Plant platform sfx (as positional sound) |  | 1d? | 2002-11-04 A | 2002-11-04 | 1447 | 25% | 0.75d? | 206d |  |  | Darren Esau [80%] | 6.4h | 1.6h |
| 1449 | 3.7.12 | add a separate Ambience volume knob control (should also be routed thru the master volume) |  | 1.88d? | 2002-10-31 A | 2002-11-01 A | 1448 | 100% |  |  |  |  | Darren Esau [42.7%] | 6.4h | 6.4h |
| 1450 | 3.7.13 | add reverb support ( turn on reverb in power plant) |  | 7.03d? | 2002-10-28 A | 2002-11-06 | 1449 | 12% | 6.17d? | 204.97d |  |  | Darren Esau [80%] | 6.4h | 5.44h |
| 1451 | 3.7.14 | Complete debug feature where the object names are displayed |  | 4.88d? | 2002-11-04 A | 2002-11-08 A | 1450 | 100% |  |  |  |  | Darren Esau [16.4%] | 6.4h | 6.4h |
| 1452 | 3.7.18 | Audio for gag NISes |  | 10.28d? | 2002-11-04 A | 2002-11-18 | 1451 | 6% | 9.68d? | 195.72d | 0d | start no earlier than 2002-10-16 | Darren Esau [80%] | 6.4h | 3.84h |
| 1453 | 3.7.20 | Dialog system: eye blinking and mouth flapping |  | 1d? | 2002-11-18 | 2002-11-19 | 1452 |  |  | 195.72d |  |  | Darren Esau [80%] | 6.4h |  |
| 1454 | 3.7.21 | Interior sound effects - Final pass |  | 6d? | 2002-11-04 A | 2002-11-11 A | 1453 | 100% |  |  |  |  | Darren Esau [40%] | 6.4h | 6.4h |
| 1455 | 3.7.23 | ATG integration |  | 1d? | 2002-10-16 A | 2002-10-17 A |  | 100% |  |  |  | start no earlier than 2002-10-16 | Cary Brisebois [80%] | 6.4h | 6.4h |
| 1456 | 3.7.1 | Death volume support in the world builder tool (complete by October 25) |  | 6.88d | 2002-10-17 A | 2002-10-25 A | 1455 | 100% |  |  |  | start no earlier than 2002-10-16 | Cary Brisebois [80%] |  |  |
| 1457 | 3.7.3 | Camera collisions: on foot |  | 6.85d? | 2002-10-29 A | 2002-11-06 | 1456 | 90% | 0.69d? | 203.47d | 0d |  | Cary Brisebois [16.7%] | 6.4h | 6.12h |
| 1458 | 3.7.4 | Camera collisions: driving |  | 1d? | 2002-11-06 A | 2002-11-07 | 1457 | 45% | 0.55d? | 203.03d |  |  | Cary Brisebois [44%] | 3.52h | 1.58h |
| 1459 | 3.7.6 | Camera shake |  | 1d? | 2002-10-31 A | 2002-11-01 A | 1458 | 100% |  |  |  |  | Cary Brisebois [80%] | 6.4h | 6.4h |
| 1460 | 3.7.7 | Interior rail camera improvements |  | 1d? | 2002-11-01 A | 2002-11-04 A | 1459 | 100% |  |  |  |  | Cary Brisebois [80%] | 6.4h | 6.4h |
| 1461 | 3.7.8 | Improved camera setup for mission conversations |  | 4.88d? | 2002-11-04 A | 2002-11-08 A | 1460 | 100% |  |  |  |  | Cary Brisebois [16.4%] | 6.4h | 6.4h |
| 1462 | 3.7.9 | Help getting new level art in the game |  | 1d? | 2002-11-11 A | 2002-11-11 A | 1461 | 100% |  |  |  |  | Cary Brisebois [80%] | 6.4h | 6.4h |
| 1463 | 3.7.10 | Help getting new missions in the game |  | 1d? | 2002-11-12 A | 2002-11-12 A | 1462 | 100% |  |  |  |  | Cary Brisebois [80%] | 6.4h | 6.4h |
| 1464 | 3.7.11 | Improved command line parameters for artists to start in various world locations |  | 6.88d? | 2002-11-07 A | 2002-11-15 A | 1463 | 100% |  |  |  |  | Cary Brisebois [21.3%] | 6.4h | 6.4h |
| 1465 | 3.7.12 | Mission icon scaling based on distance |  | 1d? | 2002-10-16 | 2002-10-17 |  |  |  | 218.88d |  | start no earlier than 2002-10-16 | Chuck Chow [80%] | 6.4h |  |
| 1466 | 3.7.13 | Help getting new level art in the game |  | 1d? | 2002-10-17 A | 2002-10-18 A | 1465 | 100% |  |  |  |  | Chuck Chow [80%] | 6.4h | 6.4h |
| 1467 | 3.7.15 | Missions: Work with mission team to make sure they work |  | 1d? | 2002-10-18 A | 2002-10-21 | 1466 | 50% | 0.5d? | 216.38d | 0d |  | Chuck Chow [80%] | 6.4h | 3.2h |
| 1468 | 3.7.16 | Artist pipeline support |  | 1d? | 2002-10-21 A | 2002-10-22 | 1467 | 50% | 0.5d? | 215.88d |  |  | Chuck Chow [80%] | 6.4h | 3.2h |
| 1469 | 3.7.17 | Artist memory budget enforcement |  | 1d? | 2002-10-22 A | 2002-10-23 A | 1468 | 100% |  |  |  |  | Chuck Chow [80%] | 6.4h | 6.4h |
| 1470 | 3.7.39 | Sound properties database adjustment for Marc |  | 1d? | 2002-10-23 | 2002-10-24 | 1469 |  |  | 213.88d |  |  | Chuck Chow [80%] | 6.4h |  |
| 1471 | 3.7.31 | Dynamic loading speed improvements |  | 1d? | 2002-04-16 A | 2002-04-17 A |  | 100% |  |  |  |  | Devin Murname [80%] | 6.4h | 6.4h |
| 1472 | 3.7.32 | General dynamic loading ongoing tasks |  | 1d? | 2002-04-17 | 2002-04-18 | 1471 |  |  | 348.88d |  |  | Devin Murname [80%] | 6.4h |  |
| 1473 | 3.7.33 | Z Order |  | 1d? | 2002-04-18 A | 2002-04-19 A | 1472 | 100% |  |  |  |  | Devin Murname [80%] | 6.4h | 6.4h |
| 1474 | 3.7.36 | General performance optimizations |  | 1d? | 2002-04-19 | 2002-04-22 | 1473 |  |  | 346.88d |  |  | Devin Murname [80%] | 6.4h |  |
| 1475 | 3.7.53 | ATG 1.6 integration |  | 1d? | 2002-11-18 | 2002-11-18 | 1464 |  |  | 196d |  |  | Cary Brisebois [80%] | 6.4h |  |
| 1476 | 3.7.37 | Mission vehicle AI improvements |  | 1d? | 2002-10-16 | 2002-10-17 |  |  |  | 215d | 0d | start no earlier than 2002-10-16 | Dusit Eakkachaichanvet [80%] | 6.4h |  |
| 1477 | 3.7.38 | Pedestrians diving out of the way |  | 1.88d? | 2002-10-17 | 2002-10-18 | 1476 |  |  | 215d | 0d |  | Dusit Eakkachaichanvet [42.7%] | 6.4h |  |
| 1478 | 3.7.39 | Pedestrians hit by car response |  | 1d? | 2002-10-21 | 2002-10-21 | 1477 |  |  | 215d | 0d |  | Dusit Eakkachaichanvet [80%] | 6.4h |  |
| 1479 | 6.7.42 | Randomize loading of generic pedestrians from pedestrian library being developed by Slava |  | 1d? | 2002-10-22 | 2002-10-22 | 1478 |  |  | 215d |  |  | Dusit Eakkachaichanvet [80%] | 6.4h |  |
| 1480 | 3.7.40 | Support for camera collisions |  | 2.88d? | 2002-10-16 A | 2002-10-18 |  | 80% | 0.57d? | 213.06d | 0d | start no earlier than 2002-10-16 | Greg Mayer [27.8%] | 6.4h | 5.12h |
| 1481 | 3.7.41 | Car reset |  | 1d? | 2002-10-21 A | 2002-10-21 | 1480 | 50% | 0.5d? | 212.56d | 0d |  | Greg Mayer [80%] | 6.4h | 3.2h |
| 1482 | 3.7.43 | Skid support |  | 9.75d? | 2002-10-21 A | 2002-11-01 | 1481 | 75% | 2.44d? | 206.12d | 0d |  | Greg Mayer [13.1%] | 6.4h | 5.76h |
| 1483 | 3.7.44 | Death volume handling for car |  | 1d? | 2002-11-01 | 2002-11-04 | 1482 |  |  | 206.12d |  |  | Greg Mayer [80%] | 6.4h |  |
| 1484 | 3.7.45 | Dynamic object removal from DSG |  | 2.88d? | 2002-10-23 A | 2002-10-25 A | 1483 | 100% |  |  |  |  | Greg Mayer [27.8%] | 6.4h | 6.4h |
| 1485 | 3.7.46 | Disable character collision while character in the car |  | 1d? | 2002-10-28 | 2002-10-28 | 1484 |  |  | 205.5d | 0d |  | Greg Mayer [80%] | 6.4h |  |
| 1486 | 3.7.47 | Rockfords |  | 1d? | 2002-10-29 A | 2002-10-29 | 1485 | 90% | 0.1d? | 204.6d | 0d |  | Greg Mayer [80%] | 6.4h | 5.76h |
| 1487 | 3.7.48 | Speed bursts |  | 1d? | 2002-10-30 A | 2002-10-30 | 1486 | 40% | 0.6d? | 204.2d | 1d |  | Greg Mayer [80%] | 6.4h | 2.56h |
| 1488 | 3.7.50 | Tunable tipping tendancy |  | 1d? | 2002-11-01 A | 2002-11-01 | 1487 | 20% | 0.8d? | 203d | 0d |  | Greg Mayer [80%] | 6.4h | 1.28h |
| 1489 | 3.7.51 | All vehicles using GroundPlanePool |  | 1d? | 2002-11-04 | 2002-11-04 | 1488 |  |  | 203d | 1d |  | Greg Mayer [80%] | 6.4h |  |
| 1490 | 3.7.69 | Vehicle brake lights |  | 1d? | 2002-11-06 A | 2002-11-06 | 1489 | 20% | 0.8d? | 201.8d | 0d |  | Greg Mayer [80%] | 6.4h | 1.28h |
| 1491 | 3.7.71 | Steep terrain handling |  | 1d? | 2002-11-07 | 2002-11-07 | 1490 |  |  | 201.8d | 0d |  | Greg Mayer [80%] | 6.4h |  |
| 1492 | 3.7.72 | Assist Dusit as necessary |  | 1d? | 2002-11-08 | 2002-11-08 | 1491 |  |  | 201.8d | 1d |  | Greg Mayer [80%] | 6.4h |  |
| 1493 | 3.7.73 | Driving engine ongoing task (all driving engine code changes complete by Nov 8) |  | 1d? | 2002-11-12 A | 2002-11-12 | 1492 | 80% | 0.2d? | 200d |  |  | Greg Mayer [80%] | 6.4h | 5.12h |
| 1494 | 3.7.53 | Terrain type tags in the pipeline, with an interface to access them at runtime |  | 1d? | 2002-10-16 | 2002-10-17 |  |  |  | 214.88d | 0d | start no earlier than 2002-10-16 | James Harrison [80%] | 6.4h |  |
| 1495 | 3.7.54 | Lens flare / corona working |  | 1d? | 2002-10-17 | 2002-10-18 | 1494 |  |  | 214.88d | 0d |  | James Harrison [80%] | 6.4h |  |
| 1496 | 3.7.55 | Blobby shadows added for NPCs, pedestrians, non-player cars |  | 1d? | 2002-10-18 | 2002-10-21 | 1495 |  |  | 214.88d | 0d |  | James Harrison [80%] | 6.4h |  |
| 1497 | 3.7.56 | Memory savings pass |  | 1d? | 2002-10-21 | 2002-10-22 | 1496 |  |  | 214.88d | 0d |  | James Harrison [80%] | 6.4h |  |
| 1498 | 3.7.57 | Ongoing rendering effects task |  | 1d? | 2002-10-22 | 2002-10-23 | 1497 |  |  | 214.88d |  |  | James Harrison [80%] | 6.4h |  |
| 1499 | 3.7.83 | Code complete for playing movies correctly between missions in a level |  | 1d? | 2002-04-16 | 2002-04-17 |  |  |  | 347.88d | 0d |  | Joel DeYoung [50%] | 4h |  |
| 1500 | 3.7.84 | Firewire build ongoing task |  | 1d? | 2002-04-17 | 2002-04-18 | 1499 |  |  | 347.88d | 0d |  | Joel DeYoung [50%] | 4h |  |
| 1501 | 3.7.85 | General debugging ongoing task |  | 1d? | 2002-04-18 | 2002-04-19 | 1500 |  |  | 347.88d |  |  | Joel DeYoung [50%] | 4h |  |
| 1502 | 3.7.62 | Different skid mark types working (using terrain tags from James) |  | 1d? | 2002-04-16 | 2002-04-17 |  |  |  | 349.77d | 0d |  | Michael Riegger [80%] | 6.4h |  |
| 1503 | 3.7.63 | Button press flash effect |  | 1d? | 2002-04-17 A | 2002-04-18 | 1502 | 90% | 0.1d? | 348.88d |  |  | Michael Riegger [80%] | 6.4h | 5.76h |
| 1504 | 3.7.64 | Electricity effect on Frink’s car |  | 1d? | 2002-04-18 A | 2002-04-19 A | 1503 | 100% |  |  |  |  | Michael Riegger [80%] | 6.4h | 6.4h |
| 1505 | 3.7.66 | Nuclear glow bubbles effects |  | 1d? | 2002-04-19 A | 2002-04-22 | 1504 | 90% | 0.1d? | 343.77d | 0d |  | Michael Riegger [80%] | 6.4h | 5.76h |
| 1506 | 3.7.67 | Power coupling electrical effects |  | 1d? | 2002-04-22 A | 2002-04-23 | 1505 | 80% | 0.2d? | 342.98d | 0d |  | Michael Riegger [80%] | 6.4h | 5.12h |

Notes:
- 1437: Milestone 13 Build Features / Art Cutoff: November 8 / CD delivery date: November 15 / ·Level Art / oDowntown and Seaside complete with new track layouts / §All geometry, tracks, and final textures completed / §All collision volumes in place / §All moveable objects in place / §All breakable objects in place / §2 interiors complete for Downtown / §2 placeholder interiors for Seaside / §All interior gags complete for Suburbs and Downtown / §All hailing points (phone booths and bus stops) modeled and placed / §All local world spheres completed / §All collectible cards placed in the level / §All destructible cameras placed in the level / §All death volumes placed in the level / §All lighting and shadow decals complete / oSpecial effects for Suburbs and Downtown complete / ·FMV #2 40% complete / ·FMV #3, #4, #5 animatics complete / ·Damage states for all driver vehicles complete / ·Environmental mapping complete on all vehicles / ·All AI mission vehicles complete / ·All in-game character animations complete / ·All missions for levels 2, 3, 5 and 6 complete and running in game / ·Final rendering of visible collision volumes / ·Camera shake working / ·Camera collisions working / ·Special camera setup for conversations working / ·Death volume reset working, both in car and on foot / ·In car character animations triggering correctly / ·Occlusion volume runtime incorporated into rendering system / ·Pedestrians and NPCs jump out of the way of players car / ·Players car hitting other characters being handled correctly / ·Car door opens and closes correctly for car entry/exit / ·Car reset working / ·Car auto-reset working / ·All driving engine code changes complete / oSpecial code for rockfords / oSpecial code for speed bursts / oOther code changes required by designers / ·Camera collisions implemented for both in and out of car / ·Brake lights on vehicle / ·Sun with glare effects in the game / ·Loading compression working / ·Drivers appearing correctly in all vehicles / ·Object / traffic fade effects implemented / ·Eye blinking and mouth flapping for conversations synchronized with dialog events / ·All Z order problems resolved / ·All performance optimizations to do in anticipation of Performance Analyzer run complete / ·Can play a movie in the middle of a level / ·Code support for in-car character animations complete / ·Blobby shadows implemented and working / ·Code support for water effects completed / ·Electricity effects on Frinks car working correctly / ·Able to save and load games to memory card and Xbox hard drive / ·All sound pipelines in place / ·Audio for generic traffic working / ·Some final interactive music in the game / ·First-pass collision sounds / Placeholder audio for gag NISes working
- 1438: Nov 12: / Here is the recap of what we talked about at the coder meeting. / First and foremost, we must address stability and memory error issues in / the build. / 1. Cary is working to get memory under control on GameCube. / 2. We also need to be looking at the ability to jump to different / missions, abort missions, restart missions, quit to the front end, jump / to missions in different levels, etc, reliably and stably. Nigel and / Devin will look at this area. Help from everyone is welcome on this, as / always. / We are also attempting to get as many planned features into the build as / possible, but these are secondary to both solving the above problems and / to shipping on time without people being here all night on Thursday. / Here is a list of things that are being worked on: / 1. Piping all latest car art / 2. Driving engine code changes / 3. Death volumes / 4. Character dynamic loading / 5. More varied pedestrian models / 6. Dynamic object rest tests / 7. Audio synchronization in conversations / 8. HUD map revisions / 9. Generic harassment vehicles / 10. More and more optimizations / DO NOT check in any work on these if they will put the milestone build / at risk. At the end of the day, these will be nice to get in but can / wait until MS 14 if they will end up sacrificing stability. / The designers are pushing to get all missions from levels 2, 3, 5 and 6 / in the game. They are still on track to have all those scripts / completed and tested by the end of the week. However, in the interest / of the extra work that is often required in debugging these and making / sure they work reliably, we are establishing a cut-off of ***1:00 / Wednesday*** for mission scripts to go in for MS 13. I spoke with Carey / and Joe about this. Each designer is working on a separate level, so / the most likely scenario is that some missions will be working in each / of those 4 levels. / The remainder of the week should be to hone in on making the 6 MS CDs / work with the current art and design content. / Any questions or concerns, please let me know. / Joel
- 1448: week of Nov 11
- 1450: Darren Esau (Tue 12/11/02): Rob Sparks is helping with this, he's currently investigating the missing Xbox reverb
- 1452: Single shots work. / Do they need to loop? Marc to check / code written but not tested / ms 13: many small tasks ie. gear shifting, dialogue, traffic sounds (doppler), reverb (power plant), etc. / Darren Esau (Wed 23/10/02): ==== Published to Microsoft Project server by Wolfgang Hamann on 23/10/02 12:23 PM ===== / code written but not tested / ms 13: many small tasks ie. gear shifting, dialogue, traffic sounds (doppler), reverb (power plant), etc. / Darren Esau (Wed 06/11/02): ==== Published to Microsoft Project server by Wolfgang Hamann on 06/11/02 10:57 AM ===== / code written but not tested / ms 13: many small tasks ie. gear shifting, dialogue, traffic sounds (doppler), reverb (power plant), etc. / Darren Esau (Wed 23/10/02): ==== Published to Microsoft Project server by Wolfgang Hamann on 23/10/02 12:23 PM ===== / code written but not tested / ms 13: many small tasks ie. gear shifting, dialogue, traffic sounds (doppler), reverb (power plant), etc. / Darren Esau (Tue 12/11/02): ==== Published to Microsoft Project server by Wolfgang Hamann on 11/11/02 1:27 PM ===== / Single shots work. / Do they need to loop? Marc to check / code written but not tested / ms 13: many small tasks ie. gear shifting, dialogue, traffic sounds (doppler), reverb (power plant), etc. / Darren Esau (Wed 23/10/02): ==== Published to Microsoft Project server by Wolfgang Hamann on 23/10/02 12:23 PM ===== / code written but not tested / ms 13: many small tasks ie. gear shifting, dialogue, traffic sounds (doppler), reverb (power plant), etc. / Darren Esau (Wed 06/11/02): ==== Published to Microsoft Project server by Wolfgang Hamann on 06/11/02 10:57 AM ===== / code written but not tested / ms 13: many small tasks ie. gear shifting, dialogue, traffic sounds (doppler), reverb (power plant), etc. / Darren Esau (Wed 23/10/02): ==== Published to Microsoft Project server by Wolfgang Hamann on 23/10/02 12:23 PM ===== / code written but not tested / ms 13: many small tasks ie. gear shifting, dialogue
- 1454: what is playing in the interiors? / Darren Esau (Wed 23/10/02): ==== Published to Microsoft Project server by Wolfgang Hamann on 23/10/02 12:23 PM ===== / Darren Esau (Tue 12/11/02): ==== Published to Microsoft Project server by Wolfgang Hamann on 11/11/02 1:27 PM ===== / what is playing in the interiors? / Darren Esau (Wed 23/10/02): ==== Published to Microsoft Project server by Wolfgang Hamann on 23/10/02 12:23 PM =====
- 1465: Chuck Chow (Thu 07/11/02): Which Icon are you talking about?? / Chuck Chow (Tue 12/11/02): ==== Published to Microsoft Project server by Wolfgang Hamann on 12/11/02 11:24 AM ===== / Chuck Chow (Thu 07/11/02): Which Icon are you talking about??
- 1466: Chuck Chow (Thu 07/11/02): On Going N/A / Chuck Chow (Tue 12/11/02): ==== Published to Microsoft Project server by Wolfgang Hamann on 12/11/02 11:24 AM ===== / Chuck Chow (Thu 07/11/02): On Going N/A
- 1467: Chuck Chow (Thu 07/11/02): On Going N/A / Chuck Chow (Tue 12/11/02): ==== Published to Microsoft Project server by Wolfgang Hamann on 12/11/02 11:24 AM ===== / Chuck Chow (Thu 07/11/02): On Going N/A
- 1468: Chuck Chow (Thu 07/11/02): On Going N/A / Chuck Chow (Tue 12/11/02): ==== Published to Microsoft Project server by Wolfgang Hamann on 12/11/02 11:24 AM ===== / Chuck Chow (Thu 07/11/02): On Going N/A
- 1471: Devin Murname (Tue 12/11/02): done
- 1472: Devin Murname (Thu 07/11/02): o/g / Devin Murname (Tue 12/11/02): o/g
- 1473: Devin Murname (Tue 12/11/02): done
- 1474: Devin Murname (Thu 07/11/02): o/g / Devin Murname (Tue 12/11/02): o/g
- 1475: Devin Murname (Thu 07/11/02): Cary / Cary Brisebois (Tue 12/11/02): ==== Published to Microsoft Project server by Wolfgang Hamann on 11/11/02 1:27 PM ===== / Devin Murname (Thu 07/11/02): Cary
- 1479: task added Nov 6th. / Dusit Eakkachaichanvet (Wed 06/11/02): ==== Published to Microsoft Project server by Wolfgang Hamann on 06/11/02 10:14 AM ===== / task added Nov 6th.
- 1480: must be done by Sept 17th for designer iteration / Greg Mayer (Tue 29/10/02): ==== Published to Microsoft Project server by Wolfgang Hamann on 29/10/02 10:20 AM ===== / must be done by Sept 17th for designer iteration
- 1481: depot/users/greg/tasks.txt / damage states on vehicles - artist dependencies / must be done by sept 24 for art iteration / Greg Mayer (Tue 29/10/02): ==== Published to Microsoft Project server by Wolfgang Hamann on 29/10/02 10:20 AM ===== / //depot/users/greg/tasks.txt / damage states on vehicles - artist dependencies / must be done by sept 24 for art iteration
- 1494: he is on vacation for 2 weeks first of November / James Harrison (Tue 29/10/02): ==== Published to Microsoft Project server by Wolfgang Hamann on 29/10/02 10:20 AM ===== / he is on vacation for 2 weeks first of November
- 1502: Michael Riegger (Tue 12/11/02): Terrain typing not available at present
- 1503: Michael Riegger (Tue 12/11/02): Should just be a matter of an artist creating them
- 1504: Michael Riegger (Tue 12/11/02): Done
- 1505: Michael Riegger (Tue 12/11/02): Glow working perfectly on xbox. Rotated 90 degrees on PS2. Kevin Voon is looking into it. Aryan is still planning to redo effect
- 1506: Michael Riegger (Tue 12/11/02): Tied to world animation effects. Code should be done by milestone. Art may not be ready

| ID | WBS | Task | Duration | Start | Finish | Predecessors | Complete | Remaining | Total slack | Free slack | Constraint | Resources | Work | Actual work |
| --- | --- | --- | --- | --- | --- | --- | --- | --- | --- | --- | --- | --- | --- | --- |
| 1507 | 3.7.68 | Power coupling destroy effects | 1d? | 2002-04-23 A | 2002-04-24 | 1506 | 80% | 0.2d? | 342.18d | 0d |  | Michael Riegger [80%] | 6.4h | 5.12h |
| 1508 | 3.7.69 | World animation effects | 1d? | 2002-04-24 A | 2002-04-25 | 1507 | 80% | 0.2d? | 341.38d | 0d |  | Michael Riegger [80%] | 6.4h | 5.12h |
| 1509 | 3.7.95 | Effects iteration ongoing task | 1d? | 2002-04-25 A | 2002-04-26 | 1508 | 60% | 0.4d? | 340.77d | 0d |  | Michael Riegger [80%] | 6.4h | 3.84h |
| 1510 | 3.7.96 | Presentation manager changes required for new presentation elements | 1d? | 2002-04-26 | 2002-04-29 | 1509 |  |  | 340.77d | 0d |  | Michael Riegger [80%] | 6.4h |  |
| 1511 | 3.7.92 | Code support for all water effects complete | 1d? | 2002-04-29 A | 2002-04-30 | 1510 | 40% | 0.6d? | 340.38d | 0d |  | Michael Riegger [80%] | 6.4h | 2.56h |
| 1512 | 3.7.93 | Breaking camera effects | 1d? | 2002-04-30 A | 2002-05-01 | 1511 | 50% | 0.5d? | 339.88d |  |  | Michael Riegger [80%] | 6.4h | 3.2h |
| 1513 | 3.7.70 | Car door opens and closes properly on character entry/exit | 1d? | 2002-10-16 A | 2002-10-17 |  | 80% | 0.2d? | 218.88d |  | start no earlier than 2002-10-16 | Nigel Brooke [80%] | 6.4h | 5.12h |
| 1514 | 3.7.71 | Support for leaving the car door open if running on exit (request from Joe M.) | 1.88d? | 2002-10-17 A | 2002-10-18 A | 1513 | 100% |  |  |  |  | Nigel Brooke [42.7%] | 6.4h | 6.4h |
| 1515 | 3.7.72 | Death volume handling for on foot | 1d? | 2002-10-21 | 2002-10-21 | 1514 |  |  | 216d |  |  | Nigel Brooke [80%] | 6.4h |  |
| 1516 | 3.7.73 | In car character animations | 4.88d? | 2002-10-21 A | 2002-10-25 A | 1515 | 100% |  |  |  |  | Nigel Brooke [16.4%] | 6.4h | 6.4h |
| 1517 | 3.7.74 | Character collision optimizations | 1d? | 2002-10-28 | 2002-10-28 | 1516 |  |  | 204.8d | 0d |  | Nigel Brooke [80%] | 6.4h |  |
| 1518 | 3.7.75 | Dynamic object rest tests (includes vehicles) | 1d? | 2002-10-29 | 2002-10-29 | 1517 |  |  | 204.8d | 0d |  | Nigel Brooke [80%] | 6.4h |  |
| 1519 | 3.7.76 | Fix bugs related to too many fence pieces being submitted | 1d? | 2002-10-30 | 2002-10-30 | 1518 |  |  | 204.8d | 0d |  | Nigel Brooke [80%] | 6.4h |  |
| 1520 | 3.7.104 | World physics and collisions ongoing task | 1d? | 2002-10-31 | 2002-10-31 | 1519 |  |  | 204.8d | 0d |  | Nigel Brooke [80%] | 6.4h |  |
| 1521 | 3.7.105 | On foot gameplay ongoing task | 1d? | 2002-11-01 | 2002-11-01 | 1520 |  |  | 204.8d | 0d |  | Nigel Brooke [80%] | 6.4h |  |
| 1522 | 3.7.103 | Drivers appearing correctly in all vehicles | 1d? | 2002-11-04 A | 2002-11-04 | 1521 | 80% | 0.2d? | 204d | 0d |  | Nigel Brooke [80%] | 6.4h | 5.12h |
| 1523 | 6.7.86 | Dynamic loading of characters | 2d | 2002-11-05 | 2002-11-06 | 1522 |  |  | 204d |  |  | Nigel Brooke [80%] | 12.8h |  |
| 1524 | 6.7.87 | Double jump | 1d | 2002-11-07 A | 2002-11-07 A | 1523 | 100% |  |  |  |  | Nigel Brooke [80%] | 6.4h | 6.4h |
| 1525 | 3.7.77 | Can load/save games on memory card | 1d? | 2002-10-16 A | 2002-10-17 |  | 50% | 0.5d? | 212.16d | 0d | start no earlier than 2002-10-16 | Tony Chu [80%] | 6.4h | 3.2h |
| 1526 | 3.7.78 | Memory card screens | 1d? | 2002-10-17 A | 2002-10-18 | 1525 | 50% | 0.5d? | 211.66d | 0d |  | Tony Chu [80%] | 6.4h | 3.2h |
| 1527 | 3.7.81 | HUD changes required for bonus missions and secondary mission objectives | 1d? | 2002-10-18 | 2002-10-21 | 1526 |  |  | 211.66d | 0d |  | Tony Chu [80%] | 6.4h |  |
| 1528 | 3.7.82 | All Scrooby work required by designers for presentation iteration | 1d? | 2002-10-21 A | 2002-10-22 | 1527 | 50% | 0.5d? | 211.16d | 13.88d |  | Tony Chu [80%] | 6.4h | 3.2h |
| 1529 | 3.7.83 | Integration of stylized HUD map | 18.88d? | 2002-11-11 A | 2002-12-05 | 1528 | 75% | 4.72d? | 183.12d |  |  | Tony Chu [12%] | 6.4h | 5.86h |
| 1530 | 3.8 | **Milestone 14 (Dec 15th)** | 18d? | 2002-11-18 A | 2002-12-11 |  | 26% | 13.35d? | 179d |  |  |  | 907.6h | 169.36h |
| 1531 | 3.8.1 | Mission manager support for secondary mission objectives (bonus objectives) | 1d | 2002-11-18 | 2002-11-19 |  |  |  | 195.88d |  | start no earlier than 2002-11-18 | Cary Brisebois | 8h |  |
| 1532 | 3.8.2 | Mission manager support for bonus missions | 4.88d? | 2002-11-18 A | 2002-11-22 A | 1531 | 100% |  |  |  | start no earlier than 2002-11-18 | Cary Brisebois [20.5%] | 8h | 8h |
| 1533 | 3.8.3 | GameCube accessories work (steering wheels, wireless controller) | 9.75d? | 2002-11-18 A | 2002-11-29 | 1532 | 70% | 2.92d? | 170.78d | 0d | start no earlier than 2002-11-18 | Cary Brisebois [10.3%] | 8h | 5.6h |
| 1534 | 3.8.4 | PS2 steering wheel works | 10.05d? | 2002-11-18 A | 2002-12-02 | 1533 | 7% | 9.35d? | 179.82d | 0d | start no earlier than 2002-11-18 | Cary Brisebois | 8h | 5.6h |
| 1535 | 3.8.5 | Controller rumble | 1d? | 2002-12-02 | 2002-12-03 | 1534 |  |  | 179.82d | 0d | start no earlier than 2002-11-18 | Cary Brisebois | 8h |  |
| 1536 | 3.8.6 | Terrain specific controller rumble | 1d? | 2002-12-03 | 2002-12-04 | 1535 |  |  | 179.82d | 0d | start no earlier than 2002-11-18 | Cary Brisebois | 8h |  |
| 1537 | 3.8.7 | Address problematic camera areas in the world | 1d? | 2002-12-04 | 2002-12-05 | 1536 |  |  | 179.82d | 0d | start no earlier than 2002-11-18 | Cary Brisebois | 8h |  |
| 1538 | 6.8.8 | Speed burst cam | 1d? | 2002-12-05 | 2002-12-06 | 1537 |  |  | 179.82d | 0.82d | start no earlier than 2002-11-27 | Cary Brisebois | 8h |  |
| 1539 | 6.8.9 | Task 1 | 1d? | 2002-12-09 | 2002-12-09 | 1538 |  |  | 179d | 0d | start no earlier than 2002-12-09 | Cary Brisebois [80%] | 6.4h |  |
| 1540 | 6.8.10 | Task 2 | 1d? | 2002-12-10 | 2002-12-10 | 1539 |  |  | 179d | 0d | start no earlier than 2002-11-27 | Cary Brisebois [80%] | 6.4h |  |
| 1541 | 6.8.11 | Task 3 | 1d? | 2002-12-11 | 2002-12-11 | 1540 |  |  | 179d |  | start no earlier than 2002-11-27 | Cary Brisebois [80%] | 6.4h |  |
| 1542 | 3.8.12 | Artist pipeline support | 1d? | 2002-11-18 | 2002-11-19 |  |  |  | 190.88d | 0d | start no earlier than 2002-11-18 | Chuck Chow | 8h |  |
| 1543 | 3.8.13 | Artist memory budget enforcement | 1d? | 2002-11-19 | 2002-11-20 | 1542 |  |  | 190.88d | 0d | start no earlier than 2002-11-18 | Chuck Chow | 8h |  |
| 1544 | 3.8.14 | Help getting new level art in the game | 1d? | 2002-11-20 | 2002-11-21 | 1543 |  |  | 190.88d | 0d | start no earlier than 2002-11-18 | Chuck Chow | 8h |  |
| 1545 | 3.8.15 | Help getting new missions in the game | 1d? | 2002-11-21 | 2002-11-22 | 1544 |  |  | 190.88d | 2.88d | start no earlier than 2002-11-18 | Chuck Chow | 8h |  |
| 1546 | 6.8.16 | Ensure all reward assets are in the game (character skins, bonus vehicles, etc.) | 1d? | 2002-11-27 | 2002-11-27 | 1545 |  |  | 188d | 0d | start no earlier than 2002-11-27 | Chuck Chow [80%] | 6.4h |  |
| 1547 | 6.8.17 | Ensure all Halloween specific functionality gets in the game | 1d? | 2002-11-28 | 2002-11-28 | 1546 |  |  | 188d |  | start no earlier than 2002-11-27 | Chuck Chow [80%] | 6.4h |  |
| 1548 | 6.8.18 | Task 1 | 1d? | 2002-11-27 | 2002-11-27 |  |  |  | 189d |  | start no earlier than 2002-11-27 | Chuck Chow [80%] | 6.4h |  |
| 1549 | 6.8.19 | Task 2 | 1d? | 2002-12-09 | 2002-12-09 |  |  |  | 181d |  | start no earlier than 2002-12-09 | Chuck Chow [80%] | 6.4h |  |
| 1550 | 6.8.20 | Task 3 | 1d? | 2002-12-09 | 2002-12-09 |  |  |  | 181d |  | start no earlier than 2002-12-09 | Chuck Chow [80%] | 6.4h |  |
| 1551 | 3.8.18 | Terrain specific sound effects working | 1d? | 2002-11-18 | 2002-11-19 |  |  |  | 194.88d | 0d | start no earlier than 2002-11-18 | Darren Esau | 8h |  |
| 1552 | 3.8.20 | PS2 mipmap tuning | 1d? | 2002-11-19 | 2002-11-20 | 1551 |  |  | 194.88d |  | start no earlier than 2002-11-18 | Darren Esau | 8h |  |
| 1553 | 3.8.21 | PS2 performance analysis and optimization (including Sony PA run) | 1d? | 2002-11-20 A | 2002-11-21 A | 1552 | 100% |  |  |  | start no earlier than 2002-11-18 | Darren Esau | 8h | 8h |
| 1554 | 3.8.22 | Positional sounds | 1d? | 2002-11-21 | 2002-11-22 | 1553 |  |  | 191.88d | 0d | start no earlier than 2002-11-18 | Darren Esau | 8h |  |
| 1555 | 6.8.25 | Sounds attached to moving objects | 1d? | 2002-11-22 | 2002-11-25 | 1554 |  |  | 191.88d |  | start no earlier than 2002-11-18 | Darren Esau | 8h |  |
| 1556 | 3.8.24 | Ambient sound triggers | 1d? | 2002-11-18 A | 2002-11-19 A | 1555 | 100% |  |  |  | start no earlier than 2002-11-18 | Darren Esau | 8h | 8h |
| 1557 | 3.8.25 | Finalize car engine sound code | 3d | 2002-11-18 A | 2002-11-21 | 1556 |  | 3d | 180.07d | 0d | start no earlier than 2002-11-20 | Darren Esau [300%] |  |  |
| 1558 | 6.8.28 | Reverb on all platforms - Gamecube | 3.2d? | 2002-11-18 A | 2002-11-21 | 1557 | 31% | 2.2d? | 182.07d | 0d | start no earlier than 2002-11-18 | Darren Esau | 8h | 8h |
| 1559 | 6.8.29 | Switch to different music in interiors | 1d? | 2002-11-21 A | 2002-11-22 | 1558 | 90% | 0.1d? | 181.18d | 0d | start no earlier than 2002-11-18 | Darren Esau | 8h | 7.2h |
| 1560 | 6.8.30 | Audio ongoing tasks | 1d? | 2002-11-22 | 2002-11-25 | 1559 |  |  | 181.18d | 0d | start no earlier than 2002-11-18 | Darren Esau | 8h |  |
| 1561 | 6.8.31 | New vehicle based audio events - Dialogue | 7d | 2002-11-18 A | 2002-11-27 | 1560 | 10% | 6.3d | 185.68d | 0d | start no earlier than 2002-11-25 | Darren Esau | 16h | 5.6h |
| 1562 | 6.8.32 | Generic Traffic Audio | 1d? | 2002-11-27 | 2002-11-28 | 1561 |  |  | 185.68d | 0d | start no earlier than 2002-11-18 | Darren Esau | 8h |  |
| 1563 | 6.8.33 | Loading issues - sound | 9.6d | 2002-11-18 A | 2002-11-29 | 1562 | 67% | 3.2d | 187.28d |  | start no earlier than 2002-11-20 | Darren Esau [80%] | 51.2h | 40.96h |
| 1564 | 6.8.34 | Task 1 | 1d? | 2002-11-27 | 2002-11-27 |  |  |  | 189d |  | start no earlier than 2002-11-27 | Darren Esau [80%] | 6.4h |  |
| 1565 | 6.8.35 | Task 2 | 1d? | 2002-11-27 | 2002-11-27 |  |  |  | 189d |  | start no earlier than 2002-11-27 | Darren Esau [80%] | 6.4h |  |
| 1566 | 6.8.36 | Task 3 | 1d? | 2002-11-27 | 2002-11-27 |  |  |  | 189d |  | start no earlier than 2002-11-27 | Darren Esau [80%] | 6.4h |  |
| 1567 | 3.8.30 | Incorporation of P3D tool to auto-optimize meshes | 1d? | 2002-11-18 | 2002-11-19 |  |  |  | 195.88d |  | start no earlier than 2002-11-18 | Devin Murname | 8h |  |
| 1568 | 6.8.38 | Offline DSG setup for all object types | 1d? | 2002-11-18 | 2002-11-19 |  |  |  | 195.88d |  | start no earlier than 2002-11-18 | Devin Murname | 8h |  |
| 1569 | 3.8.33 | General dynamic loading ongoing tasks | 1d? | 2002-11-18 | 2002-11-19 |  |  |  | 195.88d |  | start no earlier than 2002-11-18 | Devin Murname | 8h |  |
| 1570 | 3.8.34 | Load cancels working (dependent on P3D providing this) | 1d? | 2002-11-18 | 2002-11-19 |  |  |  | 195.88d |  | start no earlier than 2002-11-18 | Devin Murname | 8h |  |
| 1571 | 3.8.35 | Boulevard heap integration | 1d? | 2002-11-18 | 2002-11-19 |  |  |  | 195.88d |  | start no earlier than 2002-11-18 | Devin Murname | 8h |  |
| 1572 | 3.8.36 | PS2 mipmap tuning | 1d? | 2002-11-18 | 2002-11-19 |  |  |  | 195.88d |  | start no earlier than 2002-11-18 | Devin Murname | 8h |  |
| 1573 | 6.8.43 | Task 1 | 1d? | 2002-11-27 | 2002-11-27 |  |  |  | 189d |  | start no earlier than 2002-11-27 | Devin Murname [80%] | 6.4h |  |
| 1574 | 6.8.44 | Task 2 | 1d? | 2002-11-27 | 2002-11-27 |  |  |  | 189d |  | start no earlier than 2002-11-27 | Devin Murname [80%] | 6.4h |  |
| 1575 | 6.8.45 | Task 3 | 1d? | 2002-11-27 | 2002-11-27 |  |  |  | 189d |  | start no earlier than 2002-11-27 | Devin Murname [80%] | 6.4h |  |
| 1576 | 3.8.37 | Mission vehicle AI improvements | 1d? | 2002-11-18 A | 2002-11-19 |  | 50% | 0.5d? | 195.88d |  | start no earlier than 2002-11-18 | Dusit Eakkachaichanvet | 8h | 4h |

Notes:
- 1507: Michael Riegger (Tue 12/11/02): Will be done by milestone, nearly complete
- 1508: Michael Riegger (Tue 12/11/02): Instancing of animated objects in testing phase. (Includes powerbox effects)
- 1509: Michael Riegger (Tue 12/11/02): World animation effects overhaul is major time consumer
- 1510: Michael Riegger (Tue 12/11/02): No specific tasks assigned
- 1511: Michael Riegger (Tue 12/11/02): Most water effects should be doable with existing code, P3D features have been requested due to heavy memory requirements
- 1512: Michael Riegger (Tue 12/11/02): Code is shared with powerboxes, should be complete by milestone. Aryan probably won't have time though
- 1530: Milestone 14 Build Features / Art Cutoff: December 6 / CD delivery date: December 13 / Sony Performance Analyzer run: early December (tentative) / ·Level Art / oSpecial effects for Seaside complete / oOcean effect for Seaside complete / oAll interiors complete / §3 for Suburbs / §2 for Downtown / §2 for Seaside / oSuburbs level completed with all level re-design changes made / oPolishing on Downtown and Seaside levels / ·FMV pipeline for all 6 SKUs complete / ·Final logo FMVs for all 6 SKUs in the game / ·FMV #6, #7 animatic complete / ·Terrain tagging in and all art complete / ·All effects that use terrain tagging complete / oSound effects / oSkid marks / oParticle effects / oTerrain specific friction / oTerrain specific controller rumble / ·Can play the game with accessories: / oGameCube steering wheel / oGameCube Wavebird / oGameboy Advance as a controller / oLogitech PS2 steering wheel / ·Continuation of work on FMV #1 through #5 / ·Iris transition for interiors complete and in all interiors / ·Can have conversations in interiors / ·Can trigger interactive gags in interiors / ·Can get collectibles in interiors / ·Secondary mission objectives working in the game / ·Bonus missions working in the game / ·Can select and play unlocked movies from the front end / ·HUD re-design complete / ·All 2D collector card art complete / ·All collector cards placed in the all levels / ·Mission presentation flow re-design complete / ·Level load newspaper screens complete / ·Generic load screen (game to front end) complete / ·One pass of tuning complete on all missions / ·All bonus vehicles complete and in the game / ·All bonus character skins complete / ·All generic pedestrian models and animations complete / ·All Halloween specific characters complete / ·All areas causing problematic camera collisions identified and replaced with rail cameras as appropriate / ·Rumble on controllers implemented and tuned according to ground surface, collision strength, etc. / ·Load cancels working correctly / ·Support for turning off environmental maps (or changing to an alternate map) in interiors, tunnels, etc. / ·Shadow volumes for tunnels, interiors, etc. / ·Object fade-in effect incorporated into the game where needed / ·Shadow volume and environmental mapping switches working for covered areas in the world / ·All interactive gags working in the game with animations and placeholder audio / ·All memory card screens complete / ·Mini driving game missions working / ·All reward systems designed, implemented and integrated with gameplay / ·World geometry auto-optimize step integrated into art pipeline / ·Mipmap levels tuned on PS2 / ·Boulevard heaps integrated into dynamic loading system / ·Language auto-select / language select working in PAL build on all 3 platforms / ·Positional sounds working in the game / ·Sounds attached to moving objects working / ·Triggers for ambient sounds working / ·Car engine sound code finalized / ·First-pass mission music in the game / ·First-pass location based sounds in the game / ·Some final ambient sounds in the game / ·Switch to different music when in interiors working
- 1542: halloween isnt going in this milestone according to jeff p. plz confirm with yayoi and joel , also i think i will be taking over the rewards manager that was assigned to dusit.
- 1551: may move to next milestone / bottleneck taken care of / James has written an interface
- 1556: may be done
- 1559: was working at one point / more of a script issue ie. wrt licensed music
- 1561: Chris?
- 1576: Dusit Eakkachaichanvet (Wed 27/11/02): Ongoing

| ID | WBS | Task | Duration | Start | Finish | Complete | Remaining | Total slack | Constraint | Resources | Work | Actual work |
| --- | --- | --- | --- | --- | --- | --- | --- | --- | --- | --- | --- | --- |
| 1577 | 3.8.38 | Race vehicle AI | 1d? | 2002-11-18 A | 2002-11-19 | 50% | 0.5d? | 195.88d | start no earlier than 2002-11-18 | Dusit Eakkachaichanvet | 8h | 4h |
| 1578 | 3.8.39 | Ensure logic of all reward systems work as designed (coordinate UI with Tony) | 1d? | 2002-11-18 | 2002-11-19 |  |  | 195.88d | start no earlier than 2002-11-18 | Dusit Eakkachaichanvet | 8h |  |
| 1579 | 6.8.49 | Ensure all reward assets are in the game (character skins, bonus vehicles, etc) | 1d? | 2002-11-18 | 2002-11-19 |  |  | 195.88d | start no earlier than 2002-11-18 | Dusit Eakkachaichanvet | 8h |  |
| 1580 | 6.8.50 | Pedestrians path auto adjust to terrain in pipeline | 4.88d? | 2002-11-18 A | 2002-11-22 A | 100% |  |  | start no earlier than 2002-11-18 | Dusit Eakkachaichanvet [20.5%] | 8h | 8h |
| 1581 | 6.8.51 | Randomize loading of generic pedestrians from pedestrian library being developed by Slava | 5d? | 2002-11-18 A | 2002-11-22 | 80% | 1d? | 192d | start no earlier than 2002-11-18 | Dusit Eakkachaichanvet [20%] | 8h | 6.4h |
| 1582 | 6.8.52 | Task 1 | 1d? | 2002-11-27 | 2002-11-27 |  |  | 189d | start no earlier than 2002-11-27 | Dusit Eakkachaichanvet [80%] | 6.4h |  |
| 1583 | 6.8.53 | Task 2 | 1d? | 2002-11-27 | 2002-11-27 |  |  | 189d | start no earlier than 2002-11-27 | Dusit Eakkachaichanvet [80%] | 6.4h |  |
| 1584 | 6.8.54 | Task 3 | 1d? | 2002-11-27 | 2002-11-27 |  |  | 189d | start no earlier than 2002-11-27 | Dusit Eakkachaichanvet [80%] | 6.4h |  |
| 1585 | 3.8.40 | Street racing game manager | 1d? | 2002-11-18 | 2002-11-19 |  |  | 195.88d | start no earlier than 2002-11-18 | Greg Mayer | 8h |  |
| 1586 | 3.8.41 | Terrain specific friction working | 1d? | 2002-11-18 | 2002-11-19 |  |  | 195.88d | start no earlier than 2002-11-18 | Greg Mayer | 8h |  |
| 1587 | 3.8.42 | Work with Dusit and Tony to ensure all aspects of Street racing games are complete | 1d? | 2002-11-18 | 2002-11-19 |  |  | 195.88d | start no earlier than 2002-11-18 | Greg Mayer | 8h |  |
| 1588 | 3.8.43 | Assist Dusit with vehicle and race AI as necessary | 1d? | 2002-11-18 | 2002-11-19 |  |  | 195.88d | start no earlier than 2002-11-18 | Greg Mayer | 8h |  |
| 1589 | 6.8.59 | Task 1 | 1d? | 2002-11-27 | 2002-11-27 |  |  | 189d | start no earlier than 2002-11-27 | Greg Mayer [80%] | 6.4h |  |
| 1590 | 6.8.60 | Task 2 | 1d? | 2002-11-27 | 2002-11-27 |  |  | 189d | start no earlier than 2002-11-27 | Greg Mayer [80%] | 6.4h |  |
| 1591 | 6.8.61 | Task 3 | 1d? | 2002-11-27 | 2002-11-27 |  |  | 189d | start no earlier than 2002-11-27 | Greg Mayer [80%] | 6.4h |  |
| 1592 | 3.8.53 | 1 week of vacation | 1d? | 2002-11-18 A | 2002-11-19 |  | 1d? | 195.88d | start no earlier than 2002-11-18 | James Harrison |  |  |
| 1593 | 3.8.54 | Ensure all icons (collector cards, couplings, etc) are appearing in the game and working | 1d? | 2002-11-18 | 2002-11-19 |  |  | 195.88d | start no earlier than 2002-11-18 | James Harrison | 8h |  |
| 1594 | 6.8.64 | Support for terrain types | 1d? | 2002-12-09 | 2002-12-09 |  |  | 181d | start no earlier than 2002-12-09 | James Harrison [80%] | 6.4h |  |
| 1595 | 6.8.65 | Ensure all interactive gags get into the game and can be triggered correctly (support for Aryan) | 1d? | 2002-12-09 | 2002-12-09 |  |  | 181d | start no earlier than 2002-12-09 | James Harrison [80%] | 6.4h |  |
| 1596 | 3.8.56 | Object fade in (traffic, props, dynamically loaded world art) | 1d? | 2002-11-18 | 2002-11-19 |  |  | 195.88d | start no earlier than 2002-11-18 | James Harrison | 8h |  |
| 1597 | 3.8.57 | Shadow volumes & environmental mapping switch for interior driveable areas (SNPP, tunnels, etc) | 1d? | 2002-11-18 | 2002-11-19 |  |  | 195.88d | start no earlier than 2002-11-18 | James Harrison [25%] | 2h |  |
| 1598 | 6.8.68 | Rendering debugging and enhancements ongoing task | 1d? | 2002-11-18 | 2002-11-19 |  |  | 195.88d | start no earlier than 2002-11-18 | James Harrison [80%] | 6.4h |  |
| 1599 | 6.8.69 | Task 1 | 1d? | 2002-11-27 | 2002-11-27 |  |  | 189d | start no earlier than 2002-11-27 | James Harrison [80%] | 6.4h |  |
| 1600 | 6.8.70 | Task 2 | 1d? | 2002-11-27 | 2002-11-27 |  |  | 189d | start no earlier than 2002-11-27 | James Harrison [80%] | 6.4h |  |
| 1601 | 6.8.71 | Task 3 | 1d? | 2002-11-27 | 2002-11-27 |  |  | 189d | start no earlier than 2002-11-27 | James Harrison [80%] | 6.4h |  |
| 1602 | 3.8.58 | Firewire build ongoing task | 1d? | 2002-11-18 | 2002-11-19 |  |  | 195.88d | start no earlier than 2002-11-18 | Joel DeYoung | 8h |  |
| 1603 | 3.8.59 | General debugging ongoing task | 1d? | 2002-11-18 | 2002-11-19 |  |  | 195.88d | start no earlier than 2002-11-18 | Joel DeYoung | 8h |  |
| 1604 | 3.8.60 | FMV pipeline complete for all 3 platforms and for NTSC and PAL | 1d? | 2002-11-18 | 2002-11-19 |  |  | 195.88d | start no earlier than 2002-11-18 | Joel DeYoung | 8h |  |
| 1605 | 6.8.75 | Final logo FMVs for all 6 SKUs in the game | 1d? | 2002-11-18 | 2002-11-19 |  |  | 195.88d | start no earlier than 2002-11-18 | Joel DeYoung [50%] | 4h |  |
| 1606 | 6.8.76 | Placeholder FMVs playing in middle of level | 1d? | 2002-11-18 | 2002-11-19 |  |  | 195.88d | start no earlier than 2002-11-18 | Joel DeYoung [50%] | 4h |  |
| 1607 | 6.8.77 | Support for playing movies selected from F/E | 1d? | 2002-11-18 | 2002-11-19 |  |  | 195.88d | start no earlier than 2002-11-18 | Joel DeYoung [50%] | 4h |  |
| 1608 | 6.8.78 | Task 1 | 1d? | 2002-11-27 | 2002-11-27 |  |  | 189d | start no earlier than 2002-11-27 | Joel DeYoung [50%] | 4h |  |
| 1609 | 6.8.79 | Task 2 | 1d? | 2002-11-27 | 2002-11-27 |  |  | 189d | start no earlier than 2002-11-27 | Joel DeYoung [50%] | 4h |  |
| 1610 | 6.8.80 | Task 3 | 1d? | 2002-11-27 | 2002-11-27 |  |  | 189d | start no earlier than 2002-11-27 | Joel DeYoung [50%] | 4h |  |
| 1611 | 6.8.81 | Water Effects | 1d? | 2002-12-09 | 2002-12-09 |  |  | 181d | start no earlier than 2002-12-09 | Michael Riegger | 8h |  |
| 1612 | 6.8.82 | Breakables disable rendering of all relevant objects | 1d? | 2002-12-09 | 2002-12-09 |  |  | 181d | start no earlier than 2002-12-09 | Michael Riegger | 8h |  |
| 1613 | 3.8.61 | Terrain specific skid marks working | 1d? | 2002-11-18 | 2002-11-19 |  |  | 195.88d | start no earlier than 2002-11-18 | Michael Riegger | 8h |  |
| 1614 | 3.8.62 | Terrain specific particle effects working | 1d? | 2002-11-18 | 2002-11-19 |  |  | 195.88d | start no earlier than 2002-11-18 | Michael Riegger | 8h |  |
| 1615 | 3.8.63 | Final special effects in the game (completed by November 29) | 1d? | 2002-11-18 | 2002-11-19 |  |  | 195.88d | start no earlier than 2002-11-18 | Michael Riegger | 8h |  |
| 1616 | 3.8.64 | Final world rendering effects in the game (completed by November 29) | 1d? | 2002-11-18 | 2002-11-19 |  |  | 195.88d | start no earlier than 2002-11-18 | Michael Riegger | 8h |  |
| 1617 | 3.8.66 | Platform specific gamma correction in the pipeline | 1d? | 2002-11-18 | 2002-11-19 |  |  | 195.88d | start no earlier than 2002-11-18 | Michael Riegger | 8h |  |
| 1618 | 6.8.88 | Task 1 | 1d? | 2002-11-27 | 2002-11-27 |  |  | 189d | start no earlier than 2002-11-27 | Michael Riegger [80%] | 6.4h |  |
| 1619 | 6.8.89 | Task 2 | 1d? | 2002-11-27 | 2002-11-27 |  |  | 189d | start no earlier than 2002-11-27 | Michael Riegger [80%] | 6.4h |  |
| 1620 | 6.8.90 | Task 3 | 1d? | 2002-11-27 | 2002-11-27 |  |  | 189d | start no earlier than 2002-11-27 | Michael Riegger [80%] | 6.4h |  |
| 1621 | 3.8.70 | Ensure all 7 interiors get into the game correctly | 1d? | 2002-11-18 | 2002-11-19 |  |  | 195.88d | start no earlier than 2002-11-18 | Nigel Brooke | 8h |  |
| 1622 | 3.8.71 | Disable character collision while character in the car | 1d? | 2002-11-18 A | 2002-11-19 A | 100% |  |  | start no earlier than 2002-11-18 | Nigel Brooke | 8h | 8h |
| 1623 | 3.8.72 | Iris transition working correctly for interiors | 1d? | 2002-11-18 A | 2002-11-19 A | 100% |  |  | start no earlier than 2002-11-18 | Nigel Brooke | 8h | 8h |
| 1624 | 6.8.94 | Gag Demonstration special camera when entering interiors | 1d? | 2002-12-09 | 2002-12-09 |  |  | 181d | start no earlier than 2002-12-09 | Nigel Brooke [80%] | 6.4h |  |
| 1625 | 3.8.73 | Support for collectibles in interiors | 1d? | 2002-11-18 A | 2002-11-19 A | 100% |  |  | start no earlier than 2002-11-18 | Nigel Brooke | 8h | 8h |
| 1626 | 3.8.74 | Support for interactive gags in interiors | 1d? | 2002-11-18 | 2002-11-19 |  |  | 195.88d | start no earlier than 2002-11-18 | Nigel Brooke | 8h |  |
| 1627 | 3.8.75 | Support for conversations in interiors | 1d? | 2002-11-18 | 2002-11-19 |  |  | 195.88d | start no earlier than 2002-11-18 | Nigel Brooke | 8h |  |
| 1628 | 6.8.98 | Memory cleanliness audits for all three platforms | 1d? | 2002-11-18 | 2002-11-19 |  |  | 195.88d | start no earlier than 2002-11-18 | Nigel Brooke | 8h |  |
| 1629 | 6.8.99 | Memory savings pass | 1d? | 2002-11-18 | 2002-11-19 |  |  | 195.88d | start no earlier than 2002-11-18 | Nigel Brooke | 8h |  |
| 1630 | 6.8.100 | Frame rate optimization pass | 1d? | 2002-11-18 | 2002-11-19 |  |  | 195.88d | start no earlier than 2002-11-18 | Nigel Brooke | 8h |  |
| 1631 | 6.8.101 | Character management ongoing task | 1d? | 2002-11-18 | 2002-11-19 |  |  | 195.88d | start no earlier than 2002-11-18 | Nigel Brooke | 8h |  |
| 1632 | 6.8.102 | World physics and collisions ongoing task | 5d? | 2002-11-18 | 2002-11-22 |  |  | 192d | start no earlier than 2002-11-18 | Nigel Brooke [20%] | 8h |  |
| 1633 | 6.8.103 | Task 1 | 1d? | 2002-11-27 | 2002-11-27 |  |  | 189d | start no earlier than 2002-11-27 | Nigel Brooke [80%] | 6.4h |  |
| 1634 | 6.8.104 | Task 2 | 1d? | 2002-11-27 | 2002-11-27 |  |  | 189d | start no earlier than 2002-11-27 | Nigel Brooke [80%] | 6.4h |  |
| 1635 | 6.8.105 | Task 3 | 1d? | 2002-11-27 | 2002-11-27 |  |  | 189d | start no earlier than 2002-11-27 | Nigel Brooke [80%] | 6.4h |  |
| 1636 | 3.8.77 | Language select screens | 1d? | 2002-11-18 | 2002-11-19 |  |  | 195.88d | start no earlier than 2002-11-18 | Tony Chu | 8h |  |
| 1637 | 3.8.78 | Generic load screen for game to F/E added | 1d? | 2002-11-18 | 2002-11-19 |  |  | 195.88d | start no earlier than 2002-11-18 | Tony Chu | 8h |  |
| 1638 | 3.8.79 | Screen for playing unlocked movies from F/E | 1d? | 2002-11-18 A | 2002-11-19 A | 100% |  |  | start no earlier than 2002-11-18 | Tony Chu | 8h | 8h |
| 1639 | 3.8.80 | Memory card/TRC compliance ongoing task | 1d? | 2002-11-18 A | 2002-11-19 | 25% | 0.75d? | 195.88d | start no earlier than 2002-11-18 | Tony Chu | 8h | 2h |
| 1640 | 3.8.81 | Changes required for HUD re-design | 1d? | 2002-11-18 | 2002-11-19 |  |  | 195.88d | start no earlier than 2002-11-18 | Tony Chu | 8h |  |
| 1641 | 3.8.82 | Screens required for reward presentation | 1d? | 2002-11-18 | 2002-11-19 |  |  | 195.88d | start no earlier than 2002-11-18 | Tony Chu | 8h |  |
| 1642 | 3.8.83 | Screens required for Street racing games | 1d? | 2002-11-18 | 2002-11-19 |  |  | 195.88d | start no earlier than 2002-11-18 | Tony Chu | 8h |  |
| 1643 | 6.8.113 | Presentation iteration ongoing task | 1d? | 2002-11-18 | 2002-11-19 |  |  | 195.88d | start no earlier than 2002-11-18 | Tony Chu | 8h |  |
| 1644 | 6.8.114 | Task 1 | 1d? | 2002-11-27 | 2002-11-27 |  |  | 189d | start no earlier than 2002-11-27 | Tony Chu [80%] | 6.4h |  |
| 1645 | 6.8.115 | Task 2 | 1d? | 2002-11-27 | 2002-11-27 |  |  | 189d | start no earlier than 2002-11-27 | Tony Chu [80%] | 6.4h |  |
| 1646 | 6.8.116 | Task 3 | 1d? | 2002-11-27 | 2002-11-27 |  |  | 189d | start no earlier than 2002-11-27 | Tony Chu [80%] | 6.4h |  |

Notes:
- 1577: Dusit Eakkachaichanvet (Wed 27/11/02): Ongoing
- 1578: Dusit Eakkachaichanvet (Wed 27/11/02): Awaiting design
- 1579: Dusit Eakkachaichanvet (Wed 27/11/02): Awaiting design
- 1580: Dusit Eakkachaichanvet (Wed 27/11/02): Done. Need sheik to reduce number of paths as needed
- 1581: Dusit Eakkachaichanvet (Wed 27/11/02): There. But runs a bit slow and leaks a bit of memory.

| ID | WBS | Task | Duration | Start | Finish | Predecessors | Complete | Total slack | Free slack | Constraint | Resources | Work | Actual work |
| --- | --- | --- | --- | --- | --- | --- | --- | --- | --- | --- | --- | --- | --- |
| 1647 | 6.8.117 | 2 weeks on another team (if internal) or training (if external) | 4.88d? | 2002-11-18 A | 2002-11-22 A |  | 100% |  |  | start no earlier than 2002-11-18 | Iain Gipson [20.5%] | 8h | 8h |
| 1648 | 6.8.118 | Language select / language auto-select system | 4.88d? | 2002-11-18 A | 2002-11-22 A |  | 100% |  |  | start no earlier than 2002-11-18 | Iain Gipson [20.5%] | 8h | 8h |
| 1649 | 6.8.119 | Presentation changes required by designers | 1d? | 2002-11-27 | 2002-11-27 |  |  | 189d |  | start no earlier than 2002-11-27 | Iain Gipson | 8h |  |
| 1650 | 6.8.120 | Enhancements to NIS conversations | 1d? | 2002-11-27 | 2002-11-27 |  |  | 189d |  | start no earlier than 2002-11-27 | Iain Gipson | 8h |  |
| 1651 | 6.8.121 | Task 1 | 1d? | 2002-12-09 | 2002-12-09 |  |  | 181d |  | start no earlier than 2002-12-09 |  |  |  |
| 1652 | 6.8.122 | Task 2 | 1d? | 2002-12-09 | 2002-12-09 |  |  | 181d |  | start no earlier than 2002-12-09 |  |  |  |
| 1653 | 6.8.123 | Task 3 | 1d? | 2002-12-09 | 2002-12-09 |  |  | 181d |  | start no earlier than 2002-12-09 |  |  |  |
| 1654 | 3.9 | **Milestone 15 - Alpha (Jan 16th) (Temp)** | 13d? | 2002-12-16 | 2003-01-02 |  |  | 163.88d |  |  |  | 696h |  |
| 1655 | 3.9.1 | Death volume support in the world builder tool (complete by October 25) | 1d | 2002-12-16 | 2002-12-17 |  |  | 165.88d | 0d | start no earlier than 2002-12-16 | Cary Brisebois | 8h |  |
| 1656 | 3.9.2 | Missions: Work with mission team to make sure they work | 1d? | 2002-12-17 | 2002-12-18 | 1655 |  | 165.88d | 0d | start no earlier than 2002-12-16 | Cary Brisebois | 8h |  |
| 1657 | 3.9.3 | Camera collisions: on foot | 1d? | 2002-12-18 | 2002-12-19 | 1656 |  | 165.88d | 0d | start no earlier than 2002-12-16 | Cary Brisebois | 8h |  |
| 1658 | 3.9.4 | Camera collisions: driving | 1d? | 2002-12-19 | 2002-12-20 | 1657 |  | 165.88d | 0d | start no earlier than 2002-12-16 | Cary Brisebois | 8h |  |
| 1659 | 3.9.5 | Camera collisions: interiors | 1d? | 2002-12-20 | 2002-12-23 | 1658 |  | 165.88d | 0d | start no earlier than 2002-12-16 | Cary Brisebois | 8h |  |
| 1660 | 3.9.6 | Camera shake | 1d? | 2002-12-23 | 2002-12-24 | 1659 |  | 165.88d | 0d | start no earlier than 2002-12-16 | Cary Brisebois | 8h |  |
| 1661 | 3.9.7 | Interior rail camera improvements | 1d? | 2002-12-24 | 2002-12-25 | 1660 |  | 165.88d | 0d | start no earlier than 2002-12-16 | Cary Brisebois | 8h |  |
| 1662 | 3.9.8 | Improved camera setup for mission conversations | 1d? | 2002-12-25 | 2002-12-26 | 1661 |  | 165.88d | 0d | start no earlier than 2002-12-16 | Cary Brisebois | 8h |  |
| 1663 | 3.9.9 | Help getting new level art in the game | 1d? | 2002-12-26 | 2002-12-27 | 1662 |  | 165.88d | 0d | start no earlier than 2002-12-16 | Cary Brisebois | 8h |  |
| 1664 | 3.9.10 | Help getting new missions in the game | 1d? | 2002-12-27 | 2002-12-30 | 1663 |  | 165.88d | 0d | start no earlier than 2002-12-16 | Cary Brisebois | 8h |  |
| 1665 | 3.9.11 | Improved command line parameters for artists to start in various world locations | 1d? | 2002-12-30 | 2002-12-31 | 1664 |  | 165.88d |  | start no earlier than 2002-12-16 | Cary Brisebois | 8h |  |
| 1666 | 3.9.12 | Mission icon scaling based on distance | 1d? | 2002-12-16 | 2002-12-17 |  |  | 165.88d | 0d | start no earlier than 2002-12-16 | Chuck Chow | 8h |  |
| 1667 | 3.9.13 | Help getting new level art in the game | 1d? | 2002-12-17 | 2002-12-18 | 1666 |  | 165.88d | 0d | start no earlier than 2002-12-16 | Chuck Chow | 8h |  |
| 1668 | 3.9.14 | Mission restart correctly resets the players position, mission elements, and returns to mission instruction screen | 1d? | 2002-12-18 | 2002-12-19 | 1667 |  | 165.88d | 0d | start no earlier than 2002-12-16 | Chuck Chow | 8h |  |
| 1669 | 3.9.15 | Missions: Work with mission team to make sure they work | 1d? | 2002-12-19 | 2002-12-20 | 1668 |  | 165.88d | 0d | start no earlier than 2002-12-16 | Chuck Chow | 8h |  |
| 1670 | 3.9.16 | Artist pipeline support | 1d? | 2002-12-20 | 2002-12-23 | 1669 |  | 165.88d | 0d | start no earlier than 2002-12-16 | Chuck Chow | 8h |  |
| 1671 | 3.9.17 | Artist memory budget enforcement | 1d? | 2002-12-23 | 2002-12-24 | 1670 |  | 165.88d | 0d | start no earlier than 2002-12-16 | Chuck Chow | 8h |  |
| 1672 | 6.9.18 | Engine sounds working correctly - Final pass | 1d? | 2002-12-24 | 2002-12-25 | 1671 |  | 165.88d | 0d | start no earlier than 2002-12-16 | Darren Esau [80%] | 6.4h |  |
| 1673 | 6.9.19 | Reverb | 1d? | 2002-12-25 | 2002-12-26 | 1672 |  | 165.88d | 0d | start no earlier than 2002-12-16 | Darren Esau [80%] | 6.4h |  |
| 1674 | 6.9.20 | Dialog system: eye blinking and mouth flapping | 1d? | 2002-12-26 | 2002-12-27 | 1673 |  | 165.88d | 0d | start no earlier than 2002-12-16 | Darren Esau [80%] | 6.4h |  |
| 1675 | 6.9.21 | Music Events - on foot, street racing, etc. | 1d? | 2002-12-27 | 2002-12-30 | 1674 |  | 165.88d | 0d | start no earlier than 2002-12-16 | Darren Esau [80%] | 6.4h |  |
| 1676 | 6.9.22 | Positional Sound | 1d? | 2002-12-30 | 2002-12-31 | 1675 |  | 165.88d |  | start no earlier than 2002-12-16 | Darren Esau [80%] | 6.4h |  |
| 1677 | 3.9.18 | Audio for gag NISes | 1d? | 2002-12-16 | 2002-12-17 |  |  | 168.88d | 0d | start no earlier than 2002-12-16 | Darren Esau | 8h |  |
| 1679 | 3.9.20 | Dialog system: eye blinking and mouth flapping | 1d? | 2002-12-18 | 2002-12-19 |  |  | 168.88d | 0d | start no earlier than 2002-12-16 | Darren Esau | 8h |  |
| 1680 | 3.9.21 | Interior sound effects - Final pass | 1d? | 2002-12-19 | 2002-12-20 | 1679 |  | 168.88d | 0d | start no earlier than 2002-12-16 | Darren Esau | 8h |  |
| 1681 | 3.9.22 | PS2 mipmap tuning | 1d? | 2002-12-20 | 2002-12-23 | 1680 |  | 168.88d | 0d | start no earlier than 2002-12-16 | Darren Esau | 8h |  |
| 1682 | 3.9.23 | Addition of some final sound effects - Final pass | 1d? | 2002-12-23 | 2002-12-24 | 1681 |  | 168.88d | 0d | start no earlier than 2002-12-16 | Darren Esau | 8h |  |
| 1684 | 3.9.25 | Generic traffic audio | 1d? | 2002-12-25 | 2002-12-26 |  |  | 168.88d |  | start no earlier than 2002-12-16 | Darren Esau | 8h |  |
| 1685 | 3.9.26 | Interior gag audio | 1d? | 2002-12-16 | 2002-12-17 |  |  | 172.88d | 0d | start no earlier than 2002-12-16 | Darwin Chau | 8h |  |
| 1686 | 3.9.27 | Mini driving games working | 1d? | 2002-12-17 | 2002-12-18 | 1685 |  | 172.88d | 0d | start no earlier than 2002-12-16 | Darwin Chau | 8h |  |
| 1687 | 3.9.28 | FMVs playing in game (in between missions) | 1d? | 2002-12-18 | 2002-12-19 | 1686 |  | 172.88d | 0d | start no earlier than 2002-12-16 | Darwin Chau | 8h |  |
| 1688 | 3.9.29 | General memory management ongoing tasks | 1d? | 2002-12-19 | 2002-12-20 | 1687 |  | 172.88d |  | start no earlier than 2002-12-16 | Darwin Chau | 8h |  |
| 1689 | 3.9.30 | DSG cleanup / abstract base class for DSG objects | 1d? | 2002-12-16 | 2002-12-17 |  |  | 169.88d | 0d | start no earlier than 2002-12-16 | Devin Murname | 8h |  |
| 1690 | 3.9.31 | General dynamic loading ongoing tasks | 1d? | 2002-12-17 | 2002-12-18 | 1689 |  | 169.88d | 0d | start no earlier than 2002-12-16 | Devin Murname | 8h |  |
| 1691 | 3.9.32 | Dymamic loading compression incorporated | 1d? | 2002-12-18 | 2002-12-19 | 1690 |  | 169.88d | 0d | start no earlier than 2002-12-16 | Devin Murname | 8h |  |
| 1692 | 3.9.33 | Load cancels working (dependent on P3D providing this) | 1d? | 2002-12-19 | 2002-12-20 | 1691 |  | 169.88d | 0d | start no earlier than 2002-12-16 | Devin Murname | 8h |  |
| 1693 | 3.9.34 | Final rendered trigger volumes | 1d? | 2002-12-20 | 2002-12-23 | 1692 |  | 169.88d | 0d | start no earlier than 2002-12-16 | Devin Murname | 8h |  |
| 1694 | 3.9.35 | Incorporation of P3D tool to auto-optimize meshes | 1d? | 2002-12-23 | 2002-12-24 | 1693 |  | 169.88d | 0d | start no earlier than 2002-12-16 | Devin Murname | 8h |  |
| 1695 | 3.9.36 | Boulevard heap integration | 1d? | 2002-12-24 | 2002-12-25 | 1694 |  | 169.88d |  | start no earlier than 2002-12-16 | Devin Murname | 8h |  |
| 1696 | 3.9.37 | Mission vehicle AI improvements | 1d? | 2002-12-16 | 2002-12-17 |  |  | 173.88d | 0d | start no earlier than 2002-12-16 | Dusit Eakkachaichanvet | 8h |  |
| 1697 | 3.9.38 | Pedestrians diving out of the way | 1d? | 2002-12-17 | 2002-12-18 | 1696 |  | 173.88d | 0d | start no earlier than 2002-12-16 | Dusit Eakkachaichanvet | 8h |  |
| 1698 | 3.9.39 | Pedestrians hit by car response | 1d? | 2002-12-18 | 2002-12-19 | 1697 |  | 173.88d |  | start no earlier than 2002-12-16 | Dusit Eakkachaichanvet | 8h |  |
| 1699 | 3.9.40 | Car reset | 1d? | 2002-12-16 | 2002-12-17 |  |  | 163.88d | 0d | start no earlier than 2002-12-16 | Greg Mayer | 8h |  |
| 1700 | 3.9.41 | Car moves correctly on moveable platforms | 1d? | 2002-12-17 | 2002-12-18 | 1699 |  | 163.88d | 0d | start no earlier than 2002-12-16 | Greg Mayer | 8h |  |
| 1701 | 3.9.42 | Dynamic object rest tests | 1d? | 2002-12-18 | 2002-12-19 | 1700 |  | 163.88d | 0d | start no earlier than 2002-12-16 | Greg Mayer | 8h |  |
| 1702 | 3.9.43 | Full use of physics properties from the database | 1d? | 2002-12-19 | 2002-12-20 | 1701 |  | 163.88d | 0d | start no earlier than 2002-12-16 | Greg Mayer | 8h |  |
| 1703 | 3.9.44 | Car door opens and closes properly on character entry/exit | 1d? | 2002-12-20 | 2002-12-23 | 1702 |  | 163.88d | 0d | start no earlier than 2002-12-16 | Greg Mayer | 8h |  |
| 1704 | 3.9.45 | Improved collision response | 1d? | 2002-12-23 | 2002-12-24 | 1703 |  | 163.88d | 0d | start no earlier than 2002-12-16 | Greg Mayer | 8h |  |
| 1705 | 3.9.46 | Death volume handling for car | 1d? | 2002-12-24 | 2002-12-25 | 1704 |  | 163.88d | 0d | start no earlier than 2002-12-16 | Greg Mayer | 8h |  |
| 1706 | 3.9.47 | Simple car reset | 1d? | 2002-12-25 | 2002-12-26 | 1705 |  | 163.88d | 0d | start no earlier than 2002-12-16 | Greg Mayer | 8h |  |
| 1707 | 3.9.48 | Dynamic object removal from DSG | 1d? | 2002-12-26 | 2002-12-27 | 1706 |  | 163.88d | 0d | start no earlier than 2002-12-16 | Greg Mayer | 8h |  |
| 1708 | 3.9.49 | Disable character collision while character in the car | 1d? | 2002-12-27 | 2002-12-30 | 1707 |  | 163.88d | 0d | start no earlier than 2002-12-16 | Greg Mayer | 8h |  |
| 1709 | 3.9.50 | Vehicle brake lights | 1d? | 2002-12-30 | 2002-12-31 | 1708 |  | 163.88d | 0d | start no earlier than 2002-12-16 | Greg Mayer | 8h |  |
| 1710 | 3.9.51 | In car character animations | 1d? | 2002-12-31 | 2003-01-01 | 1709 |  | 163.88d | 0d | start no earlier than 2002-12-16 | Greg Mayer | 8h |  |
| 1711 | 3.9.52 | Steep terrain handling | 1d? | 2003-01-01 | 2003-01-02 | 1710 |  | 163.88d |  | start no earlier than 2002-12-16 | Greg Mayer | 8h |  |
| 1712 | 3.9.53 | Terrain type tags in the pipeline, with an interface to access them at runtime | 1d? | 2002-12-16 | 2002-12-17 |  |  | 171.88d | 0d | start no earlier than 2002-12-16 | James Harrison | 8h |  |
| 1713 | 3.9.54 | Lens flare / corona working | 1d? | 2002-12-17 | 2002-12-18 | 1712 |  | 171.88d | 0d | start no earlier than 2002-12-16 | James Harrison | 8h |  |
| 1714 | 3.9.55 | Blobby shadows added for NPCs, pedestrians, non-player cars | 1d? | 2002-12-18 | 2002-12-19 | 1713 |  | 171.88d | 0d | start no earlier than 2002-12-16 | James Harrison | 8h |  |
| 1715 | 3.9.56 | 2 weeks vacation | 1d? | 2002-12-19 | 2002-12-20 | 1714 |  | 171.88d | 0d | start no earlier than 2002-12-16 | James Harrison | 8h |  |
| 1716 | 3.9.57 | Ongoing rendering effects task | 1d? | 2002-12-20 | 2002-12-23 | 1715 |  | 171.88d |  | start no earlier than 2002-12-16 | James Harrison | 8h |  |
| 1717 | 3.9.58 | Better FMVs for Xbox and GC | 1d? | 2002-12-16 | 2002-12-17 |  |  | 173.88d | 0d | start no earlier than 2002-12-16 | Joel DeYoung | 8h |  |
| 1718 | 3.9.59 | Create final logo FMVs for all 6 platforms | 1d? | 2002-12-17 | 2002-12-18 | 1717 |  | 173.88d | 0d | start no earlier than 2002-12-16 | Joel DeYoung | 8h |  |

Notes:
- 1654: Important Dates and Milestones after January 15: / January 15: / ·Game 100% complete / ·No changes to game code or content, except as needed to fix bugs or resolve TRC issues / ·Game is ALPHA / Milestone 15 Build Features / Art Cutoff: January 8 / CD Delivery Date: January 15 / ·Level Art / oTurn Suburbs, Downtown and Seaside into Levels 1 through 7 / §Add specific geometry and textures related to story progression (e.g. crop circles) / §Change textures to reflect new time of day / §Move collector cards / §Move destructible cameras / §Creation of Halloween level / §Re-placement of dynamic loading load triggers as needed / oPolishing on Suburbs level / ·Incorporate final dialog audio into game / ·Continuation of work on FMV #1 through #7 (FMV finalization will continue until Feb 28) / ·All FMVs complete and in game, for both PAL and NTSC / ·All missions tuned / ·Finalize all special effects for all levels / ·Platform-specific colour corrections being performed in the pipeline / ·All NTSC illegal colours eliminated from the world / ·All mission events needed for interactive music changes are triggered in code / ·Reverb working on all platforms / ·Audio ducking working, with independent parameters for each sound effect / ·Dolby surround sound integrated into game / ·All final sound effects in the game / ·Placeholder interactive music complete for all missions / Placeholder audio for all gags and FMVs in the game
- 1677: code written but not tested / ms 13: many small tasks ie. gear shifting, dialogue, traffic sounds (doppler), reverb (power plant), etc.
- 1680: what is playing in the interiors?
- 1682: footsteps, need to know the surface
- 1699: must be done by Sept 17th for designer iteration
- 1700: depot/users/greg/tasks.txt / damage states on vehicles - artist dependencies / must be done by sept 24 for art iteration
- 1717: (Must be compelted by September 17 for art iteration)

| ID | WBS | Task | Duration | Start | Finish | Predecessors | Total slack | Free slack | Constraint | Resources | Work |
| --- | --- | --- | --- | --- | --- | --- | --- | --- | --- | --- | --- |
| 1719 | 3.9.60 | Xbox ripping | 1d? | 2002-12-18 | 2002-12-19 | 1718 | 173.88d |  | start no earlier than 2002-12-16 | Joel DeYoung | 8h |
| 1720 | 3.9.61 | All water effects complete | 1d? | 2002-12-16 | 2002-12-17 |  | 167.88d | 0d | start no earlier than 2002-12-16 | Michael Riegger | 8h |
| 1721 | 3.9.62 | Different skid mark types working | 1d? | 2002-12-17 | 2002-12-18 | 1720 | 167.88d | 0d | start no earlier than 2002-12-16 | Michael Riegger | 8h |
| 1722 | 3.9.63 | Button press flash effect | 1d? | 2002-12-18 | 2002-12-19 | 1721 | 167.88d | 0d | start no earlier than 2002-12-16 | Michael Riegger | 8h |
| 1723 | 3.9.64 | Food icon effects | 1d? | 2002-12-19 | 2002-12-20 | 1722 | 167.88d | 0d | start no earlier than 2002-12-16 | Michael Riegger | 8h |
| 1724 | 3.9.65 | Nuclear glow bubbles effects | 1d? | 2002-12-20 | 2002-12-23 | 1723 | 167.88d | 0d | start no earlier than 2002-12-16 | Michael Riegger | 8h |
| 1725 | 3.9.66 | Power coupling electrical effects | 1d? | 2002-12-23 | 2002-12-24 | 1724 | 167.88d | 0d | start no earlier than 2002-12-16 | Michael Riegger | 8h |
| 1726 | 3.9.67 | Power coupling destroy effects | 1d? | 2002-12-24 | 2002-12-25 | 1725 | 167.88d | 0d | start no earlier than 2002-12-16 | Michael Riegger | 8h |
| 1727 | 3.9.68 | World animation effects | 1d? | 2002-12-25 | 2002-12-26 | 1726 | 167.88d | 0d | start no earlier than 2002-12-16 | Michael Riegger | 8h |
| 1728 | 3.9.69 | Effects iteration ongoing task | 1d? | 2002-12-26 | 2002-12-27 | 1727 | 167.88d |  | start no earlier than 2002-12-16 | Michael Riegger | 8h |
| 1729 | 3.9.70 | Drivers in the taxi vehicles | 1d? | 2002-12-16 | 2002-12-17 |  | 169.88d | 0d | start no earlier than 2002-12-16 | Nigel Brooke | 8h |
| 1730 | 3.9.71 | Car door opens and closes properly on character entry/exit | 1d? | 2002-12-17 | 2002-12-18 | 1729 | 169.88d | 0d | start no earlier than 2002-12-16 | Nigel Brooke | 8h |
| 1731 | 3.9.72 | Support for leaving the car door open if running on exit | 1d? | 2002-12-18 | 2002-12-19 | 1730 | 169.88d | 0d | start no earlier than 2002-12-16 | Nigel Brooke | 8h |
| 1732 | 3.9.73 | Death volume handling for on foot | 1d? | 2002-12-19 | 2002-12-20 | 1731 | 169.88d | 0d | start no earlier than 2002-12-16 | Nigel Brooke | 8h |
| 1733 | 3.9.74 | In car character animations | 1d? | 2002-12-20 | 2002-12-23 | 1732 | 169.88d | 0d | start no earlier than 2002-12-16 | Nigel Brooke | 8h |
| 1734 | 3.9.75 | Currency system incorporated into game | 1d? | 2002-12-23 | 2002-12-24 | 1733 | 169.88d | 0d | start no earlier than 2002-12-16 | Nigel Brooke | 8h |
| 1735 | 3.9.76 | On foot gameplay ongoing task | 1d? | 2002-12-24 | 2002-12-25 | 1734 | 169.88d |  | start no earlier than 2002-12-16 | Nigel Brooke | 8h |
| 1736 | 3.9.77 | 2D mini games investigation (spend 3-4 days determining what is possible) | 1d? | 2002-12-16 | 2002-12-17 |  | 169.88d | 0d | start no earlier than 2002-12-16 | Tony Chu | 8h |
| 1737 | 3.9.78 | Integration of stylized HUD map | 1d? | 2002-12-17 | 2002-12-18 | 1736 | 169.88d | 0d | start no earlier than 2002-12-16 | Tony Chu | 8h |
| 1738 | 3.9.79 | Front end and HUD work for currency | 1d? | 2002-12-18 | 2002-12-19 | 1737 | 169.88d | 0d | start no earlier than 2002-12-16 | Tony Chu | 8h |
| 1739 | 3.9.80 | Mini driving games presentation and HUD screens | 1d? | 2002-12-19 | 2002-12-20 | 1738 | 169.88d | 0d | start no earlier than 2002-12-16 | Tony Chu | 8h |
| 1740 | 3.9.81 | Mission presentation HUD art iteration ongoing task | 1d? | 2002-12-20 | 2002-12-23 | 1739 | 169.88d | 0d | start no earlier than 2002-12-16 | Tony Chu | 8h |
| 1741 | 3.9.82 | Can load/save games on memory card | 1d? | 2002-12-23 | 2002-12-24 | 1740 | 169.88d | 0d | start no earlier than 2002-12-16 | Tony Chu | 8h |
| 1742 | 3.9.83 | Memory card screens | 1d? | 2002-12-24 | 2002-12-25 | 1741 | 169.88d |  | start no earlier than 2002-12-16 | Tony Chu | 8h |
| 1743 | 3.10 | Milestone 16 - (Feb 15th) (Temp) | 8d? | 2003-01-16 | 2003-01-28 |  | 145.88d |  |  |  | 720h |

| ID | WBS | Task | Duration | Start | Finish | Predecessors | Total slack | Free slack | Constraint | Resources | Work |
| --- | --- | --- | --- | --- | --- | --- | --- | --- | --- | --- | --- |
| 1827 | 3.11 | **Milestone 17 - (March 14th)** | 31d? | 2003-02-20 | 2003-04-02 |  | 97d |  |  |  | 1135.2h |
| 1828 | 3.11.1 | Improved race ranking results | 1d | 2003-02-20 | 2003-02-21 |  | 113.88d | 0d | start no earlier than 2003-02-20 | Cary Brisebois | 8h |
| 1829 | 3.11.2 | GameCube issues | 1d? | 2003-02-21 | 2003-02-24 | 1828 | 113.88d | 0d | start no earlier than 2003-02-20 | Cary Brisebois | 8h |
| 1830 | 3.11.3 | Complete support for forced vehicle missions | 1d? | 2003-02-24 | 2003-02-25 | 1829 | 113.88d | 0d | start no earlier than 2003-02-20 | Cary Brisebois | 8h |
| 1831 | 3.11.4 | Delegate mission loading and playing bugs | 1d? | 2003-02-25 | 2003-02-26 | 1830 | 113.88d | 0d | start no earlier than 2003-02-20 | Cary Brisebois | 8h |
| 1832 | 3.11.5 | Integrate changes from ATG | 1d? | 2003-02-26 | 2003-02-27 | 1831 | 113.88d | 0d | start no earlier than 2003-02-20 | Cary Brisebois | 8h |
| 1833 | 3.11.6 | Super Off Road mini game | 1d? | 2003-02-27 | 2003-02-28 | 1832 | 113.88d | 0d | start no earlier than 2003-02-20 | Cary Brisebois | 8h |
| 1834 | 3.11.7 | Hybrid mission support (dump and deliver objectives and associated AI) | 1d? | 2003-02-28 | 2003-03-03 | 1833 | 113.88d | 0d | start no earlier than 2003-02-20 | Cary Brisebois | 8h |
| 1835 | 3.11.8 | Figure out how to fit characters in traffic cars | 1d? | 2003-03-03 | 2003-03-04 | 1834 | 113.88d | 0d | start no earlier than 2003-02-20 | Cary Brisebois | 8h |
| 1836 | 3.11.9 | Level start walk animation presentation | 1d? | 2003-03-04 | 2003-03-05 | 1835 | 113.88d | 0d | start no earlier than 2003-02-20 | Cary Brisebois | 8h |
| 1837 | 3.11.10 | Teleporting support | 1d? | 2003-03-05 | 2003-03-06 | 1836 | 113.88d | 0d | start no earlier than 2003-02-20 | Cary Brisebois | 8h |
| 1838 | 3.11.11 | Brightness control support | 1d? | 2003-03-06 | 2003-03-07 | 1837 | 113.88d | 0d | start no earlier than 2003-02-20 | Cary Brisebois | 8h |
| 1839 | 6.11.12 | In car camera look control | 1d? | 2003-03-07 | 2003-03-10 | 1838 | 113.88d | 0d | start no earlier than 2003-02-20 | Cary Brisebois [80%] | 6.4h |
| 1840 | 6.11.13 | First person camera mode | 1d? | 2003-03-10 | 2003-03-11 | 1839 | 113.88d | 0d | start no earlier than 2003-02-20 | Cary Brisebois [80%] | 6.4h |
| 1841 | 6.11.14 | Camera/wall and camera/ground collision problems (with Greg) | 1d? | 2003-03-11 | 2003-03-12 | 1840 | 113.88d |  | start no earlier than 2003-02-20 | Cary Brisebois [80%] | 6.4h |
| 1842 | 3.11.12 | Art-related mission problems | 1d? | 2003-02-20 | 2003-02-21 |  | 120.88d | 0d | start no earlier than 2003-02-20 | Chuck Chow | 8h |
| 1843 | 3.11.13 | Art-related level art problems | 1d? | 2003-02-21 | 2003-02-24 | 1842 | 120.88d | 0d | start no earlier than 2003-02-20 | Chuck Chow | 8h |
| 1844 | 3.11.14 | Wrench functionality | 1d? | 2003-02-24 | 2003-02-25 | 1843 | 120.88d | 0d | start no earlier than 2003-02-20 | Chuck Chow | 8h |
| 1845 | 3.11.15 | World animation memory usage audit | 1d? | 2003-02-25 | 2003-02-26 | 1844 | 120.88d | 0d | start no earlier than 2003-02-20 | Chuck Chow | 8h |
| 1846 | 3.11.16 | Cleanup mission heap usage so that it can be easily emptied for FMV use in-game | 1d? | 2003-02-26 | 2003-02-27 | 1845 | 120.88d | 0d | start no earlier than 2003-02-20 | Chuck Chow | 8h |
| 1847 | 3.11.17 | Race circuit special geometry loading and rendering | 1d? | 2003-02-27 | 2003-02-28 | 1846 | 120.88d | 0d | start no earlier than 2003-02-20 | Chuck Chow | 8h |
| 1848 | 6.11.21 | Reward system changes (reward status saved and loaded correctly) | 1d? | 2003-02-28 | 2003-03-03 | 1847 | 120.88d |  | start no earlier than 2003-02-20 | Chuck Chow [80%] | 6.4h |
| 1849 | 6.11.22 | Ducking | 4d | 2003-02-20 | 2003-02-25 |  | 97d | 0d | start no earlier than 2003-02-20 | Darren Esau | 32h |
| 1850 | 6.11.23 | Engine sound refinement (spinout pitch change, ignition sound, etc)/final engine sounds | 10d | 2003-02-26 | 2003-03-11 | 1849 | 97d | 0d | start no earlier than 2003-02-20 | Darren Esau | 80h |
| 1851 | 6.11.24 | Comments and honks from traffic vehicles when hi/ near miss traffic sounds - events | 2d | 2003-03-12 | 2003-03-13 | 1850 | 97d | 0d | start no earlier than 2003-02-20 | Darren Esau | 16h |
| 1852 | 6.11.25 | Wasp sounds | 3d | 2003-03-14 | 2003-03-17 | 1851 | 97d | 0d | start no earlier than 2003-02-20 | Darren Esau | 24h |
| 1853 | 3.11.18 | Answering machine dialog when using a disabled phone booth | 1d | 2003-03-18 | 2003-03-18 | 1852 | 97d | 0d | start no earlier than 2003-02-20 | Darren Esau | 8h |
| 1854 | 3.11.19 | Terrain based sounds (in car and on foot) | 1d | 2003-03-19 | 2003-03-19 | 1853 | 97d | 0d | start no earlier than 2003-02-20 | Darren Esau | 8h |
| 1855 | 3.11.20 | Positional collision sound | 2d | 2003-03-20 | 2003-03-21 | 1854 | 97d | 0d | start no earlier than 2003-02-20 | Darren Esau | 16h |
| 1856 | 3.11.22 | Dialog script commands requested by designers | 2d | 2003-03-24 | 2003-03-25 | 1855 | 97d | 0d | start no earlier than 2003-02-20 | Darren Esau | 16h |
| 1857 | 6.11.30 | Doorbell triggered Dialogue | 1d | 2003-03-26 | 2003-03-26 | 1856 | 97d | 0d | start no earlier than 2003-02-20 | Darren Esau | 8h |
| 1858 | 6.11.31 | Explosion upon specific car collisions | 1d? | 2003-03-27 | 2003-03-27 | 1857 | 97d | 0d | start no earlier than 2003-02-21 |  |  |
| 1859 | 3.11.25 | Xbox ripping | 3d | 2003-03-28 | 2003-04-01 | 1858 | 97d | 0d | start no earlier than 2003-02-20 | Darren Esau | 24h |
| 1860 | 6.11.33 | PS2 mipmap tuning (MS 18) | 1d | 2003-04-02 | 2003-04-02 | 1859 | 97d |  | start no earlier than 2003-02-20 | Darren Esau | 8h |
| 1861 | 6.11.34 | Coin Sounds - pitch variation | 1d? | 2003-03-12 | 2003-03-12 |  | 113d |  | start no earlier than 2003-03-12 | Darren Esau | 8h |
| 1862 | 6.11.35 | Billboard quad rendering optimizations | 1d? | 2003-02-20 | 2003-02-21 |  | 116.88d | 0d | start no earlier than 2003-02-20 | Devin Murname [80%] | 6.4h |
| 1863 | 3.11.30 | Eliminate all draw order bugs | 1d? | 2003-02-21 | 2003-02-24 | 1862 | 116.88d | 0d | start no earlier than 2003-02-20 | Devin Murname | 8h |
| 1864 | 3.11.31 | Eliminate occurrences of draw culling pop-in | 1d? | 2003-02-24 | 2003-02-25 | 1863 | 116.88d | 0d | start no earlier than 2003-02-20 | Devin Murname | 8h |
| 1865 | 3.11.32 | Eliminate occurrences of load pop-in (verify optimal load trigger placement, investigate impact of disc layout, DVD performance, and compression, etc.) | 1d? | 2003-02-25 | 2003-02-26 | 1864 | 116.88d | 0d | start no earlier than 2003-02-20 | Devin Murname | 8h |
| 1866 | 3.11.33 | Vehicle art optimizations for performance improvement (reduce context switches) | 1d? | 2003-02-26 | 2003-02-27 | 1865 | 116.88d | 0d | start no earlier than 2003-02-20 | Devin Murname | 8h |
| 1867 | 3.11.34 | Load time optimizations (compression, load during level intro cam, optimize amount loading for mission select, etc) | 1d? | 2003-02-27 | 2003-02-28 | 1866 | 116.88d | 0d | start no earlier than 2003-02-20 | Devin Murname | 8h |
| 1868 | 3.11.35 | Fake flashing light effect on back of player’s vehicle when being chased | 1d? | 2003-02-28 | 2003-03-03 | 1867 | 116.88d | 0d | start no earlier than 2003-02-20 | Devin Murname | 8h |
| 1869 | 3.11.36 | PS2 CATS scan | 1d? | 2003-03-03 | 2003-03-04 | 1868 | 116.88d | 0d | start no earlier than 2003-02-20 | Devin Murname | 8h |
| 1870 | 6.11.43 | Navigation system rewrite (for both in-car and on-foot) | 1d? | 2003-03-04 | 2003-03-05 | 1869 | 116.88d | 0d | start no earlier than 2003-02-20 | Devin Murname [80%] | 6.4h |
| 1871 | 6.11.44 | Bee camera video effects | 1d? | 2003-03-05 | 2003-03-06 | 1870 | 116.88d | 0d | start no earlier than 2003-02-20 | Devin Murname [80%] | 6.4h |
| 1872 | 6.11.45 | File compression (MS 18) | 1d? | 2003-03-06 | 2003-03-07 | 1871 | 116.88d |  | start no earlier than 2003-02-20 | Devin Murname [80%] | 6.4h |
| 1873 | 3.11.37 | Vehicle AI improvements (working with Nigel) | 1d? | 2003-02-20 | 2003-02-21 |  | 116.88d | 0d | start no earlier than 2003-02-20 | Dusit Eakkachaichanvet | 8h |
| 1874 | 3.11.38 | Can surf on traffic cars | 1d? | 2003-02-21 | 2003-02-24 | 1873 | 116.88d | 0d | start no earlier than 2003-02-20 | Dusit Eakkachaichanvet | 8h |
| 1875 | 3.11.39 | Improved NPC character behaviour (they walk around) | 1d? | 2003-02-24 | 2003-02-25 | 1874 | 116.88d | 0d | start no earlier than 2003-02-20 | Dusit Eakkachaichanvet | 8h |
| 1876 | 6.11.49 | Race trigger characters walk around zone | 1d? | 2003-02-25 | 2003-02-26 | 1875 | 116.88d | 0d | start no earlier than 2003-02-20 | Dusit Eakkachaichanvet [80%] | 6.4h |
| 1877 | 6.11.50 | Incline sliding | 1d? | 2003-02-26 | 2003-02-27 | 1876 | 116.88d | 0d | start no earlier than 2003-02-20 | Dusit Eakkachaichanvet [80%] | 6.4h |
| 1878 | 6.11.51 | Traffic doesn’t disable when hit slightly | 1d? | 2003-02-27 | 2003-02-28 | 1877 | 116.88d | 0d | start no earlier than 2003-02-20 | Dusit Eakkachaichanvet [80%] | 6.4h |
| 1879 | 6.11.52 | Traffic near miss events (for audio response) | 1d? | 2003-02-28 | 2003-03-03 | 1878 | 116.88d | 0d | start no earlier than 2003-02-20 | Dusit Eakkachaichanvet [80%] | 6.4h |
| 1880 | 6.11.53 | Pedestrians walk around in other places than just the sidewalk | 1d? | 2003-03-03 | 2003-03-04 | 1879 | 116.88d | 0d | start no earlier than 2003-02-20 | Dusit Eakkachaichanvet [80%] | 6.4h |
| 1881 | 6.11.54 | Pedestrians are afraid of you after you have kicked them (turn ‘n’ run) | 1d? | 2003-03-04 | 2003-03-05 | 1880 | 116.88d | 0d | start no earlier than 2003-02-20 | Dusit Eakkachaichanvet [80%] | 6.4h |
| 1882 | 6.11.55 | Pedestrians cross road | 1d? | 2003-03-05 | 2003-03-06 | 1881 | 116.88d | 0d | start no earlier than 2003-02-20 | Dusit Eakkachaichanvet [80%] | 6.4h |
| 1883 | 6.11.56 | Lots of kids in Cletus’s yard | 1d? | 2003-03-06 | 2003-03-07 | 1882 | 116.88d |  | start no earlier than 2003-02-20 | Dusit Eakkachaichanvet [80%] | 6.4h |
| 1884 | 3.11.40 | Improved jumps | 1d? | 2003-02-20 | 2003-02-21 |  | 113.88d | 0d | start no earlier than 2003-02-20 | Greg Mayer | 8h |
| 1885 | 3.11.41 | Remove destroyed AI cars from mission | 1d? | 2003-02-21 | 2003-02-24 | 1884 | 113.88d | 0d | start no earlier than 2003-02-20 | Greg Mayer | 8h |
| 1886 | 3.11.42 | Fix large car collision impulses | 1d? | 2003-02-24 | 2003-02-25 | 1885 | 113.88d | 0d | start no earlier than 2003-02-20 | Greg Mayer | 8h |
| 1887 | 6.11.60 | Damage Volumes | 1d? | 2003-02-25 | 2003-02-26 | 1886 | 113.88d | 0d | start no earlier than 2003-02-25 | Greg Mayer [80%] | 6.4h |
| 1888 | 3.11.43 | Camera collision with walls and ground (with Cary) | 1d? | 2003-02-26 | 2003-02-27 | 1887 | 113.88d | 0d | start no earlier than 2003-02-20 | Greg Mayer | 8h |
| 1889 | 3.11.45 | Low speed steering lag adjustments | 1d? | 2003-02-27 | 2003-02-28 | 1888 | 113.88d | 0d | start no earlier than 2003-02-20 | Greg Mayer | 8h |
| 1890 | 3.11.48 | Car auto-reset | 1d? | 2003-02-28 | 2003-03-03 | 1889 | 113.88d | 0d | start no earlier than 2003-02-20 | Greg Mayer | 8h |
| 1891 | 3.11.50 | Improved vehicle-vehicle collisions | 1d? | 2003-03-03 | 2003-03-04 | 1890 | 113.88d | 0d | start no earlier than 2003-02-20 | Greg Mayer | 8h |
| 1892 | 3.11.51 | Get driver and passenger skeletons to react to movement of the car | 1d? | 2003-03-04 | 2003-03-05 | 1891 | 113.88d | 0d | start no earlier than 2003-02-20 | Greg Mayer | 8h |
| 1893 | 3.11.52 | Car teeter mechanism (for righting the car when on its size) | 1d? | 2003-03-05 | 2003-03-06 | 1892 | 113.88d | 0d | start no earlier than 2003-02-20 | Greg Mayer [80%] | 6.4h |
| 1894 | 6.11.67 | Disable collisions with some objects after they are hit and come to rest | 1d? | 2003-03-06 | 2003-03-07 | 1893 | 113.88d | 0d | start no earlier than 2003-02-20 | Greg Mayer [80%] | 6.4h |
| 1895 | 6.11.68 | Physics system performance improvements | 1d? | 2003-03-07 | 2003-03-10 | 1894 | 113.88d | 0d | start no earlier than 2003-02-20 | Greg Mayer [80%] | 6.4h |
| 1896 | 6.11.69 | Analyze profiler results for physics code | 1d? | 2003-03-10 | 2003-03-11 | 1895 | 113.88d | 0d | start no earlier than 2003-02-20 | Greg Mayer [80%] | 6.4h |

Notes:
- 1848: Awaiting details from designers / Chuck Chow (Thu 27/02/03): ==== Republished to Microsoft Project server by Wolfgang Hamann on 27/02/03 10:53 AM ===== / Awaiting details from designers
- 1849: has a crash bug
- 1850: Greg - vehicles, spinning wheel physics, / iteratve process with marc & may not take a full 2 weeks / Darren Esau (Thu 20/02/03): ==== Published to Microsoft Project server by Wolfgang Hamann on 20/02/03 3:48 PM ===== / Greg - vehicles, spinning wheel physics, / iteratve process with marc & may not take a full 2 weeks
- 1851: Dependency - Dusit wrt events / Darren Esau (Thu 20/02/03): ==== Published to Microsoft Project server by Wolfgang Hamann on 20/02/03 3:48 PM ===== / Dependency - Dusit wrt events / Need to talk to Chris wrt comments
- 1852: everything from wasp sounds on down may not get in this ms / Darren Esau (Thu 20/02/03): ==== Published to Microsoft Project server by Wolfgang Hamann on 20/02/03 3:48 PM ===== / everything from wasp sounds on down may not get in this ms
- 1853: dependency - need final dialogue? check with Chris / Darren Esau (Thu 20/02/03): ==== Published to Microsoft Project server by Wolfgang Hamann on 20/02/03 3:48 PM ===== / dependency - need final dialogue? check with Chris
- 1857: no dialogue for this - check with Chris (wolfgang) / we have no doorbells - check with Cory (wolfgang)
- 1858: cory working on explosion sounds - Wolfgang to check
- 1859: kill this feature
- 1860: maybe devin
- 1861: added March 12, 2003
- 1862: Dependencies: / -All load related tasks require me to increase framerate first. Unless we run at 30fps min, there's no way we get enough load servicing. / -Red Light chase car effect: Relies on Artists to remove a light from every world first. I've already emailed Yayoi regarding this. / -Bee video effects & Nav system wait on Designer's final design. / -Vehicle art optimisations wait on Kevin having time to address them. I will be building a tool to flag unoptimised cars for Kev. / -Bee and Crate optimisations, are really just work for Michael R, Marraffa, and Aryan. Joel just asked me to verify the fixes, as they come in.
- 1870: Awaiting Designer details / Devin Murname (Thu 20/02/03): ==== Published to Microsoft Project server by Wolfgang Hamann on 20/02/03 3:49 PM ===== / Awaiting Designer details
- 1871: Awaiting Designer details / Devin Murname (Thu 20/02/03): ==== Published to Microsoft Project server by Wolfgang Hamann on 20/02/03 3:49 PM ===== / Awaiting Designer details
- 1875: Waiting on more direction from Design

| ID | WBS | Task | Duration | Start | Finish | Predecessors | Total slack | Free slack | Constraint | Resources | Work |
| --- | --- | --- | --- | --- | --- | --- | --- | --- | --- | --- | --- |
| 1897 | 6.11.70 | Interactive physics gags | 1d? | 2003-03-11 | 2003-03-12 | 1896 | 113.88d |  | start no earlier than 2003-02-20 | Greg Mayer [80%] | 6.4h |
| 1898 | 6.11.71 | Refraction shader performance improvements | 1d? | 2003-02-20 | 2003-02-21 |  | 116.88d | 0d | start no earlier than 2003-02-20 | Iain Gipson | 8h |
| 1899 | 6.11.72 | Eliminate or minimize load screen stutters | 1d? | 2003-02-21 | 2003-02-24 | 1898 | 116.88d | 0d | start no earlier than 2003-02-20 | Iain Gipson | 8h |
| 1900 | 6.11.73 | Mission presentation changes requested by designers | 1d? | 2003-02-24 | 2003-02-25 | 1899 | 116.88d | 0d | start no earlier than 2003-02-20 | Iain Gipson | 8h |
| 1901 | 6.11.74 | Improvements to conversation presentation requested by designers | 1d? | 2003-02-25 | 2003-02-26 | 1900 | 116.88d | 0d | start no earlier than 2003-02-20 | Iain Gipson | 8h |
| 1902 | 6.11.75 | Confirm eye-blinking working on all characters | 1d? | 2003-02-26 | 2003-02-27 | 1901 | 116.88d | 0d | start no earlier than 2003-02-20 | Iain Gipson | 8h |
| 1903 | 6.11.76 | Disable tutorial system for levels 2-7 | 1d? | 2003-02-27 | 2003-02-28 | 1902 | 116.88d | 0d | start no earlier than 2003-02-20 | Iain Gipson | 8h |
| 1904 | 6.11.77 | Mouth flapping iteration | 1d? | 2003-02-28 | 2003-03-03 | 1903 | 116.88d | 0d | start no earlier than 2003-02-20 | Iain Gipson | 8h |
| 1905 | 6.11.78 | Level end / game end presentation | 1d? | 2003-03-03 | 2003-03-04 | 1904 | 116.88d | 0d | start no earlier than 2003-02-20 | Iain Gipson | 8h |
| 1906 | 6.11.79 | Race specific presentation (e.g. Patty and Selma) | 1d? | 2003-03-04 | 2003-03-05 | 1905 | 116.88d | 0d | start no earlier than 2003-02-20 | Iain Gipson | 8h |
| 1907 | 6.11.80 | Car damage out presentation | 1d? | 2003-03-05 | 2003-03-06 | 1906 | 116.88d | 0d | start no earlier than 2003-02-20 | Iain Gipson | 8h |
| 1908 | 6.11.81 | Unused code removal (MS 18) | 1d? | 2003-03-06 | 2003-03-07 | 1907 | 116.88d |  | start no earlier than 2003-02-20 | Iain Gipson | 8h |
| 1909 | 3.11.53 | Ability to play movies during the game | 1d? | 2003-02-20 | 2003-02-21 |  | 118.88d | 0d | start no earlier than 2003-02-20 | James Harrison | 8h |
| 1910 | 3.11.54 | In-game movie presentation, including fading and brief HUD reload screen | 1d? | 2003-02-21 | 2003-02-24 | 1909 | 118.88d | 0d | start no earlier than 2003-02-20 | James Harrison | 8h |
| 1911 | 3.11.55 | Disable in-game simulation when showing in-game FMV | 1d? | 2003-02-24 | 2003-02-25 | 1910 | 118.88d | 0d | start no earlier than 2003-02-20 | James Harrison | 8h |
| 1912 | 3.11.56 | Crate art review (memory, frame rate) | 1d? | 2003-02-25 | 2003-02-26 | 1911 | 118.88d | 0d | start no earlier than 2003-02-20 | James Harrison | 8h |
| 1913 | 3.11.57 | FMV related out of memory bugs | 1d? | 2003-02-26 | 2003-02-27 | 1912 | 118.88d | 0d | start no earlier than 2003-02-20 | James Harrison | 8h |
| 1914 | 6.11.87 | Coin system and coin behaviour | 1d? | 2003-02-27 | 2003-02-28 | 1913 | 118.88d | 0d | start no earlier than 2003-02-20 | James Harrison [80%] | 6.4h |
| 1915 | 6.11.88 | Some breakables maintain state on memory card | 1d? | 2003-02-28 | 2003-03-03 | 1914 | 118.88d | 0d | start no earlier than 2003-02-20 | James Harrison [80%] | 6.4h |
| 1916 | 6.11.89 | Fix all vehicle shadow sizes | 1d? | 2003-03-03 | 2003-03-04 | 1915 | 118.88d | 0d | start no earlier than 2003-02-20 | James Harrison [80%] | 6.4h |
| 1917 | 6.11.90 | Shadow volumes working correctly | 1d? | 2003-03-04 | 2003-03-05 | 1916 | 118.88d |  | start no earlier than 2003-02-20 | James Harrison [80%] | 6.4h |
| 1918 | 3.11.58 | Thread safe group IDs and flags | 1d? | 2003-02-20 | 2003-02-21 |  | 121.88d | 0d | start no earlier than 2003-02-20 | Joel DeYoung | 8h |
| 1919 | 3.11.59 | Command line parameters read from text file | 1d? | 2003-02-21 | 2003-02-24 | 1918 | 121.88d | 0d | start no earlier than 2003-02-20 | Joel DeYoung | 8h |
| 1920 | 3.11.60 | Firewire | 1d? | 2003-02-24 | 2003-02-25 | 1919 | 121.88d | 0d | start no earlier than 2003-02-20 | Joel DeYoung | 8h |
| 1921 | 6.11.94 | Minimize size of TEMP heap (radScript buffer problems, mesh sizes in front end) | 1d? | 2003-02-25 | 2003-02-26 | 1920 | 121.88d | 0d | start no earlier than 2003-02-20 | Joel DeYoung [50%] | 4h |
| 1922 | 6.11.95 | Ongoing memory use audits and debugging (textures, animations) | 1d? | 2003-02-26 | 2003-02-27 | 1921 | 121.88d | 0d | start no earlier than 2003-02-20 | Joel DeYoung [50%] | 4h |
| 1923 | 6.11.96 | Memory leaks | 1d? | 2003-02-27 | 2003-02-28 | 1922 | 121.88d |  | start no earlier than 2003-02-20 | Joel DeYoung [50%] | 4h |
| 1924 | 3.11.61 | Wasp system, including wasp AI | 1d? | 2003-02-20 | 2003-02-21 |  | 120.88d | 0d | start no earlier than 2003-02-20 | Michael Riegger | 8h |
| 1925 | 3.11.62 | Wasp skeleton art review | 1d? | 2003-02-21 | 2003-02-24 | 1924 | 120.88d | 0d | start no earlier than 2003-02-20 | Michael Riegger | 8h |
| 1926 | 3.11.63 | Ongoing special effects | 1d? | 2003-02-24 | 2003-02-25 | 1925 | 120.88d | 0d | start no earlier than 2003-02-20 | Michael Riegger | 8h |
| 1927 | 3.11.64 | Improved lens flare implementation from ATG | 1d? | 2003-02-25 | 2003-02-26 | 1926 | 120.88d | 0d | start no earlier than 2003-02-20 | Michael Riegger | 8h |
| 1928 | 3.11.65 | State prop integration | 1d? | 2003-02-26 | 2003-02-27 | 1927 | 120.88d | 0d | start no earlier than 2003-02-20 | Michael Riegger | 8h |
| 1929 | 3.11.66 | Fix excessive size in particle systems (e.g. shrubs) | 1d? | 2003-02-27 | 2003-02-28 | 1928 | 120.88d | 0d | start no earlier than 2003-02-20 | Michael Riegger | 8h |
| 1930 | 3.11.67 | All code needed for final mission, including tractor beam | 1d? | 2003-02-28 | 2003-03-03 | 1929 | 120.88d |  | start no earlier than 2003-02-20 | Michael Riegger | 8h |
| 1931 | 3.11.70 | Vehicle AI improvements (working with Dusit) | 1d? | 2003-02-20 | 2003-02-21 |  | 113.88d | 0d | start no earlier than 2003-02-20 | Nigel Brooke | 8h |
| 1932 | 3.11.71 | Optimize choreo memory usage (for both characters and vehicles) | 1d? | 2003-02-21 | 2003-02-24 | 1931 | 113.88d | 0d | start no earlier than 2003-02-20 | Nigel Brooke | 8h |
| 1933 | 3.11.72 | Double-jump-slam and jump-kick animations work as designed | 1d? | 2003-02-24 | 2003-02-25 | 1932 | 113.88d | 0d | start no earlier than 2003-02-20 | Nigel Brooke | 8h |
| 1934 | 3.11.73 | Complete driver and passenger animations | 1d? | 2003-02-25 | 2003-02-26 | 1933 | 113.88d | 0d | start no earlier than 2003-02-20 | Nigel Brooke | 8h |
| 1935 | 3.11.74 | Interactive gags dyna load based on distance | 1d? | 2003-02-26 | 2003-02-27 | 1934 | 113.88d | 0d | start no earlier than 2003-02-20 | Nigel Brooke | 8h |
| 1936 | 3.11.75 | Fix outstanding interior bugs | 1d? | 2003-02-27 | 2003-02-28 | 1935 | 113.88d | 0d | start no earlier than 2003-02-20 | Nigel Brooke | 8h |
| 1937 | 3.11.76 | On-foot damage animations (falling from long distances, getting hit) | 1d? | 2003-02-28 | 2003-03-03 | 1936 | 113.88d | 0d | start no earlier than 2003-02-20 | Nigel Brooke | 8h |
| 1938 | 6.11.111 | General cleanup of interior system architecture | 1d? | 2003-03-03 | 2003-03-04 | 1937 | 113.88d | 0d | start no earlier than 2003-02-20 | Nigel Brooke [80%] | 6.4h |
| 1939 | 6.11.112 | Ability to start missions in an interior | 1d? | 2003-03-04 | 2003-03-05 | 1938 | 113.88d | 0d | start no earlier than 2003-02-20 | Nigel Brooke [80%] | 6.4h |
| 1940 | 6.11.113 | Ability to have collectibles in an interior | 1d? | 2003-03-05 | 2003-03-06 | 1939 | 113.88d | 0d | start no earlier than 2003-02-20 | Nigel Brooke [80%] | 6.4h |
| 1941 | 6.11.114 | Improve handling of objects flying out of AI cars (make it easier to catch them without slowing down or going back) | 1d? | 2003-03-06 | 2003-03-07 | 1940 | 113.88d | 0d | start no earlier than 2003-02-20 | Nigel Brooke [80%] | 6.4h |
| 1942 | 6.11.115 | Fixes for characters on moving platform bugs | 1d? | 2003-03-07 | 2003-03-10 | 1941 | 113.88d | 0d | start no earlier than 2003-02-20 | Nigel Brooke [80%] | 6.4h |
| 1943 | 6.11.116 | Incorporate ATG light chooser for environmental lighting effects | 1d? | 2003-03-10 | 2003-03-11 | 1942 | 113.88d | 0d | start no earlier than 2003-02-20 | Nigel Brooke [80%] | 6.4h |
| 1944 | 6.11.117 | Victory animations | 1d? | 2003-03-11 | 2003-03-12 | 1943 | 113.88d |  | start no earlier than 2003-02-20 | Nigel Brooke [80%] | 6.4h |
| 1945 | 3.11.77 | Front end changes | 1d? | 2003-02-20 | 2003-02-21 |  | 111.88d | 0d | start no earlier than 2003-02-20 | Tony Chu | 8h |
| 1946 | 3.11.78 | Several specific HUD presentation changes (e.g. card collection, coin collection) | 1d? | 2003-02-21 | 2003-02-24 | 1945 | 111.88d | 0d | start no earlier than 2003-02-20 | Tony Chu | 8h |
| 1947 | 3.11.79 | New HUD implementation | 1d? | 2003-02-24 | 2003-02-25 | 1946 | 111.88d | 0d | start no earlier than 2003-02-20 | Tony Chu | 8h |
| 1948 | 3.11.80 | Answering machine behaviour when using phone booth during mission | 1d? | 2003-02-25 | 2003-02-26 | 1947 | 111.88d | 0d | start no earlier than 2003-02-20 | Tony Chu | 8h |
| 1949 | 3.11.81 | Pause menu changes | 1d? | 2003-02-26 | 2003-02-27 | 1948 | 111.88d | 0d | start no earlier than 2003-02-20 | Tony Chu | 8h |
| 1950 | 3.11.82 | New scrapbook implementation | 1d? | 2003-02-27 | 2003-02-28 | 1949 | 111.88d | 0d | start no earlier than 2003-02-20 | Tony Chu | 8h |
| 1951 | 3.11.83 | New reward UI (screens for skins and vehicles, etc) | 1d? | 2003-02-28 | 2003-03-03 | 1950 | 111.88d | 0d | start no earlier than 2003-02-20 | Tony Chu | 8h |
| 1952 | 6.11.125 | Front end brightness control | 1d? | 2003-03-03 | 2003-03-04 | 1951 | 111.88d | 0d | start no earlier than 2003-02-20 | Tony Chu [80%] | 6.4h |
| 1953 | 6.11.126 | Memory card icons | 1d? | 2003-03-04 | 2003-03-05 | 1952 | 111.88d | 0d | start no earlier than 2003-02-20 | Tony Chu [80%] | 6.4h |
| 1954 | 6.11.127 | Mission objective text display | 1d? | 2003-03-05 | 2003-03-06 | 1953 | 111.88d | 0d | start no earlier than 2003-02-20 | Tony Chu [80%] | 6.4h |
| 1955 | 6.11.128 | Changes to audio options menu | 1d? | 2003-03-06 | 2003-03-07 | 1954 | 111.88d | 0d | start no earlier than 2003-02-20 | Tony Chu [80%] | 6.4h |
| 1956 | 6.11.129 | Bonus game HUD | 1d? | 2003-03-07 | 2003-03-10 | 1955 | 111.88d | 0d | start no earlier than 2003-02-20 | Tony Chu [80%] | 6.4h |
| 1957 | 6.11.130 | Bonus game UI | 1d? | 2003-03-10 | 2003-03-11 | 1956 | 111.88d | 0d | start no earlier than 2003-02-20 | Tony Chu [80%] | 6.4h |
| 1958 | 6.11.131 | Fix lighting on Homer in front end | 1d? | 2003-03-11 | 2003-03-12 | 1957 | 111.88d | 0d | start no earlier than 2003-02-20 | Tony Chu [80%] | 6.4h |
| 1959 | 6.11.132 | Make sure you can always call your default level vehicle from the phone booth | 1d? | 2003-03-12 | 2003-03-13 | 1958 | 111.88d | 0d | start no earlier than 2003-02-20 | Tony Chu [80%] | 6.4h |
| 1960 | 6.11.133 | Final cheat implementation (only shipping cheats #ifdef FINAL) | 1d? | 2003-03-13 | 2003-03-14 | 1959 | 111.88d |  | start no earlier than 2003-02-20 | Tony Chu [80%] | 6.4h |

Notes:
- 1897: Awaiting Designer details / Greg Mayer (Thu 27/02/03): ==== Published to Microsoft Project server by Wolfgang Hamann on 27/02/03 10:57 AM ===== / Awaiting Designer details
- 1905: Awaiting Designer details / Iain Gipson (Fri 21/02/03): ==== Published to Microsoft Project server by Wolfgang Hamann on 20/02/03 3:51 PM ===== / Awaiting Designer details
- 1906: Awaiting Designer details / Iain Gipson (Fri 21/02/03): ==== Published to Microsoft Project server by Wolfgang Hamann on 20/02/03 3:51 PM ===== / Awaiting Designer details
- 1907: Awaiting Designer details / Iain Gipson (Fri 21/02/03): ==== Published to Microsoft Project server by Wolfgang Hamann on 20/02/03 3:51 PM ===== / Awaiting Designer details
- 1914: Awaiting Designer details / James Harrison (Thu 20/02/03): ==== Published to Microsoft Project server by Wolfgang Hamann on 20/02/03 3:51 PM ===== / Awaiting Designer details
- 1915: Awaiting Designer details / James Harrison (Thu 20/02/03): ==== Published to Microsoft Project server by Wolfgang Hamann on 20/02/03 3:51 PM ===== / Awaiting Designer details
- 1924: Awaiting Designer details
- 1925: Michael Riegger (Thu 27/02/03): Optimizations almost entirely artist-side. Dependent on features determined important by designers
- 1928: Michael Riegger (Thu 27/02/03): Pretty much done.
- 1929: Michael Riegger (Thu 27/02/03): Should be in by Wednesday
- 1944: Awaiting Designer details / Nigel Brooke (Thu 27/02/03): ==== Republished to Microsoft Project server by Wolfgang Hamann on 27/02/03 11:00 AM ===== / Awaiting Designer details
- 1946: Awaiting Designer details / Tony Chu (Fri 21/02/03): ==== Published to Microsoft Project server by Wolfgang Hamann on 20/02/03 3:53 PM ===== / Awaiting Designer details

| ID | WBS | Task | Duration | Start | Finish | Complete | Remaining | Total slack | Constraint | Resources | Work | Actual work |
| --- | --- | --- | --- | --- | --- | --- | --- | --- | --- | --- | --- | --- |
| 1963 | 6.12 | **Milestone 18 - (April 15th) (Alpha)(Feature Complete)** | 21.12d? | 2003-03-17 A | 2003-04-15 | 11% | 18.76d? | 88.88d |  |  | 4888h | 520.48h |
| 1964 | 6.12.1 | Integrate changes from ATG | 3d | 2003-03-18 A | 2003-03-21 A | 100% |  |  | start no earlier than 2003-03-18 | Cary Brisebois | 24h | 24h |
| 1965 | 6.12.2 | Bonus game | 3d | 2003-03-18 A | 2003-03-21 A | 100% |  |  | start no earlier than 2003-03-18 | Cary Brisebois | 24h | 24h |
| 1966 | 6.12.3 | Side camera views | 3d | 2003-03-18 A | 2003-03-21 A | 100% |  |  | start no earlier than 2003-03-18 | Cary Brisebois | 24h | 24h |
| 1967 | 6.12.4 | Support for scriptable iris wpe | 3d | 2003-03-18 A | 2003-03-21 A | 100% |  |  | start no earlier than 2003-03-18 | Cary Brisebois | 24h | 24h |
| 1968 | 5.12.5 | World builder support for doorbells | 5d | 2003-03-24 | 2003-03-28 |  |  | 100d | start no earlier than 2003-03-24 | Cary Brisebois [80%] | 32h |  |
| 1969 | 6.12.5 | Better handling of forced vehicle mission success and failure conditions | 5d | 2003-03-24 | 2003-03-28 |  |  | 100d | finish no earlier than 2003-03-28 | Cary Brisebois | 40h |  |
| 1970 | 6.12.6 | Camera/wall and camera/ground collision problems (with Greg) | 5d | 2003-03-24 | 2003-03-28 |  |  | 100d | finish no earlier than 2003-03-28 | Cary Brisebois | 40h |  |
| 1971 | 6.12.7 | GameCube memory management / art reduction | 5d | 2003-04-07 | 2003-04-11 |  |  | 90d | finish no earlier than 2003-04-11 | Cary Brisebois | 40h |  |
| 1972 | 6.12.8 | Bonus game final changes | 5d | 2003-04-07 | 2003-04-11 |  |  | 90d | finish no earlier than 2003-04-11 | Cary Brisebois | 40h |  |
| 1973 | 3.11.12 | Pipeline support for props laid down for races | 3d | 2003-03-18 | 2003-03-21 |  |  | 105.88d | start no earlier than 2003-03-18 | Chuck Chow | 24h |  |
| 1974 | 3.11.13 | Command line parameters read from text file | 3d | 2003-03-18 | 2003-03-21 |  |  | 105.88d | start no earlier than 2003-03-18 | Chuck Chow | 24h |  |
| 1975 | 3.11.14 | Eliminate p3dshaderopt completely from the pipeline | 3d | 2003-03-18 | 2003-03-21 |  |  | 105.88d | start no earlier than 2003-03-18 | Chuck Chow | 24h |  |
| 1976 | 3.11.15 | Can play through levels 1-2 | 3d | 2003-03-18 | 2003-03-21 |  |  | 105.88d | start no earlier than 2003-03-18 | Chuck Chow | 24h |  |
| 1977 | 3.11.16 | Integrate all 21 races into the game | 5d | 2003-03-24 | 2003-03-28 |  |  | 100d | finish no earlier than 2003-03-28 | Chuck Chow | 40h |  |
| 1978 | 3.11.17 | Race circuit gambling functionality | 5d | 2003-03-24 | 2003-03-28 |  |  | 100d | finish no earlier than 2003-03-28 | Chuck Chow | 40h |  |
| 1979 | 6.12.21 | Can play through levels 1-4 | 5d | 2003-03-24 | 2003-03-28 |  |  | 100d | finish no earlier than 2003-03-28 | Chuck Chow [80%] | 32h |  |
| 1980 | 5.12.16 | Can play through levels 1-6 | 5d | 2003-03-31 | 2003-04-04 |  |  | 95d | finish no earlier than 2003-04-04 | Chuck Chow [80%] | 32h |  |
| 1981 | 5.12.17 | Can play through entire game | 5d | 2003-04-07 | 2003-04-11 |  |  | 90d | finish no earlier than 2003-04-11 | Chuck Chow [80%] | 32h |  |
| 1982 | 3.11.18 | Traffic driver sounds | 3.88d | 2003-03-18 A | 2003-03-21 A | 100% |  |  | start no earlier than 2003-03-18 | Darren Esau [77.4%] | 24h | 24h |
| 1983 | 3.11.19 | Engine sound refinement (spinout pitch change, ignition sound, etc) | 3.88d | 2003-03-18 A | 2003-03-21 A | 100% |  |  | start no earlier than 2003-03-18 | Darren Esau [77.4%] | 24h | 24h |
| 1984 | 3.11.20 | Ducking | 3d | 2003-03-18 A | 2003-03-21 | 91% | 0.27d | 105.88d | start no earlier than 2003-03-18 | Darren Esau [33.3%] | 8h | 7.28h |
| 1985 | 3.11.21 | Answering machine dialog when using a disabled phone booth | 5d | 2003-03-24 A | 2003-03-28 | 91% | 0.45d | 100d | finish no earlier than 2003-03-28 | Darren Esau | 40h | 36.4h |
| 1986 | 3.11.22 | Wasp sounds | 5d | 2003-03-24 A | 2003-03-28 | 85% | 0.75d | 100d | finish no earlier than 2003-03-28 | Darren Esau | 40h | 34h |
| 1987 | 3.11.23 | Positional collision sounds | 5d | 2003-03-24 A | 2003-03-28 A | 100% |  |  | finish no earlier than 2003-03-28 | Darren Esau | 40h | 40h |
| 1988 | 3.11.25 | Car jump landing sounds | 5d | 2003-03-24 | 2003-03-28 |  |  | 100d | finish no earlier than 2003-03-28 | Darren Esau | 40h |  |
| 1989 | 6.12.29 | Doorbell dialogue | 5d | 2003-03-31 A | 2003-04-04 | 70% | 1.5d | 95d | finish no earlier than 2003-04-04 | Darren Esau | 40h | 28h |
| 1990 | 6.12.30 | AI vehicle sounds | 5d | 2003-03-31 | 2003-04-04 |  |  | 95d | finish no earlier than 2003-04-04 | Darren Esau | 40h |  |
| 1991 | 6.12.31 | Final actor dialog integration | 5d | 2003-03-31 | 2003-04-07 |  |  | 94.88d | start no earlier than 2003-03-31 | Darren Esau | 40h |  |
| 1992 | 6.12.32 | Localized dialog pipeline | 5d | 2003-04-07 | 2003-04-11 |  |  | 90d | start no earlier than 2003-04-07 | Darren Esau | 40h |  |
| 1993 | 6.12.33 | Credits sounds | 5d | 2003-04-07 | 2003-04-11 |  |  | 90d | start no earlier than 2003-04-07 | Darren Esau | 40h |  |
| 1994 | 5.12.31 | Villain dialogue | 1d? | 2003-03-26 A | 2003-03-26 | 75% | 0.25d? | 102d | start no earlier than 2003-03-26 | Darren Esau | 8h | 6h |
| 1995 | 5.12.32 | Coin sounds pitching up & simpsons theme - random | 1d? | 2003-03-26 A | 2003-03-26 | 10% | 0.9d? | 102d | start no earlier than 2003-03-26 | Darren Esau | 8h | 0.8h |
| 1996 | 5.12.33 | Collision objects (ie. Lamp posts) need dynamics (vol decaying) | 1d? | 2003-03-26 | 2003-03-26 |  |  | 102d | start no earlier than 2003-03-26 | Darren Esau | 8h |  |
| 1997 | 5.12.34 | Doppler effect on engine sounds & horns | 1d? | 2003-03-26 A | 2003-03-26 A | 100% |  |  | start no earlier than 2003-03-26 | Darren Esau | 8h | 8h |
| 1998 | 5.12.35 | Pedestrian Dialogue | 1d? | 2003-04-04 | 2003-04-04 |  |  | 95d | finish no earlier than 2003-04-04 | Darren Esau | 8h |  |
| 1999 | 6.12.37 | Eliminate all draw order bugs | 5d | 2003-03-17 A | 2003-03-21 A | 100% |  |  | finish no earlier than 2003-03-21 | Devin Murname [80%] | 32h | 32h |
| 2000 | 3.11.30 | Eliminate occurrences of draw culling pop-in | 5d | 2003-03-24 | 2003-03-28 |  |  | 100d | finish no earlier than 2003-03-28 | Devin Murname | 40h |  |
| 2001 | 5.12.38 | Navigation arrows on closest road segment to player | 5d | 2003-03-24 | 2003-03-28 |  |  | 100d | start no earlier than 2003-03-24 | Devin Murname [80%] | 32h |  |
| 2002 | 3.11.31 | Eliminate occurrences of load pop-in (verify optimal load trigger placement, investigate impact of disc layout, DVD performance, and compression, etc.) | 5d | 2003-03-31 | 2003-04-04 |  |  | 95d | finish no earlier than 2003-04-04 | Devin Murname | 40h |  |
| 2003 | 3.11.32 | Vehicle art optimizations for performance improvement (reduce context switches) | 5d | 2003-03-31 | 2003-04-04 |  |  | 95d | start no earlier than 2003-03-31 | Devin Murname | 40h |  |
| 2004 | 3.11.34 | Fake flashing light effect on back of player’s vehicle when being chased | 5d | 2003-03-31 | 2003-04-04 |  |  | 95d | start no earlier than 2003-03-31 | Devin Murname | 40h |  |
| 2005 | 3.11.35 | PS2 CATS scan | 5d | 2003-04-07 | 2003-04-11 |  |  | 90d | finish no earlier than 2003-04-11 | Devin Murname | 40h |  |
| 2006 | 3.11.36 | Jump camera video effects | 5d | 2003-04-07 | 2003-04-11 |  |  | 90d | finish no earlier than 2003-04-11 | Devin Murname | 40h |  |
| 2007 | 3.11.37 | Improved race ranking results | 3d | 2003-03-18 A | 2003-03-21 A | 100% |  |  | start no earlier than 2003-03-18 | Dusit Eakkachaichanvet | 24h | 24h |
| 2008 | 3.11.38 | Fixes for traffic driver sound events for Darren | 3d | 2003-03-18 A | 2003-03-21 A | 100% |  |  | start no earlier than 2003-03-18 | Dusit Eakkachaichanvet | 24h | 24h |
| 2009 | 3.11.39 | Vehicle AI catch up logic | 3d | 2003-03-18 A | 2003-03-21 A | 100% |  |  | start no earlier than 2003-03-18 | Dusit Eakkachaichanvet | 24h | 24h |
| 2010 | 6.12.51 | Improved NPC character behaviour (they walk around) | 5d | 2003-03-24 A | 2003-03-28 A | 100% |  |  | finish no earlier than 2003-03-28 | Dusit Eakkachaichanvet [80%] | 32h | 32h |
| 2011 | 6.12.52 | Race trigger characters walk around zone | 5d | 2003-03-24 A | 2003-03-28 A | 100% |  |  | finish no earlier than 2003-03-28 | Dusit Eakkachaichanvet [80%] | 32h | 32h |
| 2012 | 6.12.53 | Simpsons characters as pedestrians | 5d | 2003-03-24 A | 2003-03-28 A | 100% |  |  | finish no earlier than 2003-03-28 | Dusit Eakkachaichanvet [80%] | 32h | 32h |
| 2013 | 6.12.54 | Panicked pedestrians | 5d | 2003-03-24 A | 2003-03-28 | 50% | 2.5d | 100d | finish no earlier than 2003-03-28 | Dusit Eakkachaichanvet [80%] | 32h | 16h |
| 2014 | 5.12.51 | All destroyed cars change to husks | 5d | 2003-03-24 | 2003-03-28 |  |  | 100d | finish no earlier than 2003-03-28 | Dusit Eakkachaichanvet [80%] | 32h |  |
| 2015 | 6.12.55 | Better handling of player being hit by a car | 5d | 2003-04-07 | 2003-04-11 |  |  | 90d | finish no earlier than 2003-04-11 | Dusit Eakkachaichanvet [80%] | 32h |  |
| 2016 | 5.12.53 | Traffic swerving and headlight flashing | 5d | 2003-04-07 | 2003-04-11 |  |  | 90d | start no earlier than 2003-04-07 | Dusit Eakkachaichanvet [80%] | 32h |  |
| 2017 | 6.12.56 | Tasks remaining for bonus game | 5d | 2003-04-07 | 2003-04-11 |  |  | 90d | finish no earlier than 2003-04-11 | Dusit Eakkachaichanvet [80%] | 32h |  |

Notes:
- 1968: We need to make sure someone on the design side is scheduled to place / the required data using the world builder. / Cary Brisebois (Tue 3/25/03): ==== Republished to Microsoft Project server by whamann on 3/25/03 10:03 AM ===== / We need to make sure someone on the design side is scheduled to place / the required data using the world builder.
- 1985: Honks are done / Darren Esau (Wed 19/03/03): ==== Published to Microsoft Project server by Wolfgang Hamann on 19/03/03 10:40 AM ===== / Honks are done / need to talk to chris wrt
- 1986: What is the design? ie. changing sounds when angry / Darren Esau (Wed 19/03/03): ==== Published to Microsoft Project server by Wolfgang Hamann on 19/03/03 10:40 AM ===== / What is the design? ie. changing sounds when angry
- 1987: waiting for sounds/dialogue & design / need meeting: chris, cory & darren / Darren Esau (Wed 19/03/03): ==== Published to Microsoft Project server by Wolfgang Hamann on 19/03/03 10:40 AM ===== / waiting for sounds/dialogue & design / need meeting: chris, cory & darren
- 1988: Darren needs to talk to Marc Baril wrt design / camera? / depends on getting a collision event / Darren Esau (Wed 19/03/03): ==== Published to Microsoft Project server by Wolfgang Hamann on 19/03/03 10:40 AM ===== / Darren needs to talk to Marc Baril wrt design / camera? / depends on getting a collision event / waiting on Greg
- 1989: Need to check with Chris / Darren Esau (Wed 19/03/03): ==== Published to Microsoft Project server by Wolfgang Hamann on 19/03/03 10:40 AM ===== / Need to check with Chris / We need to make sure someone on the design side is scheduled to place / the required data using the world builder. / March 26: waiting on this since dependencies / can do ped. dialogue / no doorbells in the world?
- 1990: waiting for sounds & doorbell code (who would be doing this?) / designers don't have tool to place these / Darren Esau (Wed 19/03/03): ==== Published to Microsoft Project server by Wolfgang Hamann on 19/03/03 10:40 AM ===== / waiting for sounds & doorbell code (who would be doing this?) / designers don't have tool to place these / waiting on chuck - when they spawn & disappear
- 1991: waiting for sounds & events (dusit & perhaps greg) / Darren Esau (Wed 19/03/03): ==== Published to Microsoft Project server by Wolfgang Hamann on 19/03/03 10:40 AM ===== / waiting for sounds & events (dusit & perhaps greg)
- 1992: Wolfgang to check with James re: ai code / Wolfgang to meet with Cory wrt sounds / Darren Esau (Wed 19/03/03): ==== Published to Microsoft Project server by Wolfgang Hamann on 19/03/03 10:40 AM ===== / Wolfgang to check with James re: ai code / Wolfgang to meet with Cory wrt sounds
- 1993: design decisions (Joe) & sounds (Marc L. ) / Darren Esau (Wed 19/03/03): ==== Published to Microsoft Project server by Wolfgang Hamann on 19/03/03 10:40 AM ===== / design decisions (Joe) & sounds (Marc L. )
- 1994: 26/03/03 added
- 1995: 26/03/03 added
- 1996: 26/03/03 added
- 1997: 26/03/03 added

| ID | WBS | Task | Duration | Start | Finish | Total slack | Constraint | Resources | Work |
| --- | --- | --- | --- | --- | --- | --- | --- | --- | --- |
| 2018 | 3.11.40 | **Driving engine improvements** | 3d | 2003-03-18 | 2003-03-21 | 105.88d |  | Greg Mayer | 168h |
| 2019 | 3.11.41 | Two levels of gas scale | 3d | 2003-03-18 | 2003-03-21 | 105.88d | start no earlier than 2003-03-18 | Greg Mayer | 24h |
| 2020 | 3.11.42 | E-brake low speed bug | 3d | 2003-03-18 | 2003-03-21 | 105.88d | start no earlier than 2003-03-18 | Greg Mayer | 24h |
| 2021 | 3.11.43 | D-pad steering bug | 3d | 2003-03-18 | 2003-03-21 | 105.88d | start no earlier than 2003-03-18 | Greg Mayer | 24h |
| 2022 | 3.11.44 | High speed instability handling | 3d | 2003-03-18 | 2003-03-21 | 105.88d | start no earlier than 2003-03-18 | Greg Mayer | 24h |
| 2023 | 3.11.45 | Make terrain type not affect locomotion, only friction | 3d | 2003-03-18 | 2003-03-21 | 105.88d | start no earlier than 2003-03-18 | Greg Mayer | 24h |
| 2024 | 3.11.46 | Investigate why it’s hard to drive up hills | 3d | 2003-03-18 | 2003-03-21 | 105.88d | start no earlier than 2003-03-18 | Greg Mayer | 24h |
| 2025 | 3.11.47 | Cleanup visual representation of E-brake | 3d | 2003-03-18 | 2003-03-21 | 105.88d | start no earlier than 2003-03-18 | Greg Mayer | 24h |
| 2026 | 3.11.48 | Car reset happens on nearest road segment | 5d | 2003-03-24 | 2003-03-28 | 100d | finish no earlier than 2003-03-28 | Greg Mayer | 40h |
| 2027 | 3.11.49 | **Jumps** | 5d | 2003-03-24 | 2003-03-28 | 100d |  | Greg Mayer | 152h |
| 2028 | 3.11.50 | Fix nose diving problem (Durango style stabilizer) | 5d | 2003-03-24 | 2003-03-28 | 100d | finish no earlier than 2003-03-28 | Greg Mayer | 40h |
| 2029 | 3.11.51 | Landing sound effect | 5d | 2003-03-24 | 2003-03-28 | 100d | start no earlier than 2003-03-24 | Greg Mayer | 40h |
| 2030 | 3.11.52 | Specific problematic jumps | 5d | 2003-03-24 | 2003-03-28 | 100d | start no earlier than 2003-03-24 | Greg Mayer [80%] | 32h |
| 2031 | 6.12.72 | Investigate damage issues (which collisions should actually cause damage) | 5d | 2003-03-24 | 2003-03-28 | 100d | start no earlier than 2003-03-24 | Greg Mayer [80%] | 32h |
| 2032 | 6.12.73 | Investigate which movables should continue to collide after coming to rest | 5d | 2003-03-24 | 2003-03-28 | 100d | start no earlier than 2003-03-24 | Greg Mayer [80%] | 32h |
| 2033 | 6.12.74 | Camera collision with walls and ground (with Cary) | 5d | 2003-03-31 | 2003-04-04 | 95d | finish no earlier than 2003-04-04 | Greg Mayer [80%] | 32h |
| 2034 | 6.12.75 | In car character bounce | 5d | 2003-03-31 | 2003-04-04 | 95d | finish no earlier than 2003-04-04 | Greg Mayer [80%] | 32h |
| 2035 | 6.12.76 | Improved burnout and skid thresholds | 5d | 2003-04-07 | 2003-04-11 | 90d | finish no earlier than 2003-04-11 | Greg Mayer | 40h |
| 2036 | 6.12.77 | Make bike lean in the correct direction | 5d | 2003-04-07 | 2003-04-11 | 90d | finish no earlier than 2003-04-11 | Greg Mayer | 40h |
| 2037 | 6.12.78 | Physics system performance improvements (if time) | 5d | 2003-04-07 | 2003-04-11 | 90d | finish no earlier than 2003-04-11 | Greg Mayer | 40h |
| 2038 | 6.12.79 | Phone booth car select presentation | 3d | 2003-03-18 | 2003-03-21 | 105.88d | start no earlier than 2003-03-18 | Iain Gipson | 24h |
| 2039 | 6.12.80 | Turn persistent heap into a static heap | 3d | 2003-03-18 | 2003-03-21 | 105.88d | start no earlier than 2003-03-18 | Iain Gipson | 24h |
| 2040 | 6.12.81 | Confirm eye-blinking working on all characters | 3d | 2003-03-18 | 2003-03-21 | 105.88d | start no earlier than 2003-03-18 | Iain Gipson | 24h |
| 2041 | 6.12.82 | Minimize size of TEMP heap (radScript buffer problems, mesh sizes in front end) | 5d | 2003-03-24 | 2003-03-28 | 100d | finish no earlier than 2003-03-28 | Iain Gipson | 40h |
| 2042 | 6.12.83 | Load time optimizations (compression, load during level intro cam, optimize amount loading for mission select, etc) | 5d | 2003-03-24 | 2003-03-28 | 100d | finish no earlier than 2003-03-28 | Iain Gipson | 40h |
| 2043 | 6.12.84 | Improved integration of tutorial HUD with other HUD elements | 5d | 2003-03-24 | 2003-03-28 | 100d | finish no earlier than 2003-03-28 | Iain Gipson | 40h |
| 2044 | 6.12.85 | Refraction shader performance improvements | 5d | 2003-03-24 | 2003-03-28 | 100d | finish no earlier than 2003-03-28 | Iain Gipson | 40h |
| 2045 | 6.12.86 | Race specific presentation (e.g. Patty and Selma) | 5d | 2003-03-31 | 2003-04-04 | 95d | finish no earlier than 2003-04-04 | Iain Gipson | 40h |
| 2046 | 5.12.66 | Phone booth car select presentation | 5d | 2003-03-31 | 2003-04-04 | 95d | finish no earlier than 2003-04-04 | Iain Gipson | 40h |
| 2047 | 5.12.67 | Unused code removal | 5d | 2003-04-07 | 2003-04-11 | 90d | finish no earlier than 2003-04-11 | Iain Gipson | 40h |
| 2048 | 3.11.53 | Procedural animations to save memory | 3d | 2003-03-18 | 2003-03-21 | 105.88d | start no earlier than 2003-03-18 | James Harrison | 24h |
| 2049 | 3.11.54 | Procedural particle systems to save memory | 3d | 2003-03-18 | 2003-03-21 | 105.88d | start no earlier than 2003-03-18 | James Harrison | 24h |
| 2050 | 3.11.55 | Fix all vehicle shadow sizes | 3d | 2003-03-18 | 2003-03-21 | 105.88d | start no earlier than 2003-03-18 | James Harrison | 24h |
| 2051 | 3.11.56 | Extend shadow volumes to support different light colours | 5d | 2003-03-24 | 2003-03-28 | 100d | finish no earlier than 2003-03-28 | James Harrison | 40h |
| 2052 | 3.11.57 | In-game movie presentation, including fading and brief HUD reload screen | 5d | 2003-03-24 | 2003-03-28 | 100d | finish no earlier than 2003-03-28 | James Harrison | 40h |
| 2053 | 6.12.92 | Reflection mapping looks good from the side | 5d | 2003-03-24 | 2003-03-28 | 100d | finish no earlier than 2003-03-28 | James Harrison [80%] | 32h |
| 2054 | 5.12.82 | Add support for a FMV-based attract mode (conditionally compiled) | 5d | 2003-03-24 | 2003-03-28 | 100d | finish no earlier than 2003-03-28 | James Harrison [80%] | 32h |
| 2055 | 6.12.93 | Artist support for NTSC illegal colour removal | 5d | 2003-03-31 | 2003-04-04 | 95d | finish no earlier than 2003-04-04 | James Harrison [80%] | 32h |
| 2056 | 6.12.94 | Final pass of game element state maintained on memory card | 5d | 2003-03-31 | 2003-04-04 | 95d | finish no earlier than 2003-04-04 | James Harrison [80%] | 32h |
| 2057 | 6.12.95 | Game end progression / presentation | 5d | 2003-03-31 | 2003-04-04 | 95d | finish no earlier than 2003-04-04 | James Harrison [80%] | 32h |
| 2058 | 5.12.86 | Maintain damage state for all vehicles and save on memory card | 5d | 2003-03-31 | 2003-04-04 | 95d | start no earlier than 2003-03-31 | James Harrison [80%] | 32h |
| 2059 | 3.11.58 | Changes to coin gameplay still needed to meet spec | 5d | 2003-04-07 | 2003-04-11 | 90d | finish no earlier than 2003-04-11 | James Harrison [80%] | 32h |
| 2060 | 3.11.59 | Ongoing memory leaks | 20d | 2003-03-18 | 2003-04-15 | 88.88d | start no earlier than 2003-03-18 | Joel DeYoung | 160h |
| 2061 | 3.11.60 | Ongoing memory usage audits | 18d | 2003-03-18 | 2003-04-11 | 90.88d | start no earlier than 2003-03-18 | Jesse Cluff | 144h |
| 2062 | 6.12.99 | Ongoing performance audits | 18d | 2003-03-18 | 2003-04-11 | 90.88d | start no earlier than 2003-03-18 | Jesse Cluff | 144h |
| 2063 | 6.12.100 | Duplicate texture removal | 5d | 2003-03-24 | 2003-03-28 | 100d | finish no earlier than 2003-03-28 | Jesse Cluff | 40h |
| 2064 | 6.12.101 | Car art optimizations for improved memory and frame rate | 5d | 2003-03-24 | 2003-03-28 | 100d | finish no earlier than 2003-03-28 | Jesse Cluff | 40h |
| 2065 | 3.11.61 | Hit & Run functionality | 5d | 2003-03-31 | 2003-04-04 | 95d | finish no earlier than 2003-04-04 | Jesse Cluff | 40h |
| 2066 | 3.11.62 | Progressive Scan | 5d | 2003-03-31 | 2003-04-04 | 95d | finish no earlier than 2003-04-04 | Jesse Cluff | 40h |
| 2067 | 3.11.63 | Ongoing special effects support for artists | 18d | 2003-03-18 | 2003-04-11 | 90.88d | start no earlier than 2003-03-18 | Michael Riegger | 144h |
| 2068 | 3.11.64 | Skid mark implementation cleanup | 3d | 2003-03-18 | 2003-03-21 | 105.88d | start no earlier than 2003-03-18 | Michael Riegger | 24h |
| 2069 | 3.11.65 | Level specific wasp gameplay | 3d | 2003-03-18 | 2003-03-21 | 105.88d | start no earlier than 2003-03-18 | Michael Riegger | 24h |
| 2070 | 3.11.66 | Can play through levels 1-2 | 3d | 2003-03-18 | 2003-03-21 | 105.88d | start no earlier than 2003-03-18 | Michael Riegger | 24h |
| 2071 | 3.11.67 | Final mission, including tractor beam | 5d | 2003-03-24 | 2003-03-28 | 100d | finish no earlier than 2003-03-28 | Michael Riegger | 40h |
| 2072 | 3.11.70 | Can play through levels 1-4 | 5d | 2003-03-24 | 2003-03-28 | 100d | finish no earlier than 2003-03-28 | Michael Riegger [80%] | 32h |
| 2073 | 3.11.71 | Can play through levels 1-6 | 5d | 2003-03-31 | 2003-04-04 | 95d | finish no earlier than 2003-04-04 | Michael Riegger [80%] | 32h |
| 2074 | 3.11.72 | Can play through the entire game | 5d | 2003-04-07 | 2003-04-11 | 90d | finish no earlier than 2003-04-11 | Michael Riegger [80%] | 32h |
| 2075 | 3.11.73 | Standard ambient characters always available for interaction (e.g. Apu, CBG, Moe) | 4d | 2003-03-18 | 2003-03-21 | 105d | finish no earlier than 2003-03-21 | Nigel Brooke | 32h |
| 2076 | 3.11.74 | Traffic avoidance for AI cars | 4d | 2003-03-18 | 2003-03-21 | 105d | finish no earlier than 2003-03-21 | Nigel Brooke | 32h |
| 2077 | 3.11.75 | On-foot damage animations and logic (falling from long distances, getting hit) | 5d | 2003-03-24 | 2003-03-28 | 100d | finish no earlier than 2003-03-28 | Nigel Brooke | 40h |
| 2078 | 3.11.76 | Character hands on steering wheel | 5d | 2003-03-24 | 2003-03-28 | 100d | finish no earlier than 2003-03-28 | Nigel Brooke | 40h |
| 2079 | 5.12.107 | Music synced animations | 5d | 2003-03-24 | 2003-03-28 | 100d | finish no earlier than 2003-03-28 | Nigel Brooke [80%] | 32h |
| 2080 | 6.12.116 | Support for fading spawned icons in dump and deliver missions | 5d | 2003-03-24 | 2003-03-28 | 100d | finish no earlier than 2003-03-28 | Nigel Brooke [80%] | 32h |
| 2081 | 6.12.117 | Add support for resetting mission inside an interior | 5d | 2003-03-24 | 2003-03-28 | 100d | finish no earlier than 2003-03-28 | Nigel Brooke [80%] | 32h |
| 2082 | 5.12.110 | Fixes for characters on moving platform bugs | 5d | 2003-03-31 | 2003-04-04 | 95d | finish no earlier than 2003-04-04 | Nigel Brooke [80%] | 32h |
| 2083 | 5.12.111 | Weighting probabilities of idle animations | 5d | 2003-03-31 | 2003-04-04 | 95d | finish no earlier than 2003-04-04 | Nigel Brooke [80%] | 32h |
| 2084 | 5.12.112 | Traffic surf animations | 5d | 2003-03-31 | 2003-04-04 | 95d | finish no earlier than 2003-04-04 | Nigel Brooke [80%] | 32h |
| 2085 | 5.12.113 | Get Bart’s Room interior into game | 5d | 2003-03-31 | 2003-04-04 | 95d | finish no earlier than 2003-04-04 | Nigel Brooke [80%] | 32h |
| 2086 | 5.12.114 | Mirror in Moe’s | 5d | 2003-04-07 | 2003-04-11 | 90d | finish no earlier than 2003-04-11 | Nigel Brooke [80%] | 32h |
| 2087 | 3.11.77 | Complete scrapbook implementation | 3d | 2003-03-18 | 2003-03-21 | 105.88d | start no earlier than 2003-03-18 | Tony Chu | 24h |

| ID | WBS | Task | Duration | Start | Finish | Complete | Remaining | Total slack | Constraint | Resources | Work | Actual work |
| --- | --- | --- | --- | --- | --- | --- | --- | --- | --- | --- | --- | --- |
| 2088 | 3.11.78 | Pause menu changes | 3d | 2003-03-18 | 2003-03-21 |  |  | 105.88d | start no earlier than 2003-03-18 | Tony Chu | 24h |  |
| 2089 | 3.11.79 | Loading bar | 3d | 2003-03-18 | 2003-03-21 |  |  | 105.88d | start no earlier than 2003-03-18 | Tony Chu | 24h |  |
| 2090 | 6.12.130 | Implement UI for bonus game | 5d | 2003-03-24 | 2003-03-28 |  |  | 100d | finish no earlier than 2003-03-28 | Tony Chu [80%] | 32h |  |
| 2091 | 3.11.82 | Phone booth interface changes, including car repair functionality | 5d | 2003-03-24 | 2003-03-28 |  |  | 100d | finish no earlier than 2003-03-28 | Tony Chu [80%] | 32h |  |
| 2092 | 3.11.83 | End of level in-game screen (?) | 5d | 2003-03-24 | 2003-03-28 |  |  | 100d | finish no earlier than 2003-03-28 | Tony Chu [80%] | 32h |  |
| 2093 | 5.12.121 | Support for scriptable, dismissable generic text screen | 5d | 2003-03-24 | 2003-03-28 |  |  | 100d | start no earlier than 2003-03-24 | Tony Chu [80%] | 32h |  |
| 2094 | 3.11.80 | HUD for Hit & Run functionality | 5d | 2003-03-31 | 2003-04-04 |  |  | 95d | finish no earlier than 2003-04-04 | Tony Chu | 40h |  |
| 2095 | 3.11.81 | HUD for gambling in circuit races | 5d | 2003-03-31 | 2003-04-04 |  |  | 95d | finish no earlier than 2003-04-04 | Tony Chu | 40h |  |
| 2096 | 5.12.124 | Mission failure hint text display | 5d | 2003-03-31 | 2003-04-04 |  |  | 95d | finish no earlier than 2003-04-04 | Tony Chu [80%] | 32h |  |
| 2097 | 6.12.131 | PS2 Dev Con | 5d | 2003-03-31 | 2003-04-04 |  |  | 95d | finish no earlier than 2003-04-04 | Tony Chu [80%] | 32h |  |
| 2098 | 6.12.132 | Progressive scan screens for GameCube, PS2 | 5d | 2003-04-07 | 2003-04-11 |  |  | 90d | finish no earlier than 2003-04-11 | Tony Chu [80%] | 32h |  |
| 2099 | 6.12.133 | Memory card icons | 5d | 2003-04-07 | 2003-04-11 |  |  | 90d | finish no earlier than 2003-04-11 | Tony Chu [80%] | 32h |  |
| 2100 | 6.12.134 | Memory card TRC issues | 5d | 2003-04-07 | 2003-04-11 |  |  | 90d | finish no earlier than 2003-04-11 | Tony Chu [80%] | 32h |  |
| 2101 | 6.12.135 | Scrooby game credits | 5d | 2003-04-07 | 2003-04-11 |  |  | 90d | finish no earlier than 2003-04-11 | Tony Chu [80%] | 32h |  |
| 2102 | 5.12.112 | PS2 support for memory imaged sprite textures | 1d? | 2003-03-18 | 2003-03-18 |  |  | 108d | start no earlier than 2003-03-18 | ATG | 8h |  |
| 2103 | 5.12.113 | Progressive scan on all three platforms | 1d? | 2003-03-18 | 2003-03-18 |  |  | 108d | start no earlier than 2003-03-18 | ATG | 8h |  |
| 2104 | 5.12.114 | Reflection mapping popping bug (Amit) | 1d? | 2003-03-18 | 2003-03-18 |  |  | 108d | start no earlier than 2003-03-18 | ATG | 8h |  |
| 2105 | 5.12.115 | PS2 mipmap per-texture L&K values (Amit) | 1d? | 2003-03-18 | 2003-03-18 |  |  | 108d | start no earlier than 2003-03-18 | ATG | 8h |  |
| 2106 | 5.12.116 | PS2 support for PDDI extension doing more reliable visibility calculations (for lens flare) (Amit) | 1d? | 2003-03-18 | 2003-03-18 |  |  | 108d | start no earlier than 2003-03-18 | ATG | 8h |  |
| 2107 | 6.12.136 | radLoad enhancements to improve load times (Neall) | 1d? | 2003-03-18 | 2003-03-19 |  |  | 107.88d | start no earlier than 2003-03-18 | ATG | 8h |  |
| 2108 | 6.13 | Milestone 19 - (May 30th) (Beta)(Temp) | 8d? | 2003-04-16 | 2003-04-28 |  |  | 79.88d |  |  | 1040.8h |  |
| 2243 | 6.14 | Milestone 20- (June 30th) (Final)(Temp) | 8d? | 2003-06-02 | 2003-06-12 |  |  | 46.88d |  |  | 1040.8h |  |
| 2379 | 4 | **Sound** | 263d? | 2002-04-16 A | 2003-04-16 | 28% | 189.16d? | 87.88d |  |  | 845.1h | 246.22h |
| 2380 | 4.1 | **Front end brightness control** | 1d? | 2002-10-30 A | 2002-10-31 A | 100% |  |  |  |  | 12.8h | 12.8h |
| 2381 | 4.1.1 | First Pass collision sounds | 1d? | 2002-10-30 A | 2002-10-31 A | 100% |  |  | start no earlier than 2002-10-30 | Marc Baril [80%] | 6.4h | 6.4h |
| 2382 | 4.1.2 | NIS gags placeholder for sync test | 1d? | 2002-10-30 A | 2002-10-31 A | 100% |  |  | start no earlier than 2002-10-30 | Marc Baril [80%] | 6.4h | 6.4h |

Notes:
- 2243: final PAL and NTSC builds for June 30th

| ID | WBS | Task | Type | Duration | Start | Finish | Predecessors | Complete | Remaining | Total slack | Free slack | Constraint | Resources | Work | Actual work |
| --- | --- | --- | --- | --- | --- | --- | --- | --- | --- | --- | --- | --- | --- | --- | --- |
| 2383 | 4.2 | **Memory card icons** |  | 19.12d? | 2002-11-19 A | 2002-12-16 |  | 50% | 9.56d? | 176.88d |  |  |  | 338.7h | 141.9h |
| 2384 | 7.2.1 | Design New Car Engine Sound System |  | 2d | 2002-11-19 A | 2002-11-20 |  | 90% | 0.2d | 188.6d | 0d | start no earlier than 2002-11-19 | Marc Baril [40%] | 6.4h | 5.76h |
| 2385 | 7.2.2 | Finish on foot music, generic and Character based ( I will need to do a session with a Baritone Sax player for Lisa) |  | 10d | 2002-11-21 A | 2002-12-04 | 2384 | 50% | 5d | 183.6d | 0d | start no earlier than 2002-11-19 | Marc Baril [80%] | 64h | 32h |
| 2386 | 7.2.3 | Implement On foot music (edit Music script) |  | 2d | 2002-12-05 A | 2002-12-06 | 2385 | 80% | 0.4d | 182d |  | start no earlier than 2002-11-19 | Marc Baril [80%] | 12.8h | 10.24h |
| 2387 | 7.2.4 | First Pass of Volume trigger for ambience, reverb and landmark sounds in World Builder |  | 10d | 2002-11-25 A | 2002-12-09 |  | 49% | 5.12d | 172.75d | 0d | start no earlier than 2002-11-25 | Cory Hawthorne [195.1%] | 100.5h | 20.5h |
| 2388 | 7.2.5 | Ambience script update for new ambience regions |  | 11.12d? | 2002-11-25 A | 2002-12-10 | 2387 | 45% | 6.12d? | 177.88d | 0d | start no earlier than 2002-11-19 | Cory Hawthorne | 11h | 3h |
| 2389 | 7.2.6 | Start adding Postional sounds (if time permits) |  | 3d | 2002-12-10 | 2002-12-13 | 2388 |  |  | 177.88d |  | start no earlier than 2002-11-19 | Cory Hawthorne | 24h |  |
| 2390 | 7.2.7 | Nis Gags |  | 1d? | 2002-12-13 A | 2002-12-16 A | 2389 | 100% |  |  |  | start no earlier than 2002-11-27 | Cory Hawthorne | 8h | 8h |
| 2391 | 7.2.8 | Meeting with Jeff Plumley re: list of cars, etc. | milestone | 1d | 2002-11-21 | 2002-11-22 |  |  |  | 186.68d | 0d | start no earlier than 2002-11-21 |  |  |  |
| 2392 | 7.2.9 | Collect engine sound for all cars |  | 4d | 2002-11-22 A | 2002-11-28 | 2391 | 70% | 1.2d | 183.88d | 0d | start no earlier than 2002-11-21 | Marc L'esperance | 32h | 22.4h |
| 2393 | 7.2.10 | First pass implementation of engine sounds (code dependent) |  | 10d | 2002-11-28 A | 2002-12-12 | 2392 | 50% | 5d | 178.88d |  | start no earlier than 2002-11-19 | Marc L'esperance | 80h | 40h |
| 2394 | 4.3 | **Mission objective text display** |  | 42.12d? | 2002-11-19 | 2003-01-16 |  |  |  | 153.88d |  |  |  | 36.8h |  |
| 2395 | 4.3.1 | All sfx in the game |  | 1d? | 2003-01-15 | 2003-01-16 |  |  |  | 153.88d |  | start no earlier than 2003-01-15 | Cory Hawthorne | 8h |  |
| 2396 | 4.3.2 | Placeholder interactive music for all missions |  | 1d? | 2003-01-15 | 2003-01-16 |  |  |  | 153.88d |  | start no earlier than 2003-01-15 | Marc Baril [80%] | 6.4h |  |
| 2397 | 4.3.3 | Placeholder audio for all gags and FMVs |  | 1d? | 2003-01-15 | 2003-01-16 |  |  |  | 153.88d |  | start no earlier than 2003-01-15 | Cory Hawthorne | 8h |  |
| 2398 | 7.3.4 | Level mission Music |  | 1d? | 2002-11-19 | 2002-11-19 |  |  |  | 195d |  | start no earlier than 2002-11-19 | Marc Baril [80%] | 6.4h |  |
| 2399 | 7.3.5 | Second Pass Collision Sounds |  | 1d? | 2002-11-19 | 2002-11-19 |  |  |  | 195d |  | start no earlier than 2002-11-19 | Cory Hawthorne | 8h |  |
| 2400 | 7.3.6 | Dialogue |  | 1d? | 2002-12-18 | 2002-12-18 |  |  |  | 174d |  | start no earlier than 2002-12-18 |  |  |  |
| 2401 | 7.4 | **Changes to audio options menu** |  | 21.12d? | 2003-01-20 | 2003-02-17 |  |  |  | 130.88d |  |  |  | 120h |  |
| 2402 | 7.4.1 | **Bonus game HUD** |  | 1d? | 2003-01-20 | 2003-01-20 |  |  |  | 151d |  |  |  | 32h |  |
| 2403 | 7.4.1.1 | Bonus game UI |  | 1d? | 2003-01-20 | 2003-01-20 |  |  |  | 151d |  | start no earlier than 2003-01-20 | Cory Hawthorne | 8h |  |
| 2404 | 7.4.1.2 | Fix lighting on Homer in front end |  | 1d? | 2003-01-20 | 2003-01-20 |  |  |  | 151d |  | start no earlier than 2003-01-20 | Cory Hawthorne | 8h |  |
| 2405 | 7.4.1.3 | Make sure you can always call your default level vehicle from the phone booth |  | 1d? | 2003-01-20 | 2003-01-20 |  |  |  | 151d |  | start no earlier than 2003-01-20 | Cory Hawthorne | 8h |  |
| 2406 | 7.4.1.4 | Final cheat implementation (only shipping cheats #ifdef FINAL) |  | 1d? | 2003-01-20 | 2003-01-20 |  |  |  | 151d |  | start no earlier than 2003-01-20 | Cory Hawthorne | 8h |  |

Notes:
- 2387: Trigger ambiences added locally for level 2 in maya and level 3. Waiting for pipeline to be set up for implementation of sounds (see cary brisbois). Will be tested this afternoon and possibly submitted depending on any errors that may occur. / Ambience script is in progress but will be finished this afternoon with new level 2 and 3 additions. / Some postional sounds ready to go in but I haven't learned to do that yet.
- 2390: oh yeah. i'm also working on these little NIS gag movies during the times that i can't add anything to the game, such as right now for instance. i'm about 10 percent into them. the remaining 90 percent should take up about 12 hours on the outside.
- 2392: Jeff Plumley to give Marc L a list of all cars & performance aspects
- 2398: moved from ms 13
- 2399: moved from ms 13
- 2401: Wish List: / Alf Clausen - to do some cues for us / Orchestra Recording - / Orchestral Sample collection / sfx for running feature / more variety for each character? / more character specific music - mission & on foot / (banjo, guitar - bart, orchestral) / Conversation music (dependent on final dialogue for timing) / Time Out Music - ie. Apu levitating, Homer looking at his shoes
- 2403: check with Cory
- 2404: only first pass / check with Darren wrt cars stopping. sound is there.

| ID | WBS | Task | Duration | Start | Finish | Complete | Remaining | Total slack | Constraint | Resources | Work | Actual work |
| --- | --- | --- | --- | --- | --- | --- | --- | --- | --- | --- | --- | --- |
| 2407 | 7.4.2 | **Tuning** | 1d? | 2003-01-20 | 2003-01-20 |  |  | 151d |  |  | 24h |  |
| 2408 | 7.4.2.1 | Reverb, ambiences (levels), master volumes (dialogue vs music, etc) | 1d? | 2003-01-20 | 2003-01-20 |  |  | 151d | start no earlier than 2003-01-20 | Cory Hawthorne | 8h |  |
| 2409 | 7.4.2.2 | Engine Sounds | 1d? | 2003-01-20 | 2003-01-20 |  |  | 151d | start no earlier than 2003-01-20 | Marc L'esperance | 8h |  |
| 2410 | 7.4.2.3 | Code (ducking, separate submaster for car sounds) | 1d? | 2003-01-20 | 2003-01-20 |  |  | 151d | start no earlier than 2003-01-20 | Darren Esau | 8h |  |
| 2411 | 7.4.3 | Events - car door, engine start up, | 1d? | 2003-01-20 | 2003-01-20 |  |  | 151d | start no earlier than 2003-01-20 | Darren Esau [80%] | 6.4h |  |
| 2412 | 7.4.4 | QA - bug checking | 1d? | 2003-01-20 | 2003-01-20 |  |  | 151d | start no earlier than 2003-01-20 | Cory Hawthorne | 8h |  |
| 2413 | 7.4.5 | FMV's | 1d? | 2003-01-20 | 2003-01-20 |  |  | 151d | start no earlier than 2003-01-20 | Cory Hawthorne | 8h |  |
| 2414 | 7.4.6 | **Music - Missions** | 1d? | 2003-01-20 | 2003-01-20 |  |  | 151d |  |  | 25.6h |  |
| 2415 | 7.4.6.1 | Enhancements to Allan's tracks | 1d? | 2003-01-20 | 2003-01-20 |  |  | 151d | start no earlier than 2003-01-20 | Marc Baril [80%] | 6.4h |  |
| 2416 | 7.4.6.2 | Land of Chocolate | 1d? | 2003-01-20 | 2003-01-20 |  |  | 151d | start no earlier than 2003-01-20 | Marc Baril [80%] | 6.4h |  |
| 2417 | 7.4.6.3 | StarTreck | 1d? | 2003-01-20 | 2003-01-20 |  |  | 151d | start no earlier than 2003-01-20 | Marc Baril [80%] | 6.4h |  |
| 2418 | 7.4.6.4 | Comic Book Guy | 1d? | 2003-01-20 | 2003-01-20 |  |  | 151d | start no earlier than 2003-01-20 | Marc Baril [80%] | 6.4h |  |
| 2419 | 7.4.7 | **Sound Fx content** | 21.12d? | 2003-01-20 | 2003-02-17 |  |  | 130.88d |  |  | 16h |  |
| 2420 | 7.4.7.1 | misc. sounds - coin pu, door bells, platforms moving, etc. | 1d? | 2003-01-20 | 2003-01-20 |  |  | 151d | start no earlier than 2003-01-20 | Cory Hawthorne | 8h |  |
| 2421 | 7.4.7.2 | Halloween level - over the top fx ie. owls, frogs | 1d? | 2003-01-20 | 2003-01-20 |  |  | 151d | start no earlier than 2003-01-20 | Cory Hawthorne | 8h |  |
| 2422 | 7.4.7.3 | Milestone Delivery | 1d? | 2003-02-15 | 2003-02-17 |  |  | 130.88d | start no earlier than 2003-02-15 |  |  |  |
| 2423 | 7.5 | **Milestone 17** | 240d? | 2002-04-16 A | 2003-03-15 | 14% | 207.27d? | 110.88d |  |  | 146.4h | 24h |
| 2424 | 7.5.1 | **Positional Sound:** | 6d? | 2003-02-17 A | 2003-02-24 | 33% | 4d? | 125d |  |  |  |  |
| 2425 | 7.5.1.1 | Fixed Objects, fountains, etc.. | 1d? | 2003-02-17 | 2003-02-17 |  |  | 130d | start no earlier than 2003-02-17 |  |  |  |
| 2426 | 7.5.1.2 | AI Traffic - engine & car horns | 1d? | 2003-02-17 | 2003-02-17 |  |  | 130d | start no earlier than 2003-02-17 |  |  |  |
| 2427 | 7.5.1.3 | Dialogue ? (selected lines ie. gags) | 1d? | 2003-02-17 | 2003-02-17 |  |  | 130d | start no earlier than 2003-02-17 |  |  |  |
| 2428 | 7.5.1.4 | Interactive props (implement & test) | 6d | 2003-02-17 A | 2003-02-24 | 50% | 3d | 125d | start no earlier than 2003-02-17 |  |  |  |
| 2429 | 7.5.2 | **Tuning** | 1d? | 2003-02-17 | 2003-02-17 |  |  | 130d |  |  |  |  |
| 2430 | 7.5.2.1 | Reverb, ambiences (levels), master volumes (dialogue vs music, etc) | 1d? | 2003-02-17 | 2003-02-17 |  |  | 130d | start no earlier than 2003-02-17 |  |  |  |
| 2431 | 7.5.2.2 | Engine Sounds | 1d? | 2003-02-17 | 2003-02-17 |  |  | 130d | start no earlier than 2003-02-17 |  |  |  |
| 2432 | 7.5.2.3 | Code (ducking, separate submaster for car sounds) | 1d? | 2003-02-17 | 2003-02-17 |  |  | 130d | start no earlier than 2003-02-17 |  |  |  |
| 2433 | 7.5.2.4 | Events - car door, engine start up, | 1d? | 2003-02-17 | 2003-02-17 |  |  | 130d | start no earlier than 2003-02-17 |  |  |  |
| 2434 | 7.5.2.5 | QA - bug checking | 1d? | 2003-02-17 | 2003-02-17 |  |  | 130d | start no earlier than 2003-02-17 |  |  |  |
| 2435 | 7.5.2.6 | FMV's | 1d? | 2003-02-17 | 2003-02-17 |  |  | 130d | start no earlier than 2003-02-17 |  |  |  |

Notes:
- 2413: Wolfgang to check on FMV schedule / first pass done - only the FE / all passes on all the other fmv's need to be done
- 2419: memory contstraints if we are to add more sfx / Jan 20 - we are fairly maxed on memory due to the amount of dialogue
- 2425: won't be a lot of content / most is done / waiting for halloween level
- 2426: car horns - 1st pass only so far / darren - needs more work from darren
- 2428: another 18 coming but cory has not heard as yet / have done 10 so far
- 2430: ongoing
- 2432: check with darren
- 2433: not in the game as yet, content done
- 2435: check on approval / check on scope wrt music, sound fx, etc.

| ID | WBS | Task | Duration | Start | Finish | Predecessors | Complete | Remaining | Total slack | Free slack | Constraint | Resources | Work | Actual work |
| --- | --- | --- | --- | --- | --- | --- | --- | --- | --- | --- | --- | --- | --- | --- |
| 2436 | 7.5.3 | **Music - Missions** | 6d? | 2003-02-17 | 2003-02-24 |  |  |  | 125d |  |  |  | 8h |  |
| 2437 | 7.5.3.1 | Enhancements to Allan's tracks | 1d? | 2003-02-17 | 2003-02-17 |  |  |  | 130d |  | start no earlier than 2003-02-17 |  |  |  |
| 2438 | 7.5.3.2 | Bollywood 1 | 1d? | 2003-02-17 | 2003-02-17 |  |  |  | 130d |  | start no earlier than 2003-02-17 |  |  |  |
| 2439 | 7.5.3.3 | Bollywood 2 | 1d? | 2003-02-17 | 2003-02-17 |  |  |  | 130d |  | start no earlier than 2003-02-17 |  |  |  |
| 2440 | 7.5.3.4 | Bollywood 3 | 1d? | 2003-02-24 | 2003-02-24 |  |  |  | 125d |  | start no earlier than 2003-02-24 |  |  |  |
| 2441 | 7.5.3.5 | Marge Mission 2 | 1d? | 2003-02-17 | 2003-02-18 |  |  |  | 129.88d |  | start no earlier than 2003-02-17 | Cory Hawthorne [50%]; Marc L'esperance [50%] | 8h |  |
| 2442 | 7.5.3.6 | **Mini Game music** | 1d? | 2003-02-24 | 2003-02-24 |  |  |  | 125d |  |  |  |  |  |
| 2443 | 7.5.3.6.1 | Casio Retro 1 | 1d? | 2003-02-24 | 2003-02-24 |  |  |  | 125d |  | start no earlier than 2003-02-24 |  |  |  |
| 2444 | 7.5.3.6.2 | Casio Retro 2 | 1d? | 2003-02-24 | 2003-02-24 |  |  |  | 125d |  | start no earlier than 2003-02-24 |  |  |  |
| 2445 | 7.5.3.6.3 | Casio Retro 3 | 1d? | 2003-02-24 | 2003-02-24 |  |  |  | 125d |  | start no earlier than 2003-02-24 |  |  |  |
| 2446 | 7.5.3.6.4 | Halloween style 4 | 1d? | 2003-02-24 | 2003-02-24 |  |  |  | 125d |  | start no earlier than 2003-02-24 |  |  |  |
| 2447 | 7.5.3.7 | Music - Contractor | 1d? | 2003-02-24 | 2003-02-24 |  |  |  | 125d |  | start no earlier than 2003-02-24 |  |  |  |
| 2448 | 7.5.4 | **Sound Fx content** | 17.12d? | 2003-02-20 A | 2003-03-15 |  | 20% | 13.7d? | 110.88d |  |  |  | 114.4h | 24h |
| 2449 | 7.5.4.1 | misc. sounds - coins, door bells, platforms moving, etc. - 1st pass | 2d? | 2003-02-20 | 2003-02-24 |  |  |  | 125.88d |  | start no earlier than 2003-02-20 | Roman Tomazin [50%]; Cory Hawthorne [50%] | 12h |  |
| 2450 | 7.5.4.2 | Halloween level - over the top fx ie. owls, frogs - 1st pass | 1d? | 2003-02-27 | 2003-02-28 |  |  |  | 113.88d | 0d | start no earlier than 2003-02-27 | Cory Hawthorne | 8h |  |
| 2451 | 7.5.4.3 | revisit collision sounds - generic collision sounds | 2d | 2003-02-28 | 2003-03-04 | 2450 |  |  | 113.88d | 0d | start no earlier than 2003-02-17 | Cory Hawthorne | 16h |  |
| 2452 | 7.5.4.4 | Bee sounds final pass | 2d | 2003-03-04 | 2003-03-06 | 2451 |  |  | 113.88d | 0d | start no earlier than 2003-02-17 | Cory Hawthorne | 16h |  |
| 2453 | 7.5.4.5 | Car door sounds - generic | 1d? | 2003-03-06 | 2003-03-07 | 2452 |  |  | 113.88d | 0d | start no earlier than 2003-01-20 | Cory Hawthorne [80%] | 6.4h |  |
| 2454 | 7.5.4.6 | Interactive gags | 6d | 2003-03-07 A | 2003-03-15 | 2453 | 50% | 3d | 110.88d |  | start no earlier than 2003-02-17 | Cory Hawthorne | 48h | 24h |
| 2455 | 7.5.4.7 | explosion sound for when those traffic cars blow up. | 1d? | 2003-02-20 | 2003-02-20 |  |  |  | 127d |  | start no earlier than 2003-02-20 | Cory Hawthorne | 8h |  |
| 2456 | 7.5.5 | **Engine Sounds** | 220.88d? | 2002-04-16 | 2003-02-17 |  |  |  | 130d |  |  |  | 16h |  |
| 2457 | 7.5.5.1 | Tuning - gear shift, acceleration, etc. | 1d? | 2002-04-16 | 2002-04-17 |  |  |  | 349.88d |  |  | Marc L'esperance | 8h |  |
| 2458 | 7.5.5.2 | New engine sounds | 1d? | 2003-02-17 | 2003-02-17 |  |  |  | 130d |  | start no earlier than 2003-02-17 | Marc L'esperance | 8h |  |
| 2459 | 7.5.6 | **Dialogue** | 1d? | 2003-02-17 | 2003-02-17 |  |  |  | 130d |  |  |  | 8h |  |
| 2460 | 7.5.6.1 | Normalize Skate dialogue | 1d? | 2003-02-17 | 2003-02-17 |  |  |  | 130d |  | start no earlier than 2003-02-17 | Roman Tomazin | 8h |  |
| 2461 | 7.5.6.2 | Milestone Delivery | 1d? | 2003-02-17 | 2003-02-17 |  |  |  | 130d |  | start no earlier than 2003-02-17 |  |  |  |

Notes:
- 2437: needs final pass
- 2449: 2nd pass and beyond / Roman Tomazin (Mon 24/02/03): ==== Published to Microsoft Project server by Wolfgang Hamann on 24/02/03 1:26 PM ===== / 2nd pass and beyond / Cory Hawthorne (Mon 24/02/03): ==== Published to Microsoft Project server by Wolfgang Hamann on 24/02/03 1:26 PM ===== / 2nd pass and beyond
- 2450: depending on fmv schedule / Cory Hawthorne (Mon 24/02/03): ==== Published to Microsoft Project server by Wolfgang Hamann on 24/02/03 1:26 PM ===== / depending on fmv schedule
- 2452: needs all of the animations - doesn't have them yet / Cory Hawthorne (Mon 24/02/03): ==== Published to Microsoft Project server by Wolfgang Hamann on 24/02/03 1:26 PM ===== / needs all of the animations - doesn't have them yet
- 2453: darren coding? / door sounds are final / Cory Hawthorne (Mon 24/02/03): ==== Published to Microsoft Project server by Wolfgang Hamann on 24/02/03 1:26 PM ===== / darren coding? / door sounds are final

| ID | WBS | Task | Duration | Start | Finish | Complete | Remaining | Total slack | Constraint | Resources | Work | Actual work |
| --- | --- | --- | --- | --- | --- | --- | --- | --- | --- | --- | --- | --- |
| 2462 | 7.6 | **Milestone 18 - Alpha** | 64.12d? | 2003-01-20 A | 2003-04-16 | 27% | 47.1d? | 87.88d |  |  | 190.4h | 67.52h |
| 2463 | 7.6.1 | **Music Composition:** | 10.88d? | 2003-03-17 A | 2003-03-31 | 21% | 8.55d? | 99d |  |  | 83.2h | 17.92h |
| 2464 | 7.6.1.1 | Marge | 1d? | 2003-03-17 | 2003-03-18 |  |  | 108.88d | start no earlier than 2003-03-17 | Marc Baril [80%] | 6.4h |  |
| 2465 | 7.6.1.2 | Latino | 1d? | 2003-03-17 A | 2003-03-18 | 96% | 0.04d? | 108.88d | start no earlier than 2003-03-17 | Jeff Tymoschuk | 8h | 7.68h |
| 2466 | 7.6.1.3 | Front End | 1d? | 2003-03-17 A | 2003-03-18 A | 100% |  |  | start no earlier than 2003-03-17 | Marc Baril [80%] | 6.4h | 6.4h |
| 2467 | 6.6.1.4 | Wasp Attack Music | 1d? | 2003-03-31 | 2003-03-31 |  |  | 99d | start no earlier than 2003-03-31 | Marc Baril [80%] | 6.4h |  |
| 2468 | 6.6.1.5 | Hit & Run Music | 1d? | 2003-03-31 | 2003-03-31 |  |  | 99d | start no earlier than 2003-03-31 | Marc Baril [80%] | 6.4h |  |
| 2469 | 6.6.1.6 | UFO Mission | 1d? | 2003-03-31 A | 2003-03-31 | 60% | 0.4d? | 99d | start no earlier than 2003-03-31 | Marc Baril [80%] | 6.4h | 3.84h |
| 2470 | 7.6.1.4 | **On Foot - marg, apu, bart, halloween** | 1d? | 2003-03-17 | 2003-03-18 |  |  | 108.88d |  |  | 28.8h |  |
| 2471 | 7.6.1.4.1 | Halloween | 1d? | 2003-03-17 | 2003-03-18 |  |  | 108.88d | start no earlier than 2003-03-17 | Jeff Tymoschuk | 8h |  |
| 2472 | 7.6.1.4.2 | Marge | 1d? | 2003-03-17 | 2003-03-18 |  |  | 108.88d | start no earlier than 2003-03-17 | Jeff Tymoschuk | 8h |  |
| 2473 | 7.6.1.4.3 | Apu | 1d? | 2003-03-17 | 2003-03-18 |  |  | 108.88d | start no earlier than 2003-03-17 | Marc Baril [80%] | 6.4h |  |
| 2474 | 7.6.1.4.4 | Bart | 1d? | 2003-03-17 | 2003-03-18 |  |  | 108.88d | start no earlier than 2003-03-17 | Marc Baril [80%] | 6.4h |  |
| 2475 | 7.6.1.5 | Generic underscore music | 1d? | 2003-03-17 | 2003-03-18 |  |  | 108.88d | start no earlier than 2003-03-17 | Marc Baril [80%] | 6.4h |  |
| 2476 | 7.6.1.6 | Street Races | 1d? | 2003-03-17 | 2003-03-18 |  |  | 108.88d | start no earlier than 2003-03-17 | Allan Levy | 8h |  |
| 2477 | 7.6.2 | **Sound Fx** | 1d? | 2003-04-01 A | 2003-04-01 | 89% | 0.11d? | 98d |  |  | 56h | 49.6h |
| 2478 | 7.6.2.1 | **Final Pass on all Art content** | 1d? | 2003-04-01 A | 2003-04-01 | 90% | 0.1d? | 98d |  |  | 16h | 14.4h |
| 2479 | 6.6.2.1.1 | Wasp sounds | 1d? | 2003-04-01 A | 2003-04-01 | 90% | 0.1d? | 98d | start no earlier than 2003-04-01 | Cory Hawthorne | 8h | 7.2h |
| 2480 | 6.6.2.1.2 | UFO level 7 | 1d? | 2003-04-01 A | 2003-04-01 | 90% | 0.1d? | 98d | start no earlier than 2003-04-01 | Cory Hawthorne | 8h | 7.2h |
| 2481 | 7.6.2.2 | **Revisit Collision sounds/optimization** | 1d? | 2003-04-01 A | 2003-04-01 A | 100% |  |  |  |  | 8h | 8h |
| 2482 | 6.6.2.2.1 | 3 different levels of | 1d? | 2003-04-01 A | 2003-04-01 A | 100% |  |  | start no earlier than 2003-04-01 | Cory Hawthorne | 8h | 8h |
| 2483 | 6.6.2.3 | Collect sounds | 1d? | 2003-04-01 A | 2003-04-01 | 70% | 0.3d? | 98d | start no earlier than 2003-04-01 | Cory Hawthorne | 8h | 5.6h |
| 2484 | 6.6.2.4 | Coin sounds | 1d? | 2003-04-01 A | 2003-04-01 | 70% | 0.3d? | 98d | start no earlier than 2003-04-01 | Cory Hawthorne | 8h | 5.6h |
| 2485 | 6.6.2.5 | Flamenco guitar (El Camino) | 1d? | 2003-04-01 A | 2003-04-01 A | 100% |  |  | start no earlier than 2003-04-01 | Cory Hawthorne | 8h | 8h |
| 2486 | 6.6.2.6 | New Ambience | 1d? | 2003-04-01 A | 2003-04-01 A | 100% |  |  | start no earlier than 2003-04-01 | Cory Hawthorne | 8h | 8h |

Notes:
- 2470: short pieces
- 2476: if rock music - allan will do if not / re use music from the missions
- 2483: started giving memory problems

| ID | WBS | Task | Duration | Start | Finish | Total slack | Constraint | Resources | Work |
| --- | --- | --- | --- | --- | --- | --- | --- | --- | --- |
| 2487 | 7.6.3 | **Cinematics** | 1d? | 2003-03-17 | 2003-03-18 | 108.88d |  |  | 22.4h |
| 2488 | 7.6.3.1 | Audio Post - sound fx | 1d? | 2003-03-17 | 2003-03-18 | 108.88d | start no earlier than 2003-03-17 | Cory Hawthorne | 8h |
| 2489 | 7.6.3.2 | Mixes | 1d? | 2003-03-17 | 2003-03-18 | 108.88d | start no earlier than 2003-03-17 | Jeff Young | 8h |
| 2490 | 7.6.3.3 | Music | 1d? | 2003-03-17 | 2003-03-18 | 108.88d | start no earlier than 2003-03-17 | Marc Baril [80%] | 6.4h |
| 2491 | 7.6.4 | Recording | 1d? | 2003-01-20 | 2003-01-20 | 151d | start no earlier than 2003-01-20 | TBA [80%] | 6.4h |
| 2492 | 7.6.5 | Music Mix | 1d? | 2003-01-20 | 2003-01-20 | 151d | start no earlier than 2003-01-20 | TBA | 8h |
| 2493 | 7.6.6 | Mastering | 1d? | 2003-01-20 | 2003-01-20 | 151d | start no earlier than 2003-01-20 | TBA | 8h |
| 2494 | 7.6.7 | Final Tuning | 1d? | 2003-01-20 | 2003-01-20 | 151d | start no earlier than 2003-01-20 | Marc Baril [80%] | 6.4h |
| 2495 | 7.6.8 | Milestone Delivery Date | 1d? | 2003-04-15 | 2003-04-16 | 87.88d | start no earlier than 2003-04-15 |  |  |
| 2497 | 7.6.9 | **Additional Sound Code Functionality Alpha - Beta** | 1d? | 2003-03-12 | 2003-03-12 | 113d |  |  |  |
| 2498 | 7.6.9.1 | Stone Cutter Tunnel - music | 1d? | 2003-03-12 | 2003-03-12 | 113d | start no earlier than 2003-03-12 |  |  |
| 2499 | 7.6.9.2 | Unlockables | 1d? | 2003-03-12 | 2003-03-12 | 113d | start no earlier than 2003-03-12 |  |  |
| 2500 | 7.6.10 | **Music - additional** | 15d? | 2003-03-12 | 2003-03-31 | 99d |  |  |  |
| 2501 | 7.6.10.1 | Soprano spoof | 1d? | 2003-03-12 | 2003-03-12 | 113d | start no earlier than 2003-03-12 |  |  |
| 2502 | 7.6.10.2 | Stone Cutter spoof | 1d? | 2003-03-12 | 2003-03-12 | 113d | start no earlier than 2003-03-12 |  |  |
| 2503 | 7.6.10.3 | AC/DC track | 1d? | 2003-03-12 | 2003-03-12 | 113d | start no earlier than 2003-03-12 |  |  |
| 2504 | 6.6.10.4 | Live Music Recordings | 1d? | 2003-03-31 | 2003-03-31 | 99d | start no earlier than 2003-03-31 |  |  |
| 2513 | 8 | **Cinematics Schedule** | 75.12d? | 2003-01-20 | 2003-05-01 | 76.88d |  |  | 12h |
| 2514 | 8.1 | FMV 1 - intro | 1d? | 2003-03-31 | 2003-04-01 | 98.88d | start no earlier than 2003-03-31 |  |  |
| 2515 | 8.2 | FMV 1A (30 sec) | 1d? | 2003-03-31 | 2003-04-01 | 98.88d | start no earlier than 2003-03-31 |  |  |
| 2516 | 8.3 | FMV 2 | 1d? | 2003-04-18 | 2003-04-21 | 84.88d | start no earlier than 2003-04-18 |  |  |
| 2517 | 8.4 | FMV 3 | 1d? | 2003-04-07 | 2003-04-08 | 93.88d | start no earlier than 2003-04-07 |  |  |
| 2518 | 8.5 | FMV 4 | 1d? | 2003-03-12 | 2003-03-12 | 113d | start no earlier than 2003-03-12 |  |  |
| 2519 | 8.6 | FMV 5 | 1d? | 2003-03-12 | 2003-03-12 | 113d | start no earlier than 2003-03-12 |  |  |
| 2520 | 8.7 | FMV 6 | 1d? | 2003-03-12 | 2003-03-12 | 113d | start no earlier than 2003-03-12 |  |  |
| 2521 | 8.8 | FMV 7 | 1d? | 2003-03-12 | 2003-03-12 | 113d | start no earlier than 2003-03-12 |  |  |
| 2522 | 8.9 | FMV 8 | 1d? | 2003-03-12 | 2003-03-12 | 113d | start no earlier than 2003-03-12 |  |  |
| 2523 | 8.10 | Due date for all FMV's for approval by Fox | 1d? | 2003-04-30 | 2003-05-01 | 76.88d | start no earlier than 2003-04-30 |  |  |
| 2524 | 8.11 | FMV 9 - Itchy & Scratcy | 1d? | 2003-03-12 | 2003-03-12 | 113d | start no earlier than 2003-03-12 |  |  |
| 2526 | 8.12 | Localization | 1d? | 2003-01-20 | 2003-01-20 | 151d | start no earlier than 2003-01-20 | Wolfgang Hamann [50%] | 4h |
| 2527 | 8.13 | Dialogue Mastering | 1d? | 2003-01-20 | 2003-01-20 | 151d | start no earlier than 2003-01-20 | Allan Levy | 8h |

Notes:
- 2501: marc to check w. chris on this & stone cutter
- 2503: marc to talk to chris wrt this / allan to compose
- 2504: about 10 tracks ave. 3 min each / 5 horns / rhythm section / guitar / bass / keyboards? / percussion - pepe / call Randall: target for rehearsals - end of April / recording - early May / need to source the studio - / need the whole band to play together
- 2513: Art Cinematics all need to be done by Beta / Wolfgang to check w. vlad re: audio beta
- 2523: All FMV's except Itchy & Scratchy will be delivered to Fox for approval on April 30th

| ID | WBS | Task | Duration | Start | Finish | Complete | Remaining | Total slack | Constraint | Resources | Work | Actual work |
| --- | --- | --- | --- | --- | --- | --- | --- | --- | --- | --- | --- | --- |
| 2528 | 8.14 | **Milestone Delivery Date** | 1d? | 2003-04-15 | 2003-04-16 |  |  | 87.88d |  |  |  |  |
| 2529 | 8.14.1 | Art Beta | 1d? | 2003-04-15 | 2003-04-16 |  |  | 87.88d | start no earlier than 2003-04-15 |  |  |  |
| 2555 | 9 | **Dropped or Moved Tasks** | 155.88d? | 2002-04-16 A | 2002-11-19 | 2% | 152.7d? | 195d |  |  | 188.8h | 3.52h |
| 2556 | 9.1 | **Milestone 13** | 142.88d? | 2002-04-16 A | 2002-10-31 | 3% | 137.96d? | 208d |  |  | 108.8h | 3.52h |
| 2557 | 3.7.19 | Engine sounds working correctly - Final pass | 1d? | 2002-04-16 | 2002-04-17 |  |  | 349.88d |  | Darren Esau [80%] | 6.4h |  |
| 2558 | 3.7.22 | PS2 mipmap tuning | 1d? | 2002-04-16 | 2002-04-17 |  |  | 349.88d |  | Darren Esau [80%] | 6.4h |  |
| 2559 | 3.7.25 | Generic traffic audio | 1d? | 2002-04-16 | 2002-04-17 |  |  | 349.88d |  | Darren Esau [80%] | 6.4h |  |
| 2560 | 3.7.48 | DSG cleanup / abstract base class for DSG objects | 1d? | 2002-04-16 | 2002-04-17 |  |  | 349.88d |  | Devin Murname [80%] | 6.4h |  |
| 2561 | 3.7.34 | Final rendering of visible collision volumes | 1d? | 2002-04-16 | 2002-04-17 |  |  | 349.88d |  | Devin Murname [80%] | 6.4h |  |
| 2562 | 3.7.35 | Occlusion volume runtime | 1d? | 2002-04-16 | 2002-04-17 |  |  | 349.88d |  | Devin Murname [80%] | 6.4h |  |
| 2563 | 3.7.51 | Investigate dynamic loading of characters | 1d? | 2002-04-16 | 2002-04-17 |  |  | 349.88d |  | Devin Murname [80%] | 6.4h |  |
| 2564 | 3.7.30 | Dynamic loading compression incorporated | 1d? | 2002-10-16 | 2002-10-17 |  |  | 218.88d | start no earlier than 2002-10-16 | Devin Murname [80%] | 6.4h |  |
| 2565 | 3.7.26 | Interior gag audio (?who is doing this?) | 1d? | 2002-10-16 | 2002-10-17 |  |  | 218.88d | start no earlier than 2002-10-16 | Darwin Chau | 8h |  |
| 2566 | 3.7.27 | Mini driving games working (? Who is doing this?) | 1d? | 2002-04-16 | 2002-04-17 |  |  | 349.88d |  | Darwin Chau | 8h |  |
| 2567 | 3.7.28 | FMVs playing in game (in between missions) (?who is doing this_ | 1d? | 2002-04-16 | 2002-04-17 |  |  | 349.88d |  | Darwin Chau | 8h |  |
| 2568 | 3.7.29 | General memory management ongoing tasks (?who is doing this?) | 1d? | 2002-04-16 | 2002-04-17 |  |  | 349.88d |  | Darwin Chau | 8h |  |
| 2569 | 3.7.42 | Full use of physics properties from the database | 1d? | 2002-10-22 A | 2002-10-22 | 30% | 0.7d? | 215d |  | Greg Mayer [80%] | 6.4h | 1.92h |
| 2570 | 3.7.49 | Vehicle to vehicle collision improvements | 1d? | 2002-10-31 A | 2002-10-31 | 25% | 0.75d? | 208d |  | Greg Mayer [80%] | 6.4h | 1.6h |
| 2571 | 3.7.52 | Cleanup of dynaphys DSG transforms | 1d? | 2002-04-16 | 2002-04-17 |  |  | 349.88d |  | Greg Mayer [80%] | 6.4h |  |
| 2572 | 3.7.70 | In car character animation triggering | 1d? | 2002-04-16 | 2002-04-17 |  |  | 349.88d |  | Greg Mayer [80%] | 6.4h |  |
| 2573 | 9.2 | **Milestone 14** | 1.88d? | 2002-11-18 A | 2002-11-19 |  | 1.88d? | 195d |  |  | 80h |  |
| 2574 | 3.8.16 | Ensure all Halloween specific functionality gets in the game | 1d? | 2002-11-18 | 2002-11-19 |  |  | 195.88d | start no earlier than 2002-11-18 | Chuck Chow | 8h |  |
| 2575 | 3.8.31 | Per level light files | 1d? | 2002-11-18 A | 2002-11-19 |  | 1d? | 195.88d | start no earlier than 2002-11-18 | Devin Murname |  |  |
| 2576 | 3.8.32 | Support artists for time-of-day specific rendering issues | 1d? | 2002-11-18 | 2002-11-19 |  |  | 195.88d | start no earlier than 2002-11-18 | Devin Murname | 8h |  |
| 2577 | 9.2.4 | PS2 Timing Hang investigation | 1d? | 2002-11-19 | 2002-11-19 |  |  | 195d | start no earlier than 2002-11-19 | Devin Murname | 8h |  |
| 2578 | 9.2.5 | Tree allocations fixed/moved offline. | 1d? | 2002-11-19 | 2002-11-19 |  |  | 195d | start no earlier than 2002-11-19 | Devin Murname | 8h |  |
| 2579 | 9.2.6 | Occlusion volumes | 1d? | 2002-11-19 | 2002-11-19 |  |  | 195d | start no earlier than 2002-11-19 | Devin Murname | 8h |  |
| 2580 | 9.2.7 | Tree datastructure revised | 1d? | 2002-11-19 | 2002-11-19 |  |  | 195d | start no earlier than 2002-11-19 | Devin Murname | 8h |  |
| 2581 | 9.2.8 | Rendering Performance | 1d? | 2002-11-19 | 2002-11-19 |  |  | 195d | start no earlier than 2002-11-19 | Devin Murname | 8h |  |
| 2582 | 3.8.55 | Interior enter/exit presentation with iris transition (partially completed by Darwin) | 1d? | 2002-11-18 | 2002-11-19 |  |  | 195.88d | start no earlier than 2002-11-18 | James Harrison | 8h |  |
| 2583 | 3.8.65 | Presentation manager changes required for presentation enhancements | 1d? | 2002-11-18 | 2002-11-19 |  |  | 195.88d | start no earlier than 2002-11-18 | Michael Riegger | 8h |  |
| 2584 | 3.8.76 | Ensure all interactive gags get into the game and can be triggered correctly | 1d? | 2002-11-18 | 2002-11-19 |  |  | 195.88d | start no earlier than 2002-11-18 | Nigel Brooke | 8h |  |

Notes:
- 2557: next milestone
- 2558: next ms
- 2559: next ms
- 2560: Devin Murname (Thu 07/11/02): postponed
- 2561: Devin Murname (Thu 07/11/02): postponed/cut
- 2562: Devin Murname (Thu 07/11/02): postponed / possibly done as part of the performance increases
- 2563: Devin Murname (Thu 07/11/02): postponed/unknown item
- 2564: Devin Murname (Thu 07/11/02): postponed / There doesn't seem to be a way for me to indicate the nature of these tasks. / Some have been cut from this milestone, others have been given to Cary, and others yet are ongoing tasks with no set finish date. / barring ongoing maintenance and support tasks, Performance and memory usage are the only ones on my plate currently, and this has been vetted by Joel.
- 2568: Devin Murname (Thu 07/11/02): o/g
- 2569: - in car character animation triggering / - cleanup of dynaph DSG transform / - vehicle-vehicle collision improvements / - full use of physics properties from the database / should probably be deferred until the next milestone
- 2570: - in car character animation triggering / - cleanup of dynaph DSG transform / - vehicle-vehicle collision improvements / - full use of physics properties from the database / should probably be deferred until the next milestone
- 2571: - in car character animation triggering / - cleanup of dynaph DSG transform / - vehicle-vehicle collision improvements / - full use of physics properties from the database / should probably be deferred until the next milestone
- 2572: - in car character animation triggering / - cleanup of dynaph DSG transform / - vehicle-vehicle collision improvements / - full use of physics properties from the database / should probably be deferred until the next milestone
- 2575: Devin Murname (Tue 19/11/02): done. this has always been true.
- 2583: Michael Riegger (Tue 19/11/02): This was in my last milestone, but I was never assigned anything for it. Now Ian is assigned this task apparently, whats going on?
