# SRRII Pre-Production Schedule

Schedule from MS Project, 2002-02-25 to 2002-04-16, A marks actual dates.
Simpsons Road Rage Pre-Production Schedule
Radical Entertainment

## Calendars

- Standard: Mon-Fri 08:00-12:00, 13:00-17:00; Sat-Sun off. Exceptions (off unless hours are given): 2002-03-29.

## Resources

| Resource |
| --- |
| James Ceraldi |
| Darwin Chau |
| Darren Esau |
| Cary Brisebois |
| Travis Brown-John |
| Greg Mayer |
| Darryl Long |
| Devin Murname |
| NEW CODER 1 |
| Joe Nickolls |
| Allister Jones |
| NEW CODER 2 |
| Yayoi Maruno |
| Jeff Pidsadny |
| Kevin Fink |
| Trevor Lim |
| Vincent Chin |
| Aryan Hunbeck |
| Jeremy Mesana |
| ANIMATOR #2 |
| Joe McGinn |
| Shawn Lee |
| Jeff Houde |
| Marc Baril |
| Jeff Harkness |
| Chuck Chow |

## Schedule

| ID | WBS | Task | Type | Duration | Start | Finish | Predecessors | Complete | Remaining | Total slack | Free slack | Constraint | Resources | Work | Actual work |
| --- | --- | --- | --- | --- | --- | --- | --- | --- | --- | --- | --- | --- | --- | --- | --- |
| 1 | 1 | DESIGN TASKS | milestone | 0d | 2002-02-25 | 2002-02-25 |  |  |  | 63d |  |  |  |  |  |
| 2 | 2 | **Preliminary Design Phase (ends March 15th)** |  | 15d? | 2002-02-25 A | 2002-03-18 |  | 97% | 0.5d? | 20d |  |  |  | 240h | 232h |
| 3 | 2.1 | 1. Story mode (gameflow, gameplay combinations for foot & car for 1 complete mission) |  | 1d | 2002-02-25 A | 2002-02-26 A |  | 100% |  |  |  |  | Joe McGinn | 8h | 8h |
| 4 | 2.2 | 2. Vehicle AI |  | 1d? | 2002-02-26 A | 2002-02-27 A | 3 | 100% |  |  |  | start no earlier than 2002-02-19 | Joe McGinn | 8h | 8h |
| 5 | 2.3 | 3. Art Content Size (Worlds, Characters, Vehicles and Animations) |  | 15d | 2002-02-25 A | 2002-03-18 A |  | 100% |  |  |  |  | Shawn Lee | 120h | 120h |
| 6 | 2.4 | 4. Driving Physics + Vehicle Damage |  | 1d? | 2002-02-27 A | 2002-02-28 A | 4 | 100% |  |  |  |  | Joe McGinn | 8h | 8h |
| 7 | 2.5 | 5. Game Controls |  | 1d? | 2002-02-28 A | 2002-03-01 A | 6 | 100% |  |  |  |  | Joe McGinn | 8h | 8h |
| 8 | 2.6 | 6. Head to Head |  | 1d? | 2002-03-01 A | 2002-03-04 A | 7 | 100% |  |  |  |  | Joe McGinn | 8h | 8h |
| 9 | 2.7 | 7. Gameplay Plan 1 |  | 1d? | 2002-03-04 A | 2002-03-05 A | 8 | 100% |  |  |  |  | Joe McGinn | 8h | 8h |
| 10 | 2.8 | 8. Tools Revision 1 |  | 1d? | 2002-03-05 A | 2002-03-06 A | 9 | 100% |  |  |  |  | Joe McGinn | 8h | 8h |
| 11 | 2.9 | 9. Camera (Gameplay) |  | 1d? | 2002-03-06 A | 2002-03-07 A | 10 | 100% |  |  |  |  | Joe McGinn | 8h | 8h |
| 12 | 2.10 | 10. Presentation/NIS |  | 1d? | 2002-03-07 A | 2002-03-08 A | 11 | 100% |  |  |  |  | Joe McGinn | 8h | 8h |
| 13 | 2.11 | 11. Sound (incl. Dialog) |  | 1d? | 2002-03-08 A | 2002-03-11 A | 12 | 100% |  |  |  |  | Joe McGinn | 8h | 8h |
| 14 | 2.12 | 12. Gameplay Plan 2 |  | 1d? | 2002-03-11 A | 2002-03-12 A | 13 | 100% |  |  |  |  | Joe McGinn | 8h | 8h |
| 15 | 2.13 | 13. Tools Revision 2 |  | 1d? | 2002-03-12 A | 2002-03-13 A | 14 | 100% |  |  |  |  | Joe McGinn | 8h | 8h |
| 16 | 2.14 | 14. HUD |  | 1d | 2002-03-13 A | 2002-03-14 A | 15 | 100% |  |  |  |  | Joe McGinn | 8h | 8h |
| 17 | 2.15 | 15. FE (incl. Pause Menu) |  | 1d | 2002-03-14 A | 2002-03-15 A | 16 | 100% |  |  |  |  | Joe McGinn | 8h | 8h |
| 18 | 2.16 | 16. Memory Card |  | 0.5d | 2002-03-15 | 2002-03-15 | 17 |  |  | 20d | 0d |  | Joe McGinn | 4h |  |
| 19 | 2.17 | 17. Rewards + Lockable |  | 0.5d | 2002-03-15 | 2002-03-18 | 18 |  |  | 20d |  |  | Joe McGinn | 4h |  |
| 20 | 3 | FMV + Stories |  | 15d | 2002-02-25 | 2002-03-18 |  |  |  | 20d |  |  | Jeff Houde [50%] | 60h |  |
| 21 | 4 | **Core Design Phase** |  | 19d | 2002-03-18 A | 2002-04-15 |  | 85% | 2.92d | 1d |  |  |  | 159.6h | 136.4h |
| 22 | 4.1 | Mission/level game flow |  | 5d | 2002-03-18 A | 2002-03-25 A |  | 100% |  |  |  | start no earlier than 2002-03-18 | Joe McGinn [50%] | 20h | 20h |
| 23 | 4.2 | Memory Card Flow |  | 5d | 2002-03-18 A | 2002-03-25 A |  | 100% |  |  |  | start no earlier than 2002-03-18 | Joe McGinn [50%] | 20h | 20h |
| 24 | 4.3 | Dialog system |  | 5d | 2002-03-25 A | 2002-04-02 A |  | 100% |  |  |  | start no earlier than 2002-03-25 | Joe McGinn [25%] | 10h | 10h |
| 25 | 4.4 | Presentation |  | 5d | 2002-03-25 A | 2002-04-02 A |  | 100% |  |  |  | start no earlier than 2002-03-25 | Joe McGinn [25%] | 10h | 10h |
| 26 | 4.5 | Collisions (animated physics object issues) |  | 5d | 2002-03-25 A | 2002-04-02 A |  | 100% |  |  |  | start no earlier than 2002-03-25 | Joe McGinn [25%] | 10h | 10h |
| 27 | 4.6 | Front End |  | 5d | 2002-03-25 A | 2002-04-02 A |  | 100% |  |  |  | start no earlier than 2002-03-25 | Joe McGinn [25%] | 10h | 10h |
| 28 | 4.7 | Mission Scripter |  | 5d | 2002-04-02 A | 2002-04-09 A | 27 | 100% |  |  |  |  | Joe McGinn [33%] | 13.2h | 13.2h |
| 29 | 4.8 | Head to Head |  | 5d | 2002-04-01 A | 2002-04-08 A |  | 100% |  |  |  | start no earlier than 2002-04-01 | Joe McGinn [33%] | 13.2h | 13.2h |
| 30 | 4.9 | Gameplay Plan |  | 5d | 2002-04-01 | 2002-04-08 |  |  |  | 1d | 0d | start no earlier than 2002-04-01 | Joe McGinn [33%] | 13.2h |  |
| 31 | 4.10 | Gameplay camera |  | 5d | 2002-04-08 A | 2002-04-15 A | 30 | 100% |  |  |  |  | Joe McGinn [25%] | 10h | 10h |
| 32 | 4.11 | Designer tools |  | 5d | 2002-04-08 | 2002-04-15 |  |  |  | 1d |  | start no earlier than 2002-04-08 | Joe McGinn [25%] | 10h |  |
| 33 | 4.12 | Vehicle AI |  | 5d | 2002-04-08 A | 2002-04-15 A |  | 100% |  |  |  | start no earlier than 2002-04-08 | Joe McGinn [25%] | 10h | 10h |
| 34 | 4.13 | Animation |  | 5d | 2002-04-08 A | 2002-04-15 A |  | 100% |  |  |  | start no earlier than 2002-04-08 | Joe McGinn [25%] | 10h | 10h |

| ID | WBS | Task | Type | Duration | Start | Finish | Predecessors | Complete | Remaining | Total slack | Constraint | Resources | Work | Actual work |
| --- | --- | --- | --- | --- | --- | --- | --- | --- | --- | --- | --- | --- | --- | --- |
| 35 | 5 | **Art content sessions** |  | 20d | 2002-03-18 A | 2002-04-16 |  | 67% | 6.67d | 0d |  | Joe McGinn | 544h | 314.67h |
| 36 | 5.1 | Characters & vehicles |  | 20d | 2002-03-18 A | 2002-04-16 A |  | 100% |  |  | start no earlier than 2002-03-18 | Joe McGinn [5%]; Shawn Lee [5%] | 16h | 16h |
| 37 | 5.2 | World design and details |  | 20d | 2002-03-18 A | 2002-04-16 A | 5 | 100% |  |  | start no earlier than 2002-03-18 | Shawn Lee | 160h | 160h |
| 38 | 5.3 | Sound details |  | 20d | 2002-03-18 | 2002-04-16 |  |  |  | 0d | start no earlier than 2002-03-18 | Marc Baril | 160h |  |
| 39 | 5.4 | Presentation specifics |  | 20d | 2002-03-18 A | 2002-04-16 A |  | 100% |  |  | start no earlier than 2002-03-18 | Joe McGinn [5%]; Shawn Lee [5%] | 16h | 16h |
| 40 | 5.5 | Animation specifics |  | 20d | 2002-03-18 A | 2002-04-16 A |  | 100% |  |  | start no earlier than 2002-03-18 | Joe McGinn [5%]; Shawn Lee [5%] | 16h | 16h |
| 41 | 5.6 | Special effects needs |  | 20d | 2002-03-18 | 2002-04-16 |  |  |  | 0d | start no earlier than 2002-03-18 | Joe McGinn [5%]; Shawn Lee [5%] | 16h |  |
| 43 | 6 | ART TASKS | milestone | 0d | 2002-02-25 | 2002-02-25 |  |  |  | 35d |  |  |  |  |
| 44 | 7 | **Art Direction** |  | 15d | 2002-02-25 A | 2002-03-18 A |  | 100% |  |  |  |  | 120h | 120h |
| 45 | 7.1 | Art Bible |  | 15d | 2002-02-25 A | 2002-03-18 A |  | 100% |  |  |  | Yayoi Maruno | 120h | 120h |
| 46 | 8 | **Pre design of Level 1: includes defining:** |  | 5d | 2002-03-04 A | 2002-03-11 |  | 70% | 1.5d | 25d |  |  | 72h | 50.4h |
| 47 | 8.1 | Theme and subthemes |  | 5d | 2002-03-04 A | 2002-03-11 A |  | 100% |  |  | start no earlier than 2002-03-04 | Jeff Pidsadny [10%]; Shawn Lee [10%] | 8h | 8h |
| 48 | 8.2 | Gameplay overview (what kind of gameplay elements are contained in the level.) |  | 5d | 2002-03-04 A | 2002-03-11 A |  | 100% |  |  | start no earlier than 2002-03-04 | Jeff Pidsadny [10%]; Shawn Lee [10%] | 8h | 8h |
| 49 | 8.3 | Landmark list A for each subzone |  | 5d | 2002-03-04 A | 2002-03-11 A |  | 100% |  |  | start no earlier than 2002-03-04 | Jeff Pidsadny [10%]; Shawn Lee [10%] | 8h | 8h |
| 50 | 8.4 | Landmark list B for each subzone |  | 5d | 2002-03-04 A | 2002-03-11 A |  | 100% |  |  | start no earlier than 2002-03-04 | Jeff Pidsadny [10%]; Shawn Lee [10%] | 8h | 8h |
| 51 | 8.5 | Which landmarks need interior for visuals only |  | 5d | 2002-03-04 A | 2002-03-11 |  | 10% | 4.5d | 59d | start no earlier than 2002-03-04 | Jeff Pidsadny [10%]; Shawn Lee [10%] | 8h | 0.8h |
| 52 | 8.6 | Props specific to each subzone |  | 5d | 2002-03-04 A | 2002-03-11 A |  | 100% |  |  | start no earlier than 2002-03-04 | Jeff Pidsadny [10%]; Shawn Lee [10%] | 8h | 8h |
| 53 | 8.7 | General Props – breakable and moveable - identify |  | 5d | 2002-03-04 A | 2002-03-11 A |  | 100% |  |  | start no earlier than 2002-03-04 | Jeff Pidsadny [10%]; Shawn Lee [10%] | 8h | 8h |
| 54 | 8.8 | Animating visual props (ie tire fire, birds flying) |  | 5d | 2002-03-04 A | 2002-03-11 |  | 10% | 4.5d | 59d | start no earlier than 2002-03-04 | Jeff Pidsadny [10%]; Shawn Lee [10%] | 8h | 0.8h |
| 55 | 8.9 | Animating physics objects |  | 5d | 2002-03-04 A | 2002-03-11 |  | 10% | 4.5d | 59d | start no earlier than 2002-03-04 | Jeff Pidsadny [10%]; Shawn Lee [10%] | 8h | 0.8h |
| 56 | 9 | Diagrammatic layout on paper and maya/autocad |  | 5d | 2002-03-04 A | 2002-03-11 A |  | 100% |  |  | start no earlier than 2002-03-04 | Jeff Pidsadny [10%]; Shawn Lee [10%] | 8h | 8h |
| 57 | 10 | Mass Study – preliminary creation of roadmap layout and track design to test in-game with current pipeline |  | 5d | 2002-03-11 A | 2002-03-18 A | 56 | 100% |  |  | start no earlier than 2002-03-11 | Jeff Pidsadny; Shawn Lee | 80h | 80h |
| 58 | 11 | Incorporate landmark geometry masses. |  | 5d | 2002-03-18 A | 2002-03-25 A | 57 | 100% |  |  | start no earlier than 2002-03-18 | Jeff Pidsadny; Shawn Lee | 80h | 80h |
| 59 | 12 | **Pre design of Level 2: includes defining:** |  | 5d | 2002-04-01 A | 2002-04-08 |  | 56% | 2.22d | 6d |  |  | 72h | 40h |
| 60 | 12.1 | Theme and subthemes |  | 5d | 2002-04-01 A | 2002-04-08 A |  | 100% |  |  | start no earlier than 2002-04-01 | Jeff Pidsadny [10%]; Shawn Lee [10%] | 8h | 8h |
| 61 | 12.2 | Gameplay overview (what kind of gameplay elements contained in the level.) |  | 5d | 2002-04-01 A | 2002-04-08 A |  | 100% |  |  | start no earlier than 2002-04-01 | Jeff Pidsadny [10%]; Shawn Lee [10%] | 8h | 8h |
| 62 | 12.3 | Landmark list A for each subzone |  | 5d | 2002-04-01 A | 2002-04-08 A |  | 100% |  |  | start no earlier than 2002-04-01 | Jeff Pidsadny [10%]; Shawn Lee [10%] | 8h | 8h |
| 63 | 12.4 | Landmark list B for each subzone |  | 5d | 2002-04-01 A | 2002-04-08 A |  | 100% |  |  | start no earlier than 2002-04-01 | Jeff Pidsadny [10%]; Shawn Lee [10%] | 8h | 8h |
| 64 | 12.5 | Which landmarks need interior for visuals only |  | 5d | 2002-04-01 | 2002-04-08 |  |  |  | 40d | start no earlier than 2002-04-01 | Jeff Pidsadny [10%]; Shawn Lee [10%] | 8h |  |
| 65 | 12.6 | Props specific to each subzone |  | 5d | 2002-04-01 A | 2002-04-08 |  | 50% | 2.5d | 40d | start no earlier than 2002-04-01 | Jeff Pidsadny [10%]; Shawn Lee [10%] | 8h | 4h |
| 66 | 12.7 | General Props – breakable and moveable - identify |  | 5d | 2002-04-01 A | 2002-04-08 |  | 50% | 2.5d | 40d | start no earlier than 2002-04-01 | Jeff Pidsadny [10%]; Shawn Lee [10%] | 8h | 4h |
| 67 | 12.8 | Animating visual props (ie tire fire, birds flying) |  | 5d | 2002-04-01 | 2002-04-08 |  |  |  | 40d | start no earlier than 2002-04-01 | Jeff Pidsadny [10%]; Shawn Lee [10%] | 8h |  |
| 68 | 12.9 | Animating physics objects |  | 5d | 2002-04-01 | 2002-04-08 |  |  |  | 40d | start no earlier than 2002-04-01 | Jeff Pidsadny [10%]; Shawn Lee [10%] | 8h |  |
| 69 | 13 | Diagrammatic layout on paper and maya/autocad |  | 5d | 2002-04-01 A | 2002-04-08 A |  | 100% |  |  | start no earlier than 2002-04-01 | Jeff Pidsadny [10%]; Shawn Lee [10%] | 8h | 8h |
| 70 | 14 | Mass Study – preliminary creation of roadmap layout and track design test in-game with current pipeline |  | 5d | 2002-04-08 A | 2002-04-15 A | 69 | 100% |  |  | start no earlier than 2002-04-08 | Jeff Pidsadny; Shawn Lee | 80h | 80h |

Notes:
- 51: D-Story concept and MIssion stories.
- 54: D-Story concept and MIssion stories.
- 55: D-Story concept and MIssion stories.
- 58: At this point the world is built at a state of Stage 1 of finalizing the track design and landmark placement with composition, sightlines, horizon line, in mind. This is not at the stage of art direction with textures and lighting.
- 64: D-Story concept and MIssion stories.
- 67: D-Story concept and MIssion stories.
- 68: D-Story concept and MIssion stories.

| ID | WBS | Task | Type | Duration | Start | Finish | Predecessors | Complete | Remaining | Total slack | Constraint | Resources | Work | Actual work |
| --- | --- | --- | --- | --- | --- | --- | --- | --- | --- | --- | --- | --- | --- | --- |
| 71 | 15 | **Level and Landmark Content** |  | 29d | 2002-03-04 A | 2002-04-15 |  | 86% | 3.97d | 1d |  |  | 1197.6h | 1036.8h |
| 72 | 15.1 | Organization of level (directory structure, naming convention, file structure, … 0 |  | 5d | 2002-03-04 A | 2002-03-11 A |  | 100% |  |  | start no earlier than 2002-03-04 | Kevin Fink; Vincent Chin; Trevor Lim | 120h | 120h |
| 73 | 15.2 | Model and create collisions for all landmarks for Level 1. (shape and footprint very crucial here) |  | 5d | 2002-03-11 A | 2002-03-18 A | 72, 56 | 100% |  |  | start no earlier than 2002-03-11 | Kevin Fink; Vincent Chin; Trevor Lim | 120h | 120h |
| 74 | 15.3 | Continue modeling and creating collisions for all landmarks for Level 1. (shape and footprint very crucial here) |  | 5d | 2002-03-18 A | 2002-03-25 A | 73 | 100% |  |  | start no earlier than 2002-03-18 | Kevin Fink; Trevor Lim; Vincent Chin | 120h | 120h |
| 75 | 15.4 | Replace massing with real props and objects. |  | 9d | 2002-03-25 A | 2002-04-08 A | 74 | 100% |  |  | start no earlier than 2002-03-25 | Kevin Fink; Trevor Lim; Vincent Chin | 237.6h | 237.6h |
| 76 | 15.5 | Model all landmarks for Level 2. (shape and footprint very crucial here) |  | 5d | 2002-04-08 A | 2002-04-15 A | 69 | 100% |  |  | start no earlier than 2002-04-08 | Kevin Fink; Trevor Lim; Vincent Chin | 120h | 120h |
| 77 | 15.6 | Model & Texture Level 1 Props |  | 10d | 2002-04-01 A | 2002-04-15 |  | 33% | 6.7d | 35d | start no earlier than 2002-04-01 | Vincent Chin; Trevor Lim; Kevin Fink | 240h | 79.2h |
| 78 | 15.7 | Model & Texture Global Props |  | 10d | 2002-03-25 A | 2002-04-09 A |  | 100% |  |  | start no earlier than 2002-03-25 | Vincent Chin; Trevor Lim; Kevin Fink | 240h | 240h |
| 79 | 16 | **Vehicles** |  | 10d | 2002-03-04 A | 2002-03-18 A |  | 100% |  |  |  |  | 120h | 120h |
| 80 | 16.1 | Vehicle Damage AVI continued |  | 5d | 2002-03-04 A | 2002-03-11 A |  | 100% |  |  | start no earlier than 2002-03-04 | Aryan Hunbeck | 40h | 40h |
| 81 | 16.2 | Vehicle damage AVI complete |  | 5d | 2002-03-11 A | 2002-03-18 A | 80 | 100% |  |  | start no earlier than 2002-03-11 | Aryan Hunbeck | 40h | 40h |
| 82 | 16.3 | Getting into car AVI finished |  | 5d | 2002-03-04 A | 2002-03-11 A |  | 100% |  |  | start no earlier than 2002-03-04 | Trevor Lim | 40h | 40h |
| 83 | 17 | **Characters** |  | 20d | 2002-03-18 A | 2002-04-16 A |  | 100% |  |  |  |  | 144h | 144h |
| 84 | 17.1 | Build global skeleton and bind to Homer, Marge, Bart, Lisa ready for animation and for Travis |  | 5d | 2002-03-18 A | 2002-03-25 A |  | 100% |  |  | start no earlier than 2002-03-18 | Aryan Hunbeck [80%] | 32h | 32h |
| 85 | 17.2 | Build character models (will define later date) in-game |  | 5d | 2002-03-25 A | 2002-04-02 A | 84 | 100% |  |  | start no earlier than 2002-03-25 | Aryan Hunbeck | 40h | 40h |
| 86 | 17.3 | Continuation of building character models (to define later) |  | 5d | 2002-04-02 A | 2002-04-09 A | 85 | 100% |  |  | start no earlier than 2002-04-01 | Aryan Hunbeck | 40h | 40h |
| 87 | 17.4 | Conintuation of character modeling (to define later) |  | 5d | 2002-04-09 A | 2002-04-16 A | 86 | 100% |  |  | start no earlier than 2002-04-08 | Aryan Hunbeck [80%] | 32h | 32h |
| 88 | 18 | **Animations** |  | 20d | 2002-03-18 A | 2002-04-16 A |  | 100% |  |  |  |  | 188h | 188h |
| 89 | 18.1 | Show & train Jeremy with: Perforce, Documentation (Jeremy to read), and Animation pipeline. |  | 5d | 2002-03-18 A | 2002-03-25 A |  | 100% |  |  | start no earlier than 2002-03-18 | Aryan Hunbeck [20%]; Jeremy Mesana [50%]; Jeff Harkness [10%] | 32h | 32h |
| 90 | 18.2 | Overview of game, play RoadRage, and experiement with animation with placeholder characters |  | 5d | 2002-03-18 A | 2002-03-25 A |  | 100% |  |  | start no earlier than 2002-03-18 | Jeremy Mesana [50%]; Jeff Harkness [20%] | 28h | 28h |
| 91 | 18.3 | Define with Jeff H. and Designers animation list for In & Out of car |  | 5d | 2002-03-25 A | 2002-04-02 A | 90, 89 | 100% |  |  | start no earlier than 2002-03-25 | Jeremy Mesana [50%] | 20h | 20h |
| 92 | 18.4 | Start creating in-game animations |  | 5d | 2002-03-25 A | 2002-04-02 A | 90 | 100% |  |  | start no earlier than 2002-03-25 | Jeremy Mesana [50%] | 20h | 20h |
| 93 | 18.5 | Creation of in-game out of car animations (to define soon) |  | 5d | 2002-04-02 A | 2002-04-09 A | 91, 92 | 100% |  |  | start no earlier than 2002-04-01 | Jeremy Mesana | 40h | 40h |
| 94 | 18.6 | Continuation of in-game out of car animation (to define later) |  | 5d | 2002-04-09 A | 2002-04-16 A | 93 | 100% |  |  | start no earlier than 2002-04-08 | Jeremy Mesana; Aryan Hunbeck [20%] | 48h | 48h |
| 97 | 19 | CODING TASKS | milestone | 0d | 2002-02-25 | 2002-02-25 |  |  |  | 69d |  |  |  |  |
| 98 | 20 | Loading: manager |  | 3d | 2002-03-06 A | 2002-03-11 A |  | 100% |  |  | start no earlier than 2002-03-06 | Darwin Chau | 24h | 24h |
| 99 | 21 | Scripting system |  | 8d | 2002-03-11 A | 2002-03-21 A |  | 100% |  |  | start no earlier than 2002-03-11 | Darwin Chau | 64h | 64h |
| 100 | 22 | Game architecture |  | 5d | 2002-03-21 A | 2002-03-28 A |  | 100% |  |  | start no earlier than 2002-03-21 | Darwin Chau | 40h | 40h |
| 101 | 23 | Mission manager |  | 7d | 2002-03-28 A | 2002-04-09 A |  | 100% |  |  | start no earlier than 2002-03-28 | Darwin Chau | 56h | 56h |
| 103 | 24 | Sound Pipeline |  | 3d | 2002-03-06 A | 2002-03-11 A |  | 100% |  |  | start no earlier than 2002-03-06 | Darren Esau | 24h | 24h |

| ID | WBS | Task | Duration | Start | Finish | Predecessors | Complete | Remaining | Total slack | Constraint | Resources | Work | Actual work |
| --- | --- | --- | --- | --- | --- | --- | --- | --- | --- | --- | --- | --- | --- |
| 104 | 25 | **Sound Code Architecture** | 15d | 2002-03-11 A | 2002-04-02 A |  | 100% |  |  |  | Darren Esau | 240h | 240h |
| 105 | 25.1 | Music and sound player | 5d | 2002-03-11 A | 2002-03-18 A |  | 100% |  |  | start no earlier than 2002-03-11 | Darren Esau | 40h | 40h |
| 106 | 25.2 | Character dialog system | 5d | 2002-03-18 A | 2002-03-25 A |  | 100% |  |  | start no earlier than 2002-03-18 | Darren Esau | 40h | 40h |
| 107 | 25.3 | Location based sounds | 5d | 2002-03-25 A | 2002-04-02 A |  | 100% |  |  | start no earlier than 2002-03-25 | Darren Esau | 40h | 40h |
| 108 | 26 | PS2 build changes | 3d | 2002-04-01 A | 2002-04-04 A |  | 100% |  |  | start no earlier than 2002-04-01 | Darren Esau | 24h | 24h |
| 110 | 27 | **Driving engine modifications/improvements** | 17d | 2002-03-06 A | 2002-04-01 A |  | 100% |  |  |  | Greg Mayer | 272h | 272h |
| 111 | 27.1 | engine, rpm, gears, general sound interface | 3d | 2002-03-06 A | 2002-03-11 A |  | 100% |  |  | start no earlier than 2002-03-06 | Greg Mayer | 24h | 24h |
| 112 | 27.2 | more tuning of steering, cm offset | 3d | 2002-03-11 A | 2002-03-14 A |  | 100% |  |  | start no earlier than 2002-03-11 | Greg Mayer | 24h | 24h |
| 113 | 27.3 | parameters for designers to tune | 3d | 2002-03-14 A | 2002-03-19 A |  | 100% |  |  | start no earlier than 2002-03-14 | Greg Mayer | 24h | 24h |
| 114 | 27.4 | terrain interface | 2d | 2002-03-19 A | 2002-03-21 A |  | 100% |  |  | start no earlier than 2002-03-19 | Greg Mayer | 16h | 16h |
| 115 | 27.5 | better collision response | 2d | 2002-03-21 A | 2002-03-25 A |  | 100% |  |  | start no earlier than 2002-03-21 | Greg Mayer | 16h | 16h |
| 116 | 27.6 | Drving engine technical design | 4d | 2002-03-25 A | 2002-04-01 A |  | 100% |  |  | start no earlier than 2002-03-25 | Greg Mayer | 32h | 32h |
| 117 | 28 | **World Physics Manager** | 5.12d | 2002-04-01 A | 2002-04-08 |  | 60% | 2.05d | 6d |  | Greg Mayer | 81h | 48.6h |
| 118 | 28.1 | Architecture and technical design | 2d | 2002-04-01 A | 2002-04-02 A |  | 100% |  |  | start no earlier than 2002-03-29 | Greg Mayer | 16h | 16h |
| 119 | 28.2 | Animated physics objects | 1d | 2002-04-03 A | 2002-04-04 A |  | 100% |  |  | start no earlier than 2002-04-03 | Greg Mayer | 8h | 8h |
| 120 | 28.3 | Collision manager 'areas' and fence tool | 1d | 2002-04-04 | 2002-04-05 |  |  |  | 41d | start no earlier than 2002-04-04 | Greg Mayer | 8h |  |
| 121 | 28.4 | World object attributes ie. Mass, friction | 1d | 2002-04-05 | 2002-04-08 |  |  |  | 40d | start no earlier than 2002-04-05 | Greg Mayer | 8h |  |
| 123 | 29 | **Animation system** | 8d | 2002-03-06 A | 2002-03-18 A |  | 100% |  |  |  | Travis Brown-John | 128h | 128h |
| 124 | 29.1 | Out of car character setup, animation, and movement (Docs & Prototype) | 2d | 2002-03-06 A | 2002-03-08 A |  | 100% |  |  | start no earlier than 2002-03-06 | Travis Brown-John | 16h | 16h |
| 125 | 29.2 | walking on arbitrary meshes | 2d | 2002-03-08 A | 2002-03-12 A |  | 100% |  |  | start no earlier than 2002-03-08 | Travis Brown-John | 16h | 16h |
| 126 | 29.3 | skidding, stopping and u-turns | 2d | 2002-03-12 A | 2002-03-14 A |  | 100% |  |  | start no earlier than 2002-03-12 | Travis Brown-John | 16h | 16h |
| 127 | 29.4 | Head tracking | 2d | 2002-03-14 A | 2002-03-18 A |  | 100% |  |  | start no earlier than 2002-03-14 | Travis Brown-John | 16h | 16h |
| 128 | 30 | Escape logic (Docs & Prototype) | 4d | 2002-03-18 A | 2002-03-22 A |  | 100% |  |  | start no earlier than 2002-03-18 | Travis Brown-John | 32h | 32h |
| 129 | 31 | **Chase logic (Docs & Prototype)** | 4d | 2002-03-22 A | 2002-03-28 A |  | 100% |  |  |  | Travis Brown-John | 64h | 64h |
| 130 | 31.1 | Docs | 4d | 2002-03-22 A | 2002-03-28 A |  | 100% |  |  | start no earlier than 2002-03-22 | Travis Brown-John | 32h | 32h |
| 131 | 32 | Road network (Docs & Prototype) | 4d | 2002-04-03 A | 2002-04-09 A | 136 | 100% |  |  | start no earlier than 2002-04-03 | Travis Brown-John | 32h | 32h |

Notes:
- 108: Code Warrior implementation will take 1 or 2 days.

| ID | WBS | Task | Duration | Start | Finish | Complete | Remaining | Total slack | Constraint | Resources | Work | Actual work |
| --- | --- | --- | --- | --- | --- | --- | --- | --- | --- | --- | --- | --- |
| 133 | 33 | **Track Editor** | 13d | 2002-03-06 A | 2002-03-25 A | 100% |  |  |  | Cary Brisebois | 208h | 208h |
| 134 | 33.1 | Road network | 7d | 2002-03-06 A | 2002-03-15 A | 100% |  |  | start no earlier than 2002-03-06 | Cary Brisebois | 56h | 56h |
| 135 | 33.2 | Locators | 3d | 2002-03-15 A | 2002-03-20 A | 100% |  |  | start no earlier than 2002-03-15 | Cary Brisebois | 24h | 24h |
| 136 | 33.3 | Pedestrian Pathing | 3d | 2002-03-20 A | 2002-03-25 A | 100% |  |  | start no earlier than 2002-03-20 | Cary Brisebois | 24h | 24h |
| 137 | 34 | **World builder** | 4d | 2002-03-25 A | 2002-04-01 | 90% | 0.4d | 11d |  | Cary Brisebois | 64h | 57.6h |
| 138 | 34.1 | Artist Utilities (MEL scripts) | 4d | 2002-03-25 A | 2002-04-01 | 90% | 0.4d | 45d | start no earlier than 2002-03-25 | Cary Brisebois | 32h | 28.8h |
| 139 | 35 | Pipelines Documents | 2d | 2002-04-01 A | 2002-04-02 A | 100% |  |  | start no earlier than 2002-03-29 | Cary Brisebois | 16h | 16h |
| 141 | 36 | Rendering: architecture | 5d | 2002-03-06 A | 2002-03-13 A | 100% |  |  | start no earlier than 2002-03-06 | Darryl Long | 40h | 40h |
| 142 | 37 | Head 2 Head | 5d | 2002-03-13 A | 2002-03-20 | 75% | 1.25d | 52d | start no earlier than 2002-03-13 | Darryl Long | 40h | 30h |
| 143 | 38 | **Presentation system** | 18d | 2002-03-20 A | 2002-04-16 | 28% | 12.92d | 0d |  |  | 156h | 44h |
| 144 | 38.1 | Presentation system | 10d | 2002-03-20 | 2002-04-04 |  |  | 42d | start no earlier than 2002-03-20 | Darryl Long | 80h |  |
| 145 | 38.2 | Movie player in game | 1.5d | 2002-04-03 A | 2002-04-04 A | 100% |  |  | start no earlier than 2002-04-03 | Darryl Long | 12h | 12h |
| 146 | 38.3 | NIS system | 4d | 2002-04-04 A | 2002-04-10 | 50% | 2d | 38d | start no earlier than 2002-04-04 | Darryl Long | 32h | 16h |
| 147 | 38.4 | Facial animation | 4d | 2002-04-10 A | 2002-04-16 | 50% | 2d | 0d | start no earlier than 2002-04-10 | Darryl Long | 32h | 16h |
| 149 | 39 | Rendering: performance (render restrictions/data) | 2.5d | 2002-03-06 A | 2002-03-08 A | 100% |  |  | start no earlier than 2002-03-06 | Devin Murname | 20h | 20h |
| 150 | 40 | Rendering: architecture | 20d | 2002-03-11 A | 2002-04-09 A | 100% |  |  | start no earlier than 2002-03-11 | Devin Murname | 160h | 160h |
| 152 | 41 | **GUI system and Front-end (with HUD)** | 18d | 2002-03-06 A | 2002-04-02 A | 100% |  |  |  | Chuck Chow | 280h | 280h |
| 153 | 41.1 | Create Logical Flow | 5d | 2002-03-06 A | 2002-03-13 A | 100% |  |  | start no earlier than 2002-03-06 | Chuck Chow | 40h | 40h |
| 154 | 41.2 | Tech Design Concept (to be reviewed by Vlad, Joe & Yayoi) | 3d | 2002-03-13 A | 2002-03-18 A | 100% |  |  | start no earlier than 2002-03-13 | Chuck Chow | 24h | 24h |
| 155 | 41.3 | Tech Requirements Doc | 10d | 2002-03-18 A | 2002-04-02 A | 100% |  |  | start no earlier than 2002-03-18 | Chuck Chow [90%] | 72h | 72h |
| 157 | 42 | **GDP Deliverables and Other Documentation** | 18d | 2002-03-06 A | 2002-04-02 A | 100% |  |  |  |  | 144h | 144h |
| 158 | 42.1 | Roadmap Draft 2 | 1d | 2002-03-06 A | 2002-03-07 A | 100% |  |  | start no earlier than 2002-03-06 | James Ceraldi | 8h | 8h |
| 159 | 42.2 | Tech Platform Analysis | 1d | 2002-03-07 A | 2002-03-08 A | 100% |  |  | start no earlier than 2002-03-07 | James Ceraldi | 8h | 8h |
| 160 | 42.3 | Tech Performance Analysis | 1d | 2002-03-08 A | 2002-03-11 A | 100% |  |  | start no earlier than 2002-03-08 | James Ceraldi | 8h | 8h |
| 161 | 42.4 | Library Requirements Analysis | 1d | 2002-03-11 A | 2002-03-12 A | 100% |  |  | start no earlier than 2002-03-11 | James Ceraldi | 8h | 8h |
| 162 | 42.5 | Memory Map First draft | 1d | 2002-03-12 A | 2002-03-13 A | 100% |  |  | start no earlier than 2002-03-12 | James Ceraldi | 8h | 8h |
| 163 | 42.6 | Final Roadmap | 5d | 2002-03-13 A | 2002-03-20 A | 100% |  |  | start no earlier than 2002-03-13 | James Ceraldi | 40h | 40h |
| 164 | 42.7 | Final Memory Map | 3d | 2002-03-20 A | 2002-03-25 A | 100% |  |  | start no earlier than 2002-03-20 | James Ceraldi | 24h | 24h |
| 165 | 42.8 | Final production plan | 5d | 2002-03-25 A | 2002-04-02 A | 100% |  |  | start no earlier than 2002-03-25 | James Ceraldi | 40h | 40h |
