# SRRII Pre-Production Schedule

Schedule from MS Project, 2002-04-15 to 2002-09-16, A marks actual dates.
Simpsons Road Rage Pre-Production Schedule
Radical Entertainment

## Calendars

- Standard: Mon-Fri 08:00-12:00, 13:00-17:00; Sat-Sun off. Exceptions (off unless hours are given): 2002-05-20.

## Resources

| Resource |
| --- |
| Joel DeYoung |
| Darwin Chau |
| Darren Esau |
| Cary Brisebois |
| Travis Brown-John |
| Greg Mayer |
| Darryl Long |
| Devin Murname |
| NEW CODER 1 |
| James Ceraldi |
| Allister Jones |
| NEW CODER 2 |
| Yayoi Maruno |
| Jeff Pidsadny |
| Kevin Fink |
| Trevor Lim |
| Vincent Chin |
| Aryan Hunbeck |
| Jeremy Mesana |
| ANIMATOR #2 |
| Joe McGinn |
| Shawn Lee |
| Jeff Houde |
| Marc Baril |
| Jeff Harkness |
| Chuck Chow |
| Ting Ting Chen |
| Wolfgang Hamann |
| Sheik Sahib |
| Sarah Meagher |
| Tony Chu |

## Schedule

| ID | WBS | Task | Type | Duration | Start | Finish | Predecessors | Complete | Remaining | Total slack | Free slack | Constraint | Resources | Work | Actual work |
| --- | --- | --- | --- | --- | --- | --- | --- | --- | --- | --- | --- | --- | --- | --- | --- |
| 3 | 1 | DESIGN TASKS | milestone | 0d | 2002-04-16 | 2002-04-16 |  |  |  | 129.88d |  |  |  |  |  |
| 5 | 2 | **Milestone 7 (May 15th)** |  | 20d | 2002-04-16 A | 2002-05-14 |  | 38% | 12.5d | 109.88d |  |  |  | 320h | 120h |
| 6 | 2.1 | All mission gameplay design (1st pass) |  | 4d | 2002-04-16 | 2002-04-22 |  |  |  | 109.88d | 0d |  | Joe McGinn | 32h |  |
| 7 | 2.2 | Updated camera design |  | 4d | 2002-04-22 | 2002-04-26 | 6 |  |  | 109.88d | 0d |  | Joe McGinn | 32h |  |
| 8 | 2.3 | Collate updated design doc, and write MS report |  | 4d | 2002-04-26 | 2002-05-02 | 7 |  |  | 109.88d | 0d |  | Joe McGinn | 32h |  |
| 9 | 2.4 | Final mission scripter section (INTERNAL, not for FOX) |  | 4d | 2002-05-02 | 2002-05-08 | 8 |  |  | 109.88d | 0d |  | Joe McGinn | 32h |  |
| 10 | 2.5 | Final collectibles section (INTERNAL, not for FOX) |  | 4d | 2002-05-08 | 2002-05-14 | 9 |  |  | 109.88d |  |  | Joe McGinn | 32h |  |
| 11 | 2.6 | Finalize dialog template/naming conventions (INTERNAL, not for FOX) |  | 5d | 2002-04-16 A | 2002-04-23 |  | 75% | 1.25d | 121.12d | 0d |  | Shawn Lee | 40h | 30h |
| 12 | 2.7 | Front End design, including all TRC requirements |  | 5d | 2002-04-23 A | 2002-04-30 | 11 | 75% | 1.25d | 117.38d | 0d |  | Shawn Lee | 40h | 30h |
| 13 | 2.8 | Controller design |  | 10d | 2002-04-30 A | 2002-05-14 | 12 | 75% | 2.5d | 109.88d |  |  | Shawn Lee | 80h | 60h |
| 15 | 3 | **Milestone 8 (June 15th)** |  | 20d | 2002-05-16 | 2002-06-14 |  |  |  | 87.88d |  |  |  | 320h |  |
| 16 | 3.1 | All mission gameplay design (2nd pass) |  | 4d | 2002-05-16 | 2002-05-23 |  |  |  | 87.88d | 0d | start no earlier than 2002-05-16 | Joe McGinn | 32h |  |
| 17 | 3.2 | Final Multiplayer design |  | 4d | 2002-05-23 | 2002-05-29 | 16 |  |  | 87.88d | 0d |  | Joe McGinn | 32h |  |
| 18 | 3.3 | Collate updated design doc, and write MS report |  | 4d | 2002-05-29 | 2002-06-04 | 17 |  |  | 87.88d | 0d |  | Joe McGinn | 32h |  |
| 19 | 3.4 | Initial driving engine review (INTERNAL, not for FOX) |  | 4d | 2002-06-04 | 2002-06-10 | 18 |  |  | 87.88d | 0d |  | Joe McGinn | 32h |  |
| 20 | 3.5 | 1st pass camera tuning (INTERNAL, not for FOX) |  | 4d | 2002-06-10 | 2002-06-14 | 19 |  |  | 87.88d |  |  | Joe McGinn | 32h |  |
| 21 | 3.6 | Final Characters/Vehicles section |  | 2d | 2002-05-16 | 2002-05-21 |  |  |  | 87.88d | 0d | start no earlier than 2002-05-16 | Shawn Lee | 16h |  |
| 22 | 3.7 | Final Front End design |  | 3d | 2002-05-21 | 2002-05-24 | 21 |  |  | 87.88d | 0d |  | Shawn Lee | 24h |  |
| 23 | 3.8 | Final Gameplay Controls section |  | 4d | 2002-05-24 | 2002-05-30 | 22 |  |  | 87.88d | 0d |  | Shawn Lee | 32h |  |
| 24 | 3.9 | Final Presentation section |  | 3d | 2002-05-30 | 2002-06-04 | 23 |  |  | 87.88d | 0d |  | Shawn Lee | 24h |  |
| 25 | 3.10 | Final Interface (HUD) section |  | 3d | 2002-06-04 | 2002-06-07 | 24 |  |  | 87.88d | 0d |  | Shawn Lee | 24h |  |
| 26 | 3.11 | 1st pass camera tuning (INTERNAL, not for FOX) |  | 5d | 2002-06-07 | 2002-06-14 | 25 |  |  | 87.88d |  |  | Shawn Lee | 40h |  |
| 28 | 4 | **Milestone 9 (July 15th)** |  | 20d | 2002-06-17 | 2002-07-15 |  |  |  | 66.88d |  |  |  | 320h |  |
| 29 | 4.1 | Driving engine tuning |  | 5d | 2002-06-17 | 2002-06-24 |  |  |  | 66.88d | 0d | start no earlier than 2002-06-17 | Joe McGinn | 40h |  |
| 30 | 4.2 | 1st Pass Tuning for 8 cars |  | 5d | 2002-06-24 | 2002-07-01 | 29 |  |  | 66.88d | 0d |  | Joe McGinn | 40h |  |
| 31 | 4.3 | Test world builder/trigger volume pipeline (INTERNAL, not for FOX) |  | 5d | 2002-07-01 | 2002-07-08 | 30 |  |  | 66.88d | 0d |  | Joe McGinn | 40h |  |
| 32 | 4.4 | Test mission scripter (INTERNAL, not for FOX) |  | 5d | 2002-07-08 | 2002-07-15 | 31 |  |  | 66.88d |  |  | Joe McGinn | 40h |  |
| 33 | 4.5 | 1st pass Collision Tuning |  | 8d | 2002-06-17 | 2002-06-27 |  |  |  | 66.88d | 0d | start no earlier than 2002-06-17 | Shawn Lee | 64h |  |
| 34 | 4.6 | 1st pass Damage States Tuning |  | 4d | 2002-06-27 | 2002-07-03 | 33 |  |  | 66.88d | 0d |  | Shawn Lee | 32h |  |
| 35 | 4.7 | 1st pass controller tuning |  | 8d | 2002-07-03 | 2002-07-15 | 34 |  |  | 66.88d |  |  | Shawn Lee | 64h |  |

| ID | WBS | Task | Type | Duration | Start | Finish | Complete | Remaining | Total slack | Resources | Work | Actual work |
| --- | --- | --- | --- | --- | --- | --- | --- | --- | --- | --- | --- | --- |
| 37 | 5 | **Milestone 10 (Aug 15th)** |  | 1d? | 2002-04-16 | 2002-04-17 |  |  | 128.88d |  |  |  |
| 38 | 5.1 | Designer Track Sign-Off |  | 1d? | 2002-04-16 | 2002-04-17 |  |  | 128.88d |  |  |  |
| 39 | 5.2 | Test of All Mission Types (1st Pass) |  | 1d? | 2002-04-16 | 2002-04-17 |  |  | 128.88d |  |  |  |
| 40 | 5.3 | 1st Pass Tuning for 8 Vehicles |  | 1d? | 2002-04-16 | 2002-04-17 |  |  | 128.88d |  |  |  |
| 41 | 5.4 | Start Creating Real Mission Data |  | 1d? | 2002-04-16 | 2002-04-17 |  |  | 128.88d |  |  |  |
| 42 | 5.5 | Controller Tuning (1st Pass) |  | 1d? | 2002-04-16 | 2002-04-17 |  |  | 128.88d |  |  |  |
| 43 | 5.6 | Camera Tuning (1st Pass) |  | 1d? | 2002-04-16 | 2002-04-17 |  |  | 128.88d |  |  |  |
| 45 | 6 | **Milestone 11 (Sep 15th)** |  | 1d? | 2002-04-16 | 2002-04-17 |  |  | 128.88d |  |  |  |
| 46 | 6.1 | Global AI Tuning (1st Pass) |  | 1d? | 2002-04-16 | 2002-04-17 |  |  | 128.88d |  |  |  |
| 47 | 6.2 | Multiplayer Data Placed |  | 1d? | 2002-04-16 | 2002-04-17 |  |  | 128.88d |  |  |  |
| 48 | 6.3 | Traffic System Tuning (1st Pass) |  | 1d? | 2002-04-16 | 2002-04-17 |  |  | 128.88d |  |  |  |
| 49 | 6.4 | Collectibles/Conversation Tuning (1st Pass) |  | 1d? | 2002-04-16 | 2002-04-17 |  |  | 128.88d |  |  |  |
| 50 | 6.5 | Counter Measures Tuning (1st Pass) |  | 1d? | 2002-04-16 | 2002-04-17 |  |  | 128.88d |  |  |  |
| 52 | 7 | **Milestone 12 (Oct 15th)** |  | 1d? | 2002-04-16 | 2002-04-17 |  |  | 128.88d |  |  |  |
| 53 | 7.1 | All Mission Data Placed (Oct 1st) |  | 1d? | 2002-04-16 | 2002-04-17 |  |  | 128.88d |  |  |  |
| 54 | 7.2 | All Mission Tuning Starts (Oct 1st) |  | 1d? | 2002-04-16 | 2002-04-17 |  |  | 128.88d |  |  |  |
| 55 | 7.3 | Multi-Player Data Tuned (1st Pass) |  | 1d? | 2002-04-16 | 2002-04-17 |  |  | 128.88d |  |  |  |
| 57 | 8 | **Milestone 13 (Nov 15th)** |  | 1d? | 2002-04-16 | 2002-04-17 |  |  | 128.88d |  |  |  |
| 58 | 8.1 | Sound Trigger Placement (1st Pass) |  | 1d? | 2002-04-16 | 2002-04-17 |  |  | 128.88d |  |  |  |
| 60 | 9 | **Milestone 14 (Dec 15th)** |  | 1d? | 2002-04-16 | 2002-04-17 |  |  | 128.88d |  |  |  |
| 61 | 9.1 | All Missions In & Tuned (1st Pass) |  | 1d? | 2002-04-16 | 2002-04-17 |  |  | 128.88d |  |  |  |
| 62 | 9.2 | Pedestrian Data Placement & Tuning |  | 1d? | 2002-04-16 | 2002-04-17 |  |  | 128.88d |  |  |  |
| 67 | 10 | ART TASKS | milestone | 0d | 2002-04-16 | 2002-04-16 |  |  | 129.88d |  |  |  |
| 69 | 11 | **Milestone 7 (May 15th)** |  | 21d | 2002-04-16 A | 2002-05-15 | 55% | 9.54d | 108.88d |  | 1018h | 531.2h |
| 70 | 11.1 | Preliminary FE Concept Design |  | 21d | 2002-04-16 | 2002-05-15 |  |  | 108.88d | Yayoi Maruno [25%] | 42h |  |

| ID | WBS | Task | Duration | Start | Finish | Predecessors | Complete | Remaining | Total slack | Free slack | Constraint | Resources | Work | Actual work |
| --- | --- | --- | --- | --- | --- | --- | --- | --- | --- | --- | --- | --- | --- | --- |
| 71 | 11.2 | **World Building** | 20d | 2002-04-16 A | 2002-05-14 |  | 54% | 9.2d | 109.88d |  |  |  | 640h | 254.4h |
| 72 | 11.2.1 | **Level 3-Design & Preliminary Construction** | 10d | 2002-04-16 A | 2002-04-30 |  | 73% | 2.7d | 119.88d |  |  |  | 320h | 226.4h |
| 73 | 11.2.1.1 | Landmarks (Block out) | 4d | 2002-04-16 A | 2002-04-22 A |  | 100% |  |  |  |  | Jeff Pidsadny [50%]; Kevin Fink; Trevor Lim; Vincent Chin | 112h | 112h |
| 74 | 11.2.1.2 | Landmarks (1st textures) | 3d | 2002-04-22 A | 2002-04-25 | 73 | 25% | 2.25d | 112.12d | 0d |  | Jeff Pidsadny [50%]; Kevin Fink; Trevor Lim; Vincent Chin | 84h | 21h |
| 75 | 11.2.1.3 | Props | 3d | 2002-04-25 A | 2002-04-30 | 74 | 75% | 0.75d | 109.88d | 0d |  | Jeff Pidsadny [50%]; Kevin Fink; Trevor Lim; Vincent Chin | 84h | 63h |
| 76 | 11.2.1.4 | Track (diagram/plan) | 3d | 2002-04-16 A | 2002-04-19 A |  | 100% |  |  |  |  | Jeff Pidsadny [50%] | 12h | 12h |
| 77 | 11.2.1.5 | Track (initial layout) | 4d | 2002-04-19 A | 2002-04-25 A | 76 | 100% |  |  |  |  | Jeff Pidsadny [50%] | 16h | 16h |
| 78 | 11.2.1.6 | Track (revision/1st pass) | 3d | 2002-04-25 A | 2002-04-30 | 77 | 20% | 2.4d | 119.88d |  |  | Jeff Pidsadny [50%] | 12h | 2.4h |
| 79 | 11.2.2 | **Level 4-Design & Preliminary Construction** | 10d | 2002-04-30 A | 2002-05-14 |  | 35% | 6.5d | 109.88d |  |  |  | 320h | 28h |
| 80 | 11.2.2.1 | Landmarks (Block out) | 4d | 2002-04-30 | 2002-05-06 | 75 |  |  | 109.88d | 0d |  | Jeff Pidsadny [50%]; Kevin Fink; Trevor Lim; Vincent Chin | 112h |  |
| 81 | 11.2.2.2 | Landmarks (1st textures) | 3d | 2002-05-06 | 2002-05-09 | 80 |  |  | 109.88d | 0d |  | Jeff Pidsadny [50%]; Kevin Fink; Trevor Lim; Vincent Chin | 84h |  |
| 82 | 11.2.2.3 | Props | 3d | 2002-05-09 | 2002-05-14 | 81 |  |  | 109.88d |  |  | Jeff Pidsadny [50%]; Kevin Fink; Trevor Lim; Vincent Chin | 84h |  |
| 83 | 11.2.2.4 | Track (diagram/plan) | 3d | 2002-04-30 A | 2002-05-03 A | 78 | 100% |  |  |  |  | Jeff Pidsadny [50%] | 12h | 12h |
| 84 | 11.2.2.5 | Track (initial layout) | 4d | 2002-05-03 A | 2002-05-09 A | 83 | 100% |  |  |  |  | Jeff Pidsadny [50%] | 16h | 16h |
| 85 | 11.2.2.6 | Track (revision/1st pass) | 3d | 2002-05-09 | 2002-05-14 | 84 |  |  | 109.88d |  |  | Jeff Pidsadny [50%] | 12h |  |
| 86 | 11.3 | **Characters** | 21d | 2002-04-16 A | 2002-05-15 |  | 89% | 2.4d | 108.88d |  |  |  | 168h | 148.8h |
| 87 | 11.3.1 | 8 Redo Characters w/ LOD's | 15d | 2002-04-16 A | 2002-05-07 A |  | 100% |  |  |  |  | Aryan Hunbeck | 120h | 120h |
| 88 | 11.3.2 | Redo Skeletons on 8 main and 8 redo characters. | 6d | 2002-05-07 A | 2002-05-15 | 87 | 60% | 2.4d | 108.88d |  |  | Aryan Hunbeck | 48h | 28.8h |
| 89 | 11.4 | **Animations** | 21d | 2002-04-16 A | 2002-05-15 |  | 76% | 5d | 108.88d |  |  |  | 168h | 128h |
| 90 | 11.4.1 | E3 Promo Demo | 11d | 2002-04-16 A | 2002-05-01 A |  | 100% |  |  |  |  | Jeremy Mesana | 88h | 88h |
| 91 | 11.4.2 | All Animations for 1 Walker | 10d | 2002-05-01 A | 2002-05-15 | 90 | 50% | 5d | 108.88d |  |  | Jeremy Mesana | 80h | 40h |
| 94 | 12 | **Milestone 8 (June 15th)** | 43d? | 2002-04-16 | 2002-06-17 |  |  |  | 65d |  |  |  | 752h |  |
| 95 | 12.1 | FE Concept Design (1st pass) | 20d | 2002-05-16 | 2002-06-14 |  |  |  | 66d |  | start no earlier than 2002-05-16 | Yayoi Maruno [25%] | 40h |  |
| 96 | 12.2 | Final art design | 20d | 2002-05-16 | 2002-06-14 |  |  |  | 66d |  | start no earlier than 2002-05-16 | Yayoi Maruno [25%] | 40h |  |

| ID | WBS | Task | Duration | Start | Finish | Total slack | Constraint | Resources | Work |
| --- | --- | --- | --- | --- | --- | --- | --- | --- | --- |
| 97 | 12.3 | **World Building** | 1d? | 2002-04-16 | 2002-04-17 | 107d |  |  |  |
| 98 | 12.3.1 | Level 4 - 1st Pass | 1d? | 2002-04-16 | 2002-04-17 | 107d |  |  |  |
| 100 | 12.3.2 | Level 3 - 1st Pass | 1d? | 2002-04-16 | 2002-04-17 | 107d |  |  |  |
| 101 | 12.4 | **Characters** | 21d | 2002-05-16 | 2002-06-17 | 65d |  |  | 168h |
| 102 | 12.4.1 | 4 New Characters w/ LOD's | 21d | 2002-05-16 | 2002-06-17 | 65d | start no earlier than 2002-05-16 | Aryan Hunbeck | 168h |
| 103 | 12.5 | **Vehicles** | 21d | 2002-05-16 | 2002-06-17 | 65d |  |  | 168h |
| 104 | 12.5.1 | 4 Main Vehicles | 21d | 2002-05-16 | 2002-06-17 | 65d | start no earlier than 2002-05-16 | Kevin Fink | 168h |
| 105 | 12.6 | **Animations** | 21d | 2002-05-16 | 2002-06-17 | 65d |  |  | 336h |
| 106 | 12.6.1 | All Animations for 3 or 4 Walkers | 21d | 2002-05-16 | 2002-06-17 | 65d | start no earlier than 2002-05-16 | Jeremy Mesana; Trevor Lim | 336h |
| 107 | 12.7 | FMV Storyboards Complete | 21d | 2002-05-16 | 2002-06-17 | 65d | start no earlier than 2002-05-16 |  |  |
| 109 | 13 | **Milestone 9 (July 15th)** | 1d? | 2002-04-16 | 2002-04-17 | 128.88d |  |  |  |
| 110 | 13.1 | Level 3 & 4 - 1st Pass | 1d? | 2002-04-16 | 2002-04-17 | 128.88d |  |  |  |
| 111 | 13.2 | 8 FMV Characters | 1d? | 2002-04-16 | 2002-04-17 | 128.88d |  |  |  |
| 112 | 13.3 | 8 Main Vehicles | 1d? | 2002-04-16 | 2002-04-17 | 128.88d |  |  |  |
| 113 | 13.4 | All Animations for 2 Walkers | 1d? | 2002-04-16 | 2002-04-17 | 128.88d |  |  |  |
| 114 | 13.5 | All Driver Animations for 5 body types | 1d? | 2002-04-16 | 2002-04-17 | 128.88d |  |  |  |
| 115 | 13.6 | All passenger animations for 3 body types | 1d? | 2002-04-16 | 2002-04-17 | 128.88d |  |  |  |
| 116 | 13.7 | HUD Design Concepts | 1d? | 2002-04-16 | 2002-04-17 | 128.88d |  |  |  |
| 119 | 14 | **Milestone 10 (Aug 15th)** | 1d? | 2002-04-16 | 2002-04-17 | 128.88d |  |  |  |
| 120 | 14.1 | Levels 1 & 2 - 2nd Pass (send to FOX for Art Review) | 1d? | 2002-04-16 | 2002-04-17 | 128.88d |  |  |  |
| 121 | 14.2 | 6 New Characters w/ LOD's | 1d? | 2002-04-16 | 2002-04-17 | 128.88d |  |  |  |
| 122 | 14.3 | 4 FMV Characters | 1d? | 2002-04-16 | 2002-04-17 | 128.88d |  |  |  |
| 123 | 14.4 | All Boss Animations | 1d? | 2002-04-16 | 2002-04-17 | 128.88d |  |  |  |
| 124 | 14.5 | All Passenger Animations for 2 body types | 1d? | 2002-04-16 | 2002-04-17 | 128.88d |  |  |  |
| 125 | 14.6 | All pedestrian aninmations for 5 body types | 1d? | 2002-04-16 | 2002-04-17 | 128.88d |  |  |  |
| 126 | 14.7 | FMV/NIS Modeling (1 week per 4 modelers) | 1d? | 2002-04-16 | 2002-04-17 | 128.88d |  |  |  |
| 127 | 14.8 | Start FMV's/NIS's | 1d? | 2002-04-16 | 2002-04-17 | 128.88d |  |  |  |
| 128 | 14.9 | <New Animator #2> | 1d? | 2002-04-16 | 2002-04-17 | 128.88d |  |  |  |

| ID | WBS | Task | Type | Duration | Start | Finish | Total slack |
| --- | --- | --- | --- | --- | --- | --- | --- |
| 131 | 15 | **Milestone 11 (Sep 15th)** |  | 1d? | 2002-04-16 | 2002-04-17 | 128.88d |
| 132 | 15.1 | Levels 3 & 4 - 2nd Pass |  | 1d? | 2002-04-16 | 2002-04-17 | 128.88d |
| 133 | 15.2 | 6 New Characters w/ LOD's |  | 1d? | 2002-04-16 | 2002-04-17 | 128.88d |
| 134 | 15.3 | 4 Redo Characters |  | 1d? | 2002-04-16 | 2002-04-17 | 128.88d |
| 135 | 15.4 | FMV/NIS Modeling (1 week per 4 modelers) |  | 1d? | 2002-04-16 | 2002-04-17 | 128.88d |
| 136 | 15.5 | HUD Implementation Complete |  | 1d? | 2002-04-16 | 2002-04-17 | 128.88d |
| 137 | 15.6 | SFX Completed |  | 1d? | 2002-04-16 | 2002-04-17 | 128.88d |
| 140 | 16 | **Milestone 12 (Oct 15th)** |  | 1d? | 2002-04-16 | 2002-04-17 | 128.88d |
| 141 | 16.1 | Levels 1/5 & 2/6 - 3rd Pass |  | 1d? | 2002-04-16 | 2002-04-17 | 128.88d |
| 142 | 16.2 | FMV/NIS Modeling (1 week per 4 modelers) |  | 1d? | 2002-04-16 | 2002-04-17 | 128.88d |
| 143 | 16.3 | 8 Redo Characters |  | 1d? | 2002-04-16 | 2002-04-17 | 128.88d |
| 144 | 16.4 | 5 Chase Vehicles |  | 1d? | 2002-04-16 | 2002-04-17 | 128.88d |
| 145 | 16.5 | Mission start/finish animations & camera paths |  | 1d? | 2002-04-16 | 2002-04-17 | 128.88d |
| 146 | 16.6 | Conversation camera paths |  | 1d? | 2002-04-16 | 2002-04-17 | 128.88d |
| 149 | 17 | **Milestone 13 (Nov 15th)** |  | 1d? | 2002-04-16 | 2002-04-17 | 128.88d |
| 150 | 17.1 | Levels 3/7, 4/8 & 9 - 3rd Pass |  | 1d? | 2002-04-16 | 2002-04-17 | 128.88d |
| 151 | 17.2 | 8 Redo Characters w/ LOD's |  | 1d? | 2002-04-16 | 2002-04-17 | 128.88d |
| 152 | 17.3 | 10 AI Vehicles |  | 1d? | 2002-04-16 | 2002-04-17 | 128.88d |
| 153 | 17.4 | (4) 20 second FMV's |  | 1d? | 2002-04-16 | 2002-04-17 | 128.88d |
| 156 | 18 | **Milestone 14 (Dec 15th)** |  | 1d? | 2002-04-16 | 2002-04-17 | 128.88d |
| 157 | 18.1 | Levels 1-9 - Final Pass |  | 1d? | 2002-04-16 | 2002-04-17 | 128.88d |
| 158 | 18.2 | 16 Redo Characters w/ LOD's |  | 1d? | 2002-04-16 | 2002-04-17 | 128.88d |
| 159 | 18.3 | (4) 20 second FMV's |  | 1d? | 2002-04-16 | 2002-04-17 | 128.88d |
| 162 | 19 | **Milestone 15 (Jan 15th)** |  | 1d? | 2002-04-16 | 2002-04-17 | 128.88d |
| 163 | 19.1 | (4) 20 second FMV's |  | 1d? | 2002-04-16 | 2002-04-17 | 128.88d |
| 168 | 20 | CODING TASKS | milestone | 0d | 2002-04-16 | 2002-04-16 | 129.88d |

| ID | WBS | Task | Type | Duration | Start | Finish | Predecessors | Complete | Remaining | Total slack | Constraint | Resources | Work | Actual work |
| --- | --- | --- | --- | --- | --- | --- | --- | --- | --- | --- | --- | --- | --- | --- |
| 170 | 21 | **Milestone 7 (May 15th)** |  | 66d | 2002-04-16 A | 2002-07-18 |  | 56% | 28.75d | 63.88d |  |  | 3503.5h | 2201.74h |
| 171 | 21.1 | Dynamic Loading Design |  | 22d | 2002-04-16 | 2002-05-16 |  |  |  | 107.88d | start no earlier than 2002-04-16 | Joel DeYoung [50%] | 88h |  |
| 172 | 21.2 | **First Driveable** |  | 22d | 2002-04-16 A | 2002-05-16 A |  | 100% |  |  |  | Greg Mayer | 352h | 352h |
| 173 | 21.2.1 | Driving Engine (1st Pass) |  | 22d | 2002-04-16 A | 2002-05-16 A |  | 100% |  |  | start no earlier than 2002-04-16 | Greg Mayer | 176h | 176h |
| 174 | 21.3 | **Loading Manager (1st Pass)** |  | 4d | 2002-04-16 A | 2002-04-22 A |  | 100% |  |  |  | Darwin Chau [50%] | 48h | 48h |
| 175 | 21.3.1 | Implementation |  | 3d | 2002-04-16 A | 2002-04-19 A |  | 100% |  |  |  | Darwin Chau | 24h | 24h |
| 176 | 21.3.2 | Testing |  | 1d | 2002-04-19 A | 2002-04-22 A | 175 | 100% |  |  |  | Darwin Chau | 8h | 8h |
| 177 | 21.4 | Memory Monitor Integrated |  | 12d | 2002-04-22 A | 2002-05-08 A | 176 | 100% |  |  |  | Darwin Chau | 96h | 96h |
| 178 | 21.5 | Proview + Evaluation |  | 1d | 2002-04-16 A | 2002-04-17 A |  | 100% |  |  |  | Darren Esau | 8h | 8h |
| 179 | 21.6 | Getting PS2 CodeWarrior build going |  | 2d | 2002-04-17 A | 2002-04-19 A | 178 | 100% |  |  |  | Darren Esau | 16h | 16h |
| 180 | 21.7 | Write command-line script parser for World Builder |  | 4d | 2002-04-19 A | 2002-04-25 A | 179 | 100% |  |  |  | Darren Esau | 32h | 32h |
| 181 | 21.8 | Design a naming convention/directory structure for the sound files |  | 2d | 2002-04-25 A | 2002-04-29 A | 180 | 100% |  |  |  | Darren Esau | 15h | 15h |
| 182 | 21.9 | Take the makefile process from the prototype and incorporate it into SRR2, with .wav->.rsd conversion and type info generation |  | 3d | 2002-04-29 A | 2002-05-02 A | 181 | 100% |  |  |  | Darren Esau |  |  |
| 183 | 21.10 | Add first cut at cement file generation to pipeline |  | 2d | 2002-05-02 A | 2002-05-06 A | 182 | 100% |  |  |  | Darren Esau |  |  |
| 184 | 21.11 | **Controller System (1st Pass)** |  | 2.5d | 2002-04-16 A | 2002-04-18 A |  | 100% |  |  |  | Travis Brown-John [50%] | 30h | 30h |
| 185 | 21.11.1 | Integrate controller system into new Game Architecture. |  | 0.5d | 2002-04-16 A | 2002-04-16 A |  | 100% |  |  |  | Travis Brown-John | 4h | 4h |
| 186 | 21.11.2 | Clean up controller enumeration code. |  | 1d | 2002-04-16 A | 2002-04-17 A | 185 | 100% |  |  |  | Travis Brown-John | 8h | 8h |
| 187 | 21.11.3 | Make use of memory pools ( if available) for controller objects. |  | 1d | 2002-04-17 A | 2002-04-18 A | 186 | 100% |  |  |  | Travis Brown-John | 8h | 8h |
| 188 | 21.12 | **Integrate Choreo System** |  | 3.5d | 2002-04-18 A | 2002-04-24 A | 187 | 100% |  |  |  | Travis Brown-John [50%] | 16.5h | 16.5h |
| 189 | 21.12.1 | Add choreo.dsp to Xbox |  | 0.5d | 2002-04-18 A | 2002-04-19 A |  | 100% |  |  |  | Travis Brown-John | 4h | 4h |
| 190 | 21.12.2 | Add choreo library to PS2 build |  | 2d | 2002-04-19 A | 2002-04-23 A | 189 | 100% |  |  |  | Travis Brown-John | 7h | 7h |
| 191 | 21.12.3 | Add choreo library to GameCube build |  | 1d | 2002-04-23 A | 2002-04-24 A | 190 | 100% |  |  |  | Travis Brown-John |  |  |
| 192 | 21.13 | **Pipelines Implemented (1st Pass)** |  | 8d | 2002-04-16 A | 2002-04-26 A |  | 100% |  |  |  | Cary Brisebois | 128h | 128h |
| 193 | 21.13.1 | Art Database Design | milestone | 0d | 2002-04-16 A | 2002-04-16 A |  | 100% |  |  |  | Cary Brisebois |  |  |
| 194 | 21.13.2 | Implement quick-build |  | 2d | 2002-04-16 A | 2002-04-18 A |  | 100% |  |  |  | Cary Brisebois | 16h | 16h |
| 195 | 21.13.3 | Implement art library support (instancing) |  | 2d | 2002-04-18 A | 2002-04-22 A | 194 | 100% |  |  |  | Cary Brisebois | 16h | 16h |
| 196 | 21.13.4 | Implement (fix) art rules system |  | 2d | 2002-04-22 A | 2002-04-24 A | 195 | 100% |  |  |  | Cary Brisebois | 16h | 16h |
| 197 | 21.13.5 | Implement art database interface |  | 2d | 2002-04-24 A | 2002-04-26 A | 196 | 100% |  |  |  | Cary Brisebois | 16h | 16h |

Notes:
- 184: working game specific controller interface using FTT controller. Full Controller functionality can be added by clients (Camera Control, Vehicle Control, etc).
- 188: choreo library integrated and building on all platforms (Xbox, Ps2, GameCube)
- 194: This is the system where the artists can iterate art through the pipline with only the minimum of processing. Also, there will need to be a facility for creating secondary/tertiary scenegraphs so the main ones don't need to be rebuilt. / Depend: Devin supporting multiple Scenegraphs
- 195: The artists will create a set of objects that reside in a central "library". The pipeline will take these library objects and replace selected objects with the library version. This will allow fast iteration of props and such. / Depend: Unclear how we will do instancing.
- 196: Bryan Ewert is fixing the Art rules system. This task will apply the rules to given art files to test for art errors. Also includes the export-time rules checking. / Depend: Bryan Ewert fixing p3drule
- 197: The art database will likely run the pipeline, however, it may be necessary to allow the pipeline to query statistics about art through the rules system. / Depend: Chuck and I completing the Design and some stubs

| ID | WBS | Task | Type | Duration | Start | Finish | Predecessors | Complete | Remaining | Total slack | Constraint | Resources | Work | Actual work |
| --- | --- | --- | --- | --- | --- | --- | --- | --- | --- | --- | --- | --- | --- | --- |
| 198 | 21.14 | **Camera System (1st Pass)** |  | 15d | 2002-04-26 A | 2002-05-17 | 197 | 73% | 4d | 106.88d |  | Cary Brisebois | 240h | 176h |
| 199 | 21.14.1 | Camera Design | milestone | 0d | 2002-04-26 A | 2002-04-26 A |  | 100% |  |  |  | Cary Brisebois |  |  |
| 200 | 21.14.2 | Implement Supercam Central |  | 2d | 2002-04-26 A | 2002-04-30 A |  | 100% |  |  |  | Cary Brisebois | 16h | 16h |
| 201 | 21.14.3 | Implement Main Camera mode (In car) |  | 3d | 2002-04-30 A | 2002-05-03 A | 200 | 100% |  |  |  | Cary Brisebois | 24h | 24h |
| 202 | 21.14.4 | Implement Main Camera mode (on foot) |  | 3d | 2002-05-03 A | 2002-05-08 A | 201 | 100% |  |  |  | Cary Brisebois | 24h | 24h |
| 203 | 21.14.5 | Implement Head-Head Camera mode |  | 3d | 2002-05-08 | 2002-05-13 | 202 |  |  | 110.88d |  | Cary Brisebois | 24h |  |
| 204 | 21.14.6 | Implement Bumper-cam |  | 1d | 2002-05-13 A | 2002-05-14 A | 203 | 100% |  |  |  | Cary Brisebois | 8h | 8h |
| 205 | 21.14.7 | Implement Cut-camera system |  | 2d | 2002-05-14 A | 2002-05-16 A | 204 | 100% |  |  |  | Cary Brisebois | 16h | 16h |
| 206 | 21.14.8 | Implement "Race-Cam" |  | 1d | 2002-05-16 | 2002-05-17 | 205 |  |  | 106.88d |  | Cary Brisebois | 8h |  |
| 207 | 21.15 | **Rendering Engine (1st Pass)** |  | 26d | 2002-04-18 A | 2002-05-27 |  | 96% | 1.02d | 101.88d |  | Devin Murname | 608h | 583.84h |
| 208 | 21.15.1 | **RenderManager** |  | 6.75d | 2002-04-18 A | 2002-04-26 A |  | 100% |  |  |  | Devin Murname | 92h | 92h |
| 209 | 21.15.1.1 | Render Docs |  | 1d | 2002-04-18 A | 2002-04-19 A |  | 100% |  |  | start no earlier than 2002-04-18 |  |  |  |
| 210 | 21.15.1.2 | Render Flow |  | 0.5d | 2002-04-19 A | 2002-04-19 A | 209 | 100% |  |  |  |  |  |  |
| 211 | 21.15.1.3 | Pure3D Views |  | 0.25d | 2002-04-22 A | 2002-04-22 A | 210 | 100% |  |  | start no earlier than 2002-04-22 | Devin Murname | 2h | 2h |
| 212 | 21.15.1.4 | Pure3D Context |  | 0.25d | 2002-04-22 A | 2002-04-22 A | 211 | 100% |  |  |  | Devin Murname | 2h | 2h |
| 213 | 21.15.1.5 | Pure3D Platform |  | 0.25d | 2002-04-22 A | 2002-04-22 A | 212 | 100% |  |  |  | Devin Murname | 2h | 2h |
| 214 | 21.15.1.6 | Renderables |  | 1d | 2002-04-22 A | 2002-04-23 A | 213 | 100% |  |  |  | Devin Murname | 8h | 8h |
| 215 | 21.15.1.7 | Layer System |  | 0.25d | 2002-04-23 A | 2002-04-24 A | 214 | 100% |  |  |  | Devin Murname | 2h | 2h |
| 216 | 21.15.1.8 | Add/Remove View |  | 0.25d | 2002-04-24 A | 2002-04-24 A | 215 | 100% |  |  |  | Devin Murname | 2h | 2h |
| 217 | 21.15.1.9 | Camera System |  | 0.5d | 2002-04-24 A | 2002-04-24 A | 216 | 100% |  |  |  | Devin Murname | 4h | 4h |
| 218 | 21.15.1.10 | Debugging |  | 2d | 2002-04-24 A | 2002-04-26 A | 217 | 100% |  |  |  | Devin Murname | 16h | 16h |
| 219 | 21.15.2 | **SceneGraph** |  | 7.5d | 2002-04-26 A | 2002-05-08 A | 218 | 100% |  |  |  | Devin Murname | 120h | 120h |
| 220 | 21.15.2.1 | SceneGraph (static geo) |  | 1d | 2002-04-26 A | 2002-04-29 A |  | 100% |  |  | start no earlier than 2002-04-26 | Devin Murname | 8h | 8h |
| 221 | 21.15.2.2 | SceneGraph (dyn geo) |  | 1.5d | 2002-04-29 A | 2002-05-01 A | 220 | 100% |  |  |  | Devin Murname | 12h | 12h |
| 222 | 21.15.2.3 | Add/Remove Objects |  | 1d | 2002-05-01 A | 2002-05-02 A | 221 | 100% |  |  |  | Devin Murname | 8h | 8h |
| 223 | 21.15.2.4 | Static World Loader |  | 1.5d | 2002-05-02 A | 2002-05-03 A | 222 | 100% |  |  |  | Devin Murname | 12h | 12h |
| 224 | 21.15.2.5 | Debugging |  | 2.5d | 2002-05-03 A | 2002-05-08 A | 223 | 100% |  |  |  | Devin Murname | 20h | 20h |

Notes:
- 200: Almost complete. I have already written most of the Supercam central code. All that remains is writing the camera loading code and how the Supercam central is updated. / Depend: Greg, world physics manager
- 201: The camera system from SRR is sufficient. There needs to be changes for the new physics system, and some improvements to the designer interface for tweaking.
- 202: This is a whole new camera system. IT will likely use most of the code from SRR 1, but it will need some customization.
- 203: This camera system is also completely new. The main changes it needs is the ability to look at multiple targets.
- 204: Same as last year.
- 205: Same system as last year, but needs better logic for shutting down the camera-cut and possibly looking at multiple targets.
- 206: This is the camera system that I implemented a couple of days afer final for SRR. I would like to put it into this game also.

| ID | WBS | Task | Duration | Start | Finish | Predecessors | Complete | Remaining | Total slack | Free slack | Resources | Work | Actual work |
| --- | --- | --- | --- | --- | --- | --- | --- | --- | --- | --- | --- | --- | --- |
| 225 | 21.15.3 | **World Geometry** | 4.25d | 2002-05-08 A | 2002-05-14 | 224 | 76% | 1d | 109.38d |  | Devin Murname | 68h | 52h |
| 226 | 21.15.3.1 | File Handlers | 0.5d | 2002-05-08 A | 2002-05-08 A |  | 100% |  |  |  | Devin Murname | 4h | 4h |
| 227 | 21.15.3.2 | Simpsons Geo Loader | 0.5d | 2002-05-08 A | 2002-05-09 A | 226 | 100% |  |  |  | Devin Murname | 4h | 4h |
| 228 | 21.15.3.3 | Intf w/ LoadManager | 0.25d | 2002-05-09 A | 2002-05-09 A | 227 | 100% |  |  |  | Devin Murname | 2h | 2h |
| 229 | 21.15.3.4 | Pipeline Tools | 1d | 2002-05-09 | 2002-05-10 | 228 |  |  | 111.38d |  | Devin Murname | 8h |  |
| 230 | 21.15.3.5 | Debugging | 2d | 2002-05-10 A | 2002-05-14 A | 229 | 100% |  |  |  | Devin Murname | 16h | 16h |
| 231 | 21.15.4 | **Vehicles** | 7.5d | 2002-05-14 A | 2002-05-27 A | 230 | 100% |  |  |  | Devin Murname | 120h | 120h |
| 232 | 21.15.4.1 | Connect to Physics | 3d | 2002-05-14 A | 2002-05-17 A |  | 100% |  |  |  | Devin Murname | 24h | 24h |
| 233 | 21.15.4.2 | Loading | 1.25d | 2002-05-17 A | 2002-05-21 A | 232 | 100% |  |  |  | Devin Murname | 10h | 10h |
| 234 | 21.15.4.3 | Render | 1d | 2002-05-21 A | 2002-05-22 A | 233 | 100% |  |  |  | Devin Murname | 8h | 8h |
| 235 | 21.15.4.4 | Debugging | 2.25d | 2002-05-22 A | 2002-05-27 A | 234 | 100% |  |  |  | Devin Murname | 18h | 18h |
| 236 | 21.16 | **Presentation Manager (1st Pass)** | 40.5d | 2002-04-16 A | 2002-06-12 |  | 46% | 22.05d | 89.38d |  | Darryl Long [50%] | 486h | 221.4h |
| 237 | 21.16.1 | **Movie Player** | 12d | 2002-04-16 A | 2002-05-02 |  | 77% | 2.8d | 112.88d |  | Darryl Long [50%] | 96h | 73.6h |
| 238 | 21.16.1.1 | MoviePlayer class | 1d | 2002-04-16 A | 2002-04-17 A |  | 100% |  |  |  | Darryl Long [50%] | 4h | 4h |
| 239 | 21.16.1.2 | MoviePlayer code | 2d | 2002-04-17 A | 2002-04-19 A | 238 | 100% |  |  |  | Darryl Long [50%] | 8h | 8h |
| 240 | 21.16.1.3 | PlatformPlayer code | 2d | 2002-04-19 A | 2002-04-23 A | 239 | 100% |  |  |  | Darryl Long [50%] | 8h | 8h |
| 241 | 21.16.1.4 | Debugging | 7d | 2002-04-23 A | 2002-05-02 | 240 | 60% | 2.8d | 112.88d | 0d | Darryl Long [50%] | 28h | 16.8h |
| 242 | 21.16.2 | **NIS Player** | 14d | 2002-05-02 A | 2002-05-23 | 241 | 64% | 5d | 103.88d |  | Darryl Long [50%] | 112h | 72h |
| 243 | 21.16.2.1 | NISPlayer class | 1d | 2002-05-02 A | 2002-05-03 A |  | 100% |  |  |  | Darryl Long [50%] | 4h | 4h |
| 244 | 21.16.2.2 | NIS queuing | 2d | 2002-05-03 A | 2002-05-07 A | 243 | 100% |  |  |  | Darryl Long [50%] | 8h | 8h |
| 245 | 21.16.2.3 | NIS loading | 2d | 2002-05-07 A | 2002-05-09 A | 244 | 100% |  |  |  | Darryl Long [50%] | 8h | 8h |
| 246 | 21.16.2.4 | Animation Controller | 2d | 2002-05-09 A | 2002-05-13 A | 245 | 100% |  |  |  | Darryl Long [50%] | 8h | 8h |
| 247 | 21.16.2.5 | Sound Streams | 1d | 2002-05-13 | 2002-05-14 | 246 |  |  | 109.88d |  | Darryl Long [50%] | 4h |  |
| 248 | 21.16.2.6 | Camera Animations | 2d | 2002-05-14 A | 2002-05-16 A | 247 | 100% |  |  |  | Darryl Long [50%] | 8h | 8h |
| 249 | 21.16.2.7 | Debugging | 4d | 2002-05-16 | 2002-05-23 | 248 |  |  | 89.62d | 0d | Darryl Long [50%] | 16h |  |

| ID | WBS | Task | Duration | Start | Finish | Predecessors | Complete | Remaining | Total slack | Free slack | Resources | Work | Actual work |
| --- | --- | --- | --- | --- | --- | --- | --- | --- | --- | --- | --- | --- | --- |
| 250 | 21.16.3 | **Gameplay Manager** | 4d | 2002-05-23 A | 2002-05-29 | 249 | 6% | 3.75d | 89.38d |  | Darryl Long [50%] | 32h | 2h |
| 251 | 21.16.3.1 | GPManager class | 1d | 2002-05-23 A | 2002-05-24 |  | 25% | 0.75d | 89.38d | 0d | Darryl Long [50%] | 4h | 1h |
| 252 | 21.16.3.2 | Basic code | 3d | 2002-05-24 | 2002-05-29 | 251 |  |  | 89.38d | 0d | Darryl Long [50%] | 12h |  |
| 253 | 21.16.4 | **Presentation** | 10.5d | 2002-05-29 | 2002-06-12 | 252 |  |  | 89.38d |  | Darryl Long [50%] | 84h |  |
| 254 | 21.16.4.1 | Get list of events | 0.5d | 2002-05-29 | 2002-05-29 |  |  |  | 89.38d | 0d | Darryl Long [50%] | 2h |  |
| 255 | 21.16.4.2 | Play music | 0.5d | 2002-05-29 | 2002-05-30 | 254 |  |  | 89.38d | 0d | Darryl Long [50%] | 2h |  |
| 256 | 21.16.4.3 | Play sounds | 0.5d | 2002-05-30 | 2002-05-30 | 255 |  |  | 89.38d | 0d | Darryl Long [50%] | 2h |  |
| 257 | 21.16.4.4 | Show overlays | 0.5d | 2002-05-30 | 2002-05-31 | 256 |  |  | 89.38d | 0d | Darryl Long [50%] | 2h |  |
| 258 | 21.16.4.5 | Hide overlays | 0.5d | 2002-05-31 | 2002-05-31 | 257 |  |  | 89.38d | 0d | Darryl Long [50%] | 2h |  |
| 259 | 21.16.4.6 | Start of Mission Sequence | 2d | 2002-05-31 | 2002-06-04 | 258 |  |  | 89.38d | 0d | Darryl Long [50%] | 8h |  |
| 260 | 21.16.4.7 | End of Mission Sequence | 3d | 2002-06-04 | 2002-06-07 | 259 |  |  | 89.38d | 0d | Darryl Long [50%] | 12h |  |
| 261 | 21.16.4.8 | Debugging | 3d | 2002-06-07 | 2002-06-12 | 260 |  |  | 89.38d |  | Darryl Long [50%] | 12h |  |
| 262 | 21.17 | **Head to Head (1st Pass)** | 32d | 2002-04-16 A | 2002-05-31 |  | 20% | 25.75d | 97.88d |  | Darryl Long [50%] | 360h | 63h |
| 263 | 21.17.1 | **H2H Manager** | 9d | 2002-04-16 A | 2002-04-29 |  | 36% | 5.75d | 120.88d |  | Darryl Long [50%] | 72h | 26h |
| 264 | 21.17.1.1 | H2HManager class | 0.5d | 2002-04-16 A | 2002-04-16 |  | 50% | 0.25d | 125.88d | 0d | Darryl Long [50%] | 2h | 1h |
| 265 | 21.17.1.2 | H2HPlayer class | 0.5d | 2002-04-16 | 2002-04-17 | 264 |  |  | 125.88d | 0d | Darryl Long [50%] | 2h |  |
| 266 | 21.17.1.3 | Two rendering views | 3d | 2002-04-17 | 2002-04-22 | 265 |  |  | 125.88d |  | Darryl Long [50%] | 12h |  |
| 267 | 21.17.1.4 | Two controllers | 2d | 2002-04-22 A | 2002-04-24 A | 266 | 100% |  |  |  | Darryl Long [50%] | 8h | 8h |
| 268 | 21.17.1.5 | H2HMission class | 2d | 2002-04-24 A | 2002-04-26 | 267 | 50% | 1d | 100.88d | 0d | Darryl Long [50%] | 8h | 4h |
| 269 | 21.17.1.6 | SpawnFlag method start | 1d | 2002-04-26 | 2002-04-29 | 268 |  |  | 100.88d | 0d | Darryl Long [50%] | 4h |  |
| 270 | 21.17.2 | **H2H Gameplay** | 17d | 2002-04-29 | 2002-05-23 | 269 |  |  | 100.88d |  | Darryl Long [50%] | 136h |  |
| 271 | 21.17.2.1 | Get event requirements | 2d | 2002-04-29 | 2002-05-01 |  |  |  | 100.88d | 0d | Darryl Long [50%] | 8h |  |
| 272 | 21.17.2.2 | Vehicle Collision | 0.5d | 2002-05-01 | 2002-05-01 | 271 |  |  | 100.88d | 0d | Darryl Long [50%] | 2h |  |
| 273 | 21.17.2.3 | Flag Switching | 0.5d | 2002-05-01 | 2002-05-02 | 272 |  |  | 100.88d | 0d | Darryl Long [50%] | 2h |  |
| 274 | 21.17.2.4 | Base Trigger | 0.5d | 2002-05-02 | 2002-05-02 | 273 |  |  | 100.88d | 0d | Darryl Long [50%] | 2h |  |
| 275 | 21.17.2.5 | Out of bounds | 0.5d | 2002-05-02 | 2002-05-03 | 274 |  |  | 100.88d | 0d | Darryl Long [50%] | 2h |  |
| 276 | 21.17.2.6 | Create sounds | 2d | 2002-05-03 | 2002-05-07 | 275 |  |  | 100.88d | 0d | Darryl Long [50%] | 8h |  |
| 277 | 21.17.2.7 | Start and end pres. | 2d | 2002-05-07 | 2002-05-09 | 276 |  |  | 100.88d | 0d | Darryl Long [50%] | 8h |  |
| 278 | 21.17.2.8 | Flag Render | 2d | 2002-05-09 | 2002-05-13 | 277 |  |  | 100.88d | 0d | Darryl Long [50%] | 8h |  |
| 279 | 21.17.2.9 | Finish H2HMission class | 2d | 2002-05-13 | 2002-05-15 | 278 |  |  | 100.88d | 0d | Darryl Long [50%] | 8h |  |
| 280 | 21.17.2.10 | Finish SpawnFlag method | 1d | 2002-05-15 | 2002-05-16 | 279 |  |  | 100.88d | 0d | Darryl Long [50%] | 4h |  |
| 281 | 21.17.2.11 | Watch for vehicle proximity | 0.5d | 2002-05-16 | 2002-05-16 | 280 |  |  | 100.88d | 0d | Darryl Long [50%] | 2h |  |
| 282 | 21.17.2.12 | Provide NavMap intf | 0.5d | 2002-05-16 | 2002-05-17 | 281 |  |  | 100.88d | 0d | Darryl Long [50%] | 2h |  |
| 283 | 21.17.2.13 | Debugging | 3d | 2002-05-17 | 2002-05-23 | 282 |  |  | 100.88d | 0d | Darryl Long [50%] | 12h |  |

| ID | WBS | Task | Duration | Start | Finish | Predecessors | Complete | Remaining | Total slack | Free slack | Constraint | Resources | Work | Actual work |
| --- | --- | --- | --- | --- | --- | --- | --- | --- | --- | --- | --- | --- | --- | --- |
| 284 | 21.17.3 | **Transitions** | 6d | 2002-05-23 A | 2002-05-31 | 283 | 50% | 3d | 97.88d |  |  |  | 24h | 12h |
| 285 | 21.17.3.1 | View/Layer Mgmt | 2d | 2002-05-23 A | 2002-05-27 A |  | 100% |  |  |  |  | Darryl Long [50%] | 8h | 8h |
| 286 | 21.17.3.2 | Transition ViewWatcher | 0.5d | 2002-05-27 A | 2002-05-27 A | 285 | 100% |  |  |  |  | Darryl Long [50%] | 2h | 2h |
| 287 | 21.17.3.3 | Full screen alpha | 0.5d | 2002-05-27 | 2002-05-28 | 286 |  |  | 100.88d |  |  | Darryl Long [50%] | 2h |  |
| 288 | 21.17.3.4 | Left-to-right wipe | 0.5d | 2002-05-28 A | 2002-05-28 A | 287 | 100% |  |  |  |  | Darryl Long [50%] | 2h | 2h |
| 289 | 21.17.3.5 | Cross fade | 0.5d | 2002-05-28 | 2002-05-29 | 288 |  |  | 86.38d | 0d |  | Darryl Long [50%] | 2h |  |
| 290 | 21.17.3.6 | Debugging | 2d | 2002-05-29 | 2002-05-31 | 289 |  |  | 86.38d | 0d |  | Darryl Long [50%] | 8h |  |
| 291 | 21.18 | **Milestone preparation** | 11.5d | 2002-05-31 | 2002-06-17 | 290 |  |  | 86.38d |  |  |  | 68h |  |
| 292 | 21.18.1 | MoviePlayer | 2d | 2002-05-31 | 2002-06-04 |  |  |  | 86.38d | 0d |  | Darryl Long [50%] | 8h |  |
| 293 | 21.18.2 | NIS Player | 1d | 2002-06-04 | 2002-06-05 | 292 |  |  | 86.38d | 0d |  | Darryl Long [50%] | 4h |  |
| 294 | 21.18.3 | Transitions | 2d | 2002-06-05 | 2002-06-07 | 293 |  |  | 86.38d | 0d |  | Darryl Long [50%] | 8h |  |
| 295 | 21.18.4 | Gameplay Manager | 1d | 2002-06-07 | 2002-06-10 | 294 |  |  | 86.38d | 0d |  | Darryl Long [50%] | 4h |  |
| 296 | 21.18.5 | Head to Head | 3d | 2002-06-10 | 2002-06-13 | 295 |  |  | 86.38d | 0d |  | Darryl Long | 24h |  |
| 297 | 21.18.6 | Final Debugging | 2.5d | 2002-06-13 | 2002-06-17 | 296 |  |  | 86.38d |  |  | Darryl Long | 20h |  |
| 298 | 21.19 | Integrate Watcher | 10d | 2002-04-16 A | 2002-04-30 A |  | 100% |  |  |  |  | Chuck Chow | 80h | 80h |
| 299 | 21.20 | **Art Database** | 42d | 2002-04-30 A | 2002-06-28 |  | 50% | 21d | 63.88d |  |  | Chuck Chow | 672h | 336h |
| 300 | 21.20.1 | Finalize Art Base Specs | 6d | 2002-04-30 A | 2002-05-08 A | 298 | 100% |  |  |  | start no earlier than 2002-04-26 | Chuck Chow | 48h | 48h |
| 301 | 21.20.2 | Create Backend to ArtDB (some kind of sql) | 20d | 2002-05-08 A | 2002-06-06 | 300 | 75% | 5d | 63.88d | 0d |  | Chuck Chow | 160h | 120h |
| 302 | 21.20.3 | Create Frontend to ArtDB | 16d | 2002-06-06 | 2002-06-28 | 301 |  |  | 63.88d | 0d |  | Chuck Chow | 128h |  |
| 303 | 21.21 | **Add Functionality** | 6d | 2002-06-28 | 2002-07-08 | 302 |  |  | 63.88d |  |  | Chuck Chow | 96h |  |
| 304 | 21.21.1 | Check for New textures | 2d | 2002-06-28 | 2002-07-02 |  |  |  | 63.88d | 0d |  | Chuck Chow | 16h |  |
| 305 | 21.21.2 | Check for New/Different Geometry | 2d | 2002-07-02 | 2002-07-04 | 304 |  |  | 63.88d | 0d |  | Chuck Chow | 16h |  |
| 306 | 21.21.3 | Generates New Records Report | 2d | 2002-07-04 | 2002-07-08 | 305 |  |  | 63.88d | 0d |  | Chuck Chow | 16h |  |
| 307 | 21.22 | Integrate with Art Pipeline | 8d | 2002-07-08 | 2002-07-18 | 306 |  |  | 63.88d |  |  | Chuck Chow | 64h |  |

| ID | WBS | Task | Duration | Start | Finish | Predecessors | Total slack | Free slack | Constraint | Resources | Work |
| --- | --- | --- | --- | --- | --- | --- | --- | --- | --- | --- | --- |
| 310 | 22 | **Milestone 8 (June 15th)** | 22d | 2002-05-16 | 2002-06-18 |  | 64d |  |  |  | 1296h |
| 311 | 22.1 | **Profiler Integrated** | 10d | 2002-05-16 | 2002-05-31 |  | 64d |  |  | Darwin Chau [50%] | 120h |
| 312 | 22.1.1 | Investigate VTune for Xbox | 2d | 2002-05-16 | 2002-05-21 |  | 64d | 0d | start no earlier than 2002-05-16 | Darwin Chau | 16h |
| 313 | 22.1.2 | Extract and cleanup Profiler from SRR | 2d | 2002-05-21 | 2002-05-23 | 312 | 64d | 0d |  | Darwin Chau | 16h |
| 314 | 22.1.3 | Integrate Profiler | 2d | 2002-05-23 | 2002-05-27 | 313 | 64d | 0d |  | Darwin Chau | 16h |
| 315 | 22.1.4 | Integrate Watcher | 1d | 2002-05-27 | 2002-05-28 | 314 | 64d | 0d |  | Darwin Chau | 8h |
| 316 | 22.1.5 | Investigate Alternatives to DebugInfo | 1d | 2002-05-28 | 2002-05-29 | 315 | 64d | 0d |  | Darwin Chau | 8h |
| 317 | 22.1.6 | Integrate DebugInfo | 2d | 2002-05-29 | 2002-05-31 | 316 | 64d | 0d |  | Darwin Chau | 16h |
| 318 | 22.2 | **Memory System** | 5d | 2002-05-31 | 2002-06-07 | 317 | 64d |  |  | Darwin Chau | 80h |
| 319 | 22.2.1 | Implement Memory Pools | 3d | 2002-05-31 | 2002-06-05 |  | 64d | 0d | start no earlier than 2002-05-16 | Darwin Chau | 24h |
| 320 | 22.2.2 | Integrate Ftech Memory Monitor | 2d | 2002-06-05 | 2002-06-07 | 319 | 64d | 0d |  | Darwin Chau | 16h |
| 321 | 22.3 | **Scripting System (1st Pass)** | 7d | 2002-06-07 | 2002-06-18 |  | 64d |  |  | Darwin Chau | 112h |
| 322 | 22.3.1 | Extract and Cleanup Scripter from Mirth | 3d | 2002-06-07 | 2002-06-12 | 320 | 64d | 0d |  | Darwin Chau | 24h |
| 323 | 22.3.2 | Integrate Scripter | 3d | 2002-06-12 | 2002-06-17 | 322 | 64d | 0d |  | Darwin Chau | 24h |
| 324 | 22.3.3 | Testing | 1d | 2002-06-17 | 2002-06-18 | 323 | 64d |  |  | Darwin Chau | 8h |
| 325 | 22.4 | Add DA sound layer code to game | 3d | 2002-05-29 | 2002-06-03 |  | 67d | 0d | start no earlier than 2002-05-29 | Darren Esau | 24h |
| 326 | 22.5 | Knock dead and unneeded code out of layer | 3d | 2002-06-03 | 2002-06-06 | 325 | 67d | 0d |  | Darren Esau | 24h |
| 327 | 22.6 | Remove unneeded interfaces | 2d | 2002-06-06 | 2002-06-10 | 326 | 67d | 0d |  | Darren Esau | 16h |
| 328 | 22.7 | Write simple sound drivers to load scripts and prove that sounds can be made | 2d | 2002-06-10 | 2002-06-12 | 327 | 67d | 0d |  | Darren Esau | 16h |
| 329 | 22.8 | Add debug display code | 1d | 2002-06-12 | 2002-06-13 | 328 | 67d |  |  | Darren Esau | 8h |
| 330 | 22.9 | **World builder complete** | 13d | 2002-05-16 | 2002-06-05 |  | 65d |  |  |  | 104h |
| 331 | 22.9.1 | Implement Tree-line Tool | 4d | 2002-05-16 | 2002-05-23 |  | 65d | 0d | start no earlier than 2002-05-16 | Cary Brisebois | 32h |
| 332 | 22.9.2 | Implement Bilboarded Quad | 1d | 2002-05-23 | 2002-05-24 | 331 | 65d | 0d |  | Cary Brisebois | 8h |
| 333 | 22.9.3 | Update Existing World builder tools | 4d | 2002-05-24 | 2002-05-30 | 332 | 65d | 0d |  | Cary Brisebois | 32h |
| 334 | 22.9.4 | Create Locator Placement Plug-in | 2d | 2002-05-30 | 2002-06-03 | 333 | 65d | 0d |  | Cary Brisebois | 16h |
| 335 | 22.9.5 | Integrate Sound Script Parsing System | 2d | 2002-06-03 | 2002-06-05 | 334 | 65d | 0d |  | Cary Brisebois | 16h |

Notes:
- 330: Prototyped: / - Grounding Tool / - Bounding Vol. Fence Tool / These will need some updating to reflect designer requirements and bug fixes. / To do: / - Tree-line Tool / - Bilboarded Quad
- 331: The tree line tool creates a series of quads that are automatically snaped to the surface (or y=0) and generate texture tiling automatically
- 332: Bilboarded quads are supposed to be supported by Pure3d, but apparently they don't work. I will need some time to sort this out.
- 333: The grounding tool and the boundign volume fence tool will need some time to update them.
- 334: This already exists for the SRR version of locators trigger volumes.
- 335: Esan is making a tool that will parse the sound scripts to determine what sound effects are available as locator-based sounds. This tool wil update the locators, and allow the placement of new ones.

| ID | WBS | Task | Duration | Start | Finish | Predecessors | Total slack | Free slack | Constraint | Resources | Work |
| --- | --- | --- | --- | --- | --- | --- | --- | --- | --- | --- | --- |
| 336 | 22.10 | **Create Art Database** | 8d | 2002-06-05 | 2002-06-17 | 335 | 65d |  |  |  | 64h |
| 337 | 22.10.1 | Integrate with Art Library | 3d | 2002-06-05 | 2002-06-10 |  | 65d | 0d |  | Cary Brisebois | 24h |
| 338 | 22.10.2 | Integrate with Art Pipeline Build | 2d | 2002-06-10 | 2002-06-12 | 337 | 65d | 0d |  | Cary Brisebois | 16h |
| 339 | 22.10.3 | Integrate with Rules Generation | 3d | 2002-06-12 | 2002-06-17 | 338 | 65d |  |  | Cary Brisebois | 24h |
| 340 | 22.11 | **Out of Car Functionality (1st Pass)** | 15d | 2002-05-16 | 2002-06-07 |  | 71d |  |  | Travis Brown-John [50%] | 292h |
| 341 | 22.11.1 | **Avatar system** | 4d | 2002-05-16 | 2002-05-23 |  | 71d |  |  | Travis Brown-John | 64h |
| 342 | 22.11.1.1 | Implement control (vehicle <--> character) switching logic. | 2d | 2002-05-16 | 2002-05-21 |  | 71d | 0d | start no earlier than 2002-05-16 | Travis Brown-John | 16h |
| 343 | 22.11.1.2 | Implement event handler for GetInCar event | 0.5d | 2002-05-21 | 2002-05-21 | 342 | 71d | 0d |  | Travis Brown-John | 4h |
| 344 | 22.11.1.3 | Implement event handler for GetOutofCar event | 0.5d | 2002-05-21 | 2002-05-22 | 343 | 71d | 0d |  | Travis Brown-John | 4h |
| 345 | 22.11.1.4 | Implement VehicleControllerFactory | 1d | 2002-05-22 | 2002-05-23 | 344 | 71d | 0d |  | Travis Brown-John | 8h |
| 346 | 22.11.2 | **Character Manager** | 1d | 2002-05-23 | 2002-05-24 | 345 | 71d |  |  | Travis Brown-John | 16h |
| 347 | 22.11.2.1 | Implement Character Manager (Create/Init/update/destroy) | 1d | 2002-05-23 | 2002-05-24 |  | 71d | 0d |  | Travis Brown-John | 8h |
| 348 | 22.11.3 | **Character Motion Controller** | 3d | 2002-05-24 | 2002-05-29 | 347 | 71d |  |  | Travis Brown-John | 48h |
| 349 | 22.11.3.1 | Implement Locomotion smooth acceleration/decel | 0.5d | 2002-05-24 | 2002-05-24 |  | 71d | 0d |  | Travis Brown-John | 4h |
| 350 | 22.11.3.2 | Implement Locomotion smooth rotation | 0.5d | 2002-05-24 | 2002-05-27 | 349 | 71d | 0d |  | Travis Brown-John | 4h |
| 351 | 22.11.3.3 | Implement U turn transition | 1d | 2002-05-27 | 2002-05-28 | 350 | 71d | 0d |  | Travis Brown-John | 8h |
| 352 | 22.11.3.4 | Write basic Choreo script | 1d | 2002-05-28 | 2002-05-29 | 351 | 71d | 0d |  | Travis Brown-John | 8h |
| 353 | 22.11.4 | Physical Character Controller Implementation | 0.5d | 2002-05-29 | 2002-05-29 | 352 | 71d | 0d |  | Travis Brown-John | 4h |
| 354 | 22.11.5 | Physical Vehicle Controller Implementation | 0.5d | 2002-05-29 | 2002-05-30 | 353 | 71d | 0d |  | Travis Brown-John | 4h |
| 355 | 22.11.6 | **Character Animations** | 4d | 2002-05-30 | 2002-06-05 | 354 | 71d |  |  | Travis Brown-John | 64h |
| 356 | 22.11.6.1 | Implement Action Tree/Animation Sequencer (port from Hulk/Squidney) | 4d | 2002-05-30 | 2002-06-05 |  | 71d | 0d |  | Travis Brown-John | 32h |
| 357 | 22.11.7 | **Character AI** | 2d | 2002-06-05 | 2002-06-07 | 356 | 71d |  |  | Travis Brown-John | 32h |
| 358 | 22.11.7.1 | Trigger GetInCar Event (poll input, test conditions: proximity to car) | 1d | 2002-06-05 | 2002-06-06 |  | 71d | 0d |  | Travis Brown-John | 8h |
| 359 | 22.11.7.2 | Trigger GetOutofCar Event | 1d | 2002-06-06 | 2002-06-07 | 358 | 71d |  |  | Travis Brown-John | 8h |

Notes:
- 337: The art database will need to access the p3d chunks in the art library. This will need to use Toollib as part of the art database.
- 338: The plan is to make the art database run the pipeline. This will be a GUI to the pipeline and possible tools to write pipeline ini files.
- 339: The plan includes creating rules for the p3drule tool in the Art Data base tool / Depend: Bryan Ewert to make p3dRule work
- 340: User will be able to "walk" in world with character.* User will be able to get in/out of car. Control will switch between character and vehicle. / Character will teleport into/out of car. / DEPENDICIES / Terrain system functional to give y height at xz coord. Locators in vehicle data for passenger sit, get in/out coordinates. Need to tell the camera system what to look at (character or vehicle).

| ID | WBS | Task | Duration | Start | Finish | Predecessors | Total slack | Free slack | Constraint | Resources | Work |
| --- | --- | --- | --- | --- | --- | --- | --- | --- | --- | --- | --- |
| 360 | 22.12 | **World Sphere** | 1d | 2002-05-16 | 2002-05-17 |  | 85d |  |  | Devin Murname | 16h |
| 361 | 22.12.1 | Loading | 0.13d | 2002-05-16 | 2002-05-16 |  | 85d | 0d | start no earlier than 2002-05-16 | Devin Murname | 1.03h |
| 362 | 22.12.2 | Rendering | 0.62d | 2002-05-16 | 2002-05-16 | 361 | 85d | 0d |  | Devin Murname | 4.97h |
| 363 | 22.12.3 | Debugging | 0.25d | 2002-05-16 | 2002-05-17 | 362 | 85d |  |  | Devin Murname | 2h |
| 365 | 22.13 | Tuning Cars Possible | 21d | 2002-05-16 | 2002-06-17 |  | 65d |  | start no earlier than 2002-05-16 | Greg Mayer [20%] | 33.6h |
| 366 | 22.14 | Car Damage States (1st Pass) | 21d | 2002-05-16 | 2002-06-17 |  | 65d |  | start no earlier than 2002-05-16 | Greg Mayer [40%] | 67.2h |
| 367 | 22.15 | Collision Manager (1st Pass) | 21d | 2002-05-16 | 2002-06-17 |  | 65d |  | start no earlier than 2002-05-16 | Greg Mayer [40%] | 67.2h |
| 368 | 22.16 | Track Editor Complete (1st Pass) | 21d | 2002-05-16 | 2002-06-17 |  | 65d |  | start no earlier than 2002-05-16 | Cary Brisebois [50%] | 84h |
| 369 | 22.17 | Basic FE System | 21d | 2002-05-16 | 2002-06-17 |  | 65d |  | start no earlier than 2002-05-16 | NEW CODER 1 | 168h |
| 371 | 23 | **Milestone 9 (July 15th)** | 27d? | 2002-06-17 | 2002-07-24 |  | 38d |  |  |  | 728h |
| 372 | 23.1 | Write Sound Manager class, with component creation/destruction | 2d | 2002-06-17 | 2002-06-19 |  | 38d | 0d | start no earlier than 2002-06-17 | Darren Esau | 16h |
| 373 | 23.2 | Write sound loader system | 4d | 2002-06-19 | 2002-06-25 | 372 | 38d | 0d |  | Darren Esau | 32h |
| 374 | 23.3 | Write global tuner | 2d | 2002-06-25 | 2002-06-27 | 373 | 38d | 0d |  | Darren Esau | 16h |
| 375 | 23.4 | Write SimpsonsSoundPlayer class | 3d | 2002-06-27 | 2002-07-02 | 374 | 38d | 0d |  | Darren Esau | 24h |
| 376 | 23.5 | Write avatar sound system structure, ignoring logic for walker sound | 5d | 2002-07-02 | 2002-07-09 | 375 | 38d | 0d |  | Darren Esau | 40h |
| 377 | 23.6 | Set up car sound system scripts with RadTuner support | 2d | 2002-07-09 | 2002-07-11 | 376 | 38d | 0d |  | Darren Esau | 16h |
| 378 | 23.7 | Write sound effect subsystem | 3d | 2002-07-11 | 2002-07-16 | 377 | 38d | 0d |  | Darren Esau | 24h |
| 379 | 23.8 | Write music subsystem | 3d | 2002-07-16 | 2002-07-19 | 378 | 38d | 0d |  | Darren Esau | 24h |
| 380 | 23.9 | Set up music and sound effect scripts with RadTuner support | 2d | 2002-07-19 | 2002-07-23 | 379 | 38d | 0d |  | Darren Esau | 16h |
| 381 | 23.10 | Add debug display code | 1d | 2002-07-23 | 2002-07-24 | 380 | 38d |  |  | Darren Esau | 8h |
| 382 | 23.11 | Fence tool runtime to bound worlds | 1d? | 2002-06-17 | 2002-06-18 |  | 64d |  | start no earlier than 2002-06-17 | Greg Mayer | 8h |
| 384 | 23.12 | Character Out of Car Interactions w/ World Objects (1st Pass) | 21d | 2002-06-17 | 2002-07-16 |  | 44d |  | start no earlier than 2002-06-17 | Travis Brown-John [50%] | 84h |
| 385 | 23.13 | Road Network System (1st Pass) | 21d | 2002-06-17 | 2002-07-16 |  | 44d |  | start no earlier than 2002-06-17 | Travis Brown-John [50%]; Cary Brisebois | 252h |
| 386 | 23.14 | HUD Implemented (1st Pass) | 21d | 2002-06-17 | 2002-07-16 |  | 44d |  | start no earlier than 2002-06-17 | NEW CODER 1 | 168h |

| ID | WBS | Task | Type | Duration | Start | Finish | Predecessors | Total slack | Free slack | Constraint | Resources | Work |
| --- | --- | --- | --- | --- | --- | --- | --- | --- | --- | --- | --- | --- |
| 388 | 24 | **Milestone 10 (Aug 15th)** |  | 44d | 2002-06-17 | 2002-08-16 |  | 21d |  |  |  | 1088h |
| 389 | 24.1 | **Write SpeechCoordinator dialog management system** |  | 8d | 2002-07-16 | 2002-07-26 |  | 21d |  |  |  | 64h |
| 390 | 24.1.1 | Class Structure |  | 3d | 2002-07-16 | 2002-07-19 |  | 21d | 0d | start no earlier than 2002-07-16 | Darren Esau | 24h |
| 391 | 24.1.2 | Parsing & sorting Code |  | 5d | 2002-07-19 | 2002-07-26 | 390 | 21d | 0d |  | Darren Esau | 40h |
| 392 | 24.2 | Write DialogCoordinator |  | 2d | 2002-07-26 | 2002-07-30 | 391 | 21d | 0d |  | Darren Esau | 16h |
| 393 | 24.3 | Write priority queue system |  | 5d | 2002-07-30 | 2002-08-06 | 392 | 21d | 0d |  | Darren Esau | 40h |
| 394 | 24.4 | Add in the Cone of Silence logic |  | 4d | 2002-08-06 | 2002-08-12 | 393 | 21d | 0d |  | Darren Esau | 32h |
| 395 | 24.5 | Linked conversation capability |  | 3d | 2002-08-12 | 2002-08-15 | 394 | 21d | 0d |  | Darren Esau | 24h |
| 396 | 24.6 | Add debug display code |  | 1d | 2002-08-15 | 2002-08-16 | 395 | 21d |  |  | Darren Esau | 8h |
| 398 | 24.7 | Chase/Evade Mission Playable |  | 23d | 2002-07-16 | 2002-08-16 |  | 21d |  | start no earlier than 2002-07-16 |  |  |
| 399 | 24.8 | Collection Mission Playable |  | 23d | 2002-07-16 | 2002-08-16 |  | 21d |  | start no earlier than 2002-07-16 |  |  |
| 400 | 24.9 | All Mission Types Possible |  | 23d | 2002-07-16 | 2002-08-16 |  | 21d |  | start no earlier than 2002-07-16 |  |  |
| 401 | 24.10 | Chase AI (1st Pass) |  | 23d | 2002-07-16 | 2002-08-16 |  | 21d |  | start no earlier than 2002-07-16 | Travis Brown-John | 184h |
| 402 | 24.11 | Evade AI (1st Pass) |  | 23d | 2002-07-16 | 2002-08-16 |  | 21d |  | start no earlier than 2002-07-16 | Travis Brown-John | 184h |
| 403 | 24.12 | Traffic System AI (1st Pass) |  | 23d | 2002-07-16 | 2002-08-16 |  | 21d |  | start no earlier than 2002-07-16 | Cary Brisebois [50%] | 92h |
| 404 | 24.13 | Counter Measures (1st Pass) |  | 23d | 2002-07-16 | 2002-08-16 |  | 21d |  | start no earlier than 2002-07-16 | Cary Brisebois [50%] | 92h |
| 405 | 24.14 | Pedestrian AI (1st Pass) |  | 44d | 2002-06-17 | 2002-08-16 |  | 21d |  | start no earlier than 2002-06-17 | Darryl Long | 352h |
| 407 | 25 | **Milestone 11 (Sep 15th)** |  | 95d? | 2002-04-16 | 2002-08-28 |  | 13d |  |  |  | 72h |
| 408 | 25.1 | Write ambient sound system |  | 5d | 2002-08-16 | 2002-08-23 |  | 13d | 0d | start no earlier than 2002-08-16 | Darren Esau | 40h |
| 409 | 25.2 | Write NIS sound system |  | 2d | 2002-08-23 | 2002-08-27 | 408 | 13d | 0d |  | Darren Esau | 16h |
| 410 | 25.3 | Add debug display code |  | 1d | 2002-08-27 | 2002-08-28 | 409 | 13d |  |  | Darren Esau | 8h |
| 411 | 25.4 | Xbox Ripping |  | 1d? | 2002-04-16 | 2002-04-17 |  | 107d |  |  | Darren Esau | 8h |
| 412 | 26 | Front End Complete |  | 44d | 2002-07-16 | 2002-09-16 |  | 0d |  | start no earlier than 2002-07-16 | NEW CODER 1 | 352h |
| 413 | 27 | Memory Card Services |  | 21d | 2002-08-16 | 2002-09-16 |  | 0d |  | start no earlier than 2002-08-16 | Cary Brisebois | 168h |
| 416 | 28 | SOUND TASKS |  | 1d? | 2002-04-16 | 2002-04-17 |  | 128.88d |  |  |  |  |
| 418 | 29 | Final sound design |  | 1d? | 2002-04-16 | 2002-04-17 |  | 128.88d |  |  |  |  |
| 420 | 30 | Engine sounds 1st pass |  | 1d? | 2002-04-16 | 2002-04-17 |  | 128.88d |  |  |  |  |
| 421 | 31 | Environmental sound for Level 1 & 2 |  | 1d? | 2002-04-16 | 2002-04-17 |  | 128.88d |  |  |  |  |
| 422 | 32 | Place holder music |  | 1d? | 2002-04-16 | 2002-04-17 |  | 128.88d |  |  |  |  |
| 424 | 33 | Dialog playing in the game (not the new dialog) |  | 1d? | 2002-04-16 | 2002-04-17 |  | 128.88d |  |  |  |  |
| 425 | 34 | Environmental sound for Level 3 & 4 |  | 1d? | 2002-04-16 | 2002-04-17 |  | 128.88d |  |  |  |  |
| 426 | 35 | Music scripts for all game modes |  | 1d? | 2002-04-16 | 2002-04-17 |  | 128.88d |  |  |  |  |
| 427 | 36 | 3 Chase music tracks |  | 1d? | 2002-04-16 | 2002-04-17 |  | 128.88d |  |  |  |  |
| 429 | 37 | "Out of car" ambient sound for all levels |  | 1d? | 2002-04-16 | 2002-04-17 |  | 128.88d |  |  |  |  |
| 430 | 38 | 4 character song (4/8) |  | 1d? | 2002-04-16 | 2002-04-17 |  | 128.88d |  |  |  |  |
| 431 | 39 | Sound for 4 FMV's |  | 1d? | 2002-04-16 | 2002-04-17 |  | 128.88d |  |  |  |  |
| 433 | 40 | New collision sounds using real-time physics engine |  | 1d? | 2002-04-16 | 2002-04-17 |  | 128.88d |  |  |  |  |
| 434 | 41 | Sound for 4 FMV |  | 1d? | 2002-04-16 | 2002-04-17 |  | 128.88d |  |  |  |  |
| 435 | 42 | New Dialog in game 1st pass |  | 1d? | 2002-04-16 | 2002-04-17 |  | 128.88d |  |  |  |  |
| 437 | 43 | Win / Lose songs for all characters |  | 1d? | 2002-04-16 | 2002-04-17 |  | 128.88d |  |  |  |  |
| 438 | 44 | Engine sounds 2nd pass |  | 1d? | 2002-04-16 | 2002-04-17 |  | 128.88d |  |  |  |  |
| 440 | 45 | All Dialog Mastered |  | 1d? | 2002-04-16 | 2002-04-17 |  | 128.88d |  |  |  |  |
| 444 | 46 | D-Fox Story Concept | milestone | 0d | 2002-04-15 | 2002-04-15 |  | 130d |  | finish no earlier than 2002-04-15 |  |  |
| 445 | 47 | D-FMV/Storyboard Aproovals | milestone | 0d | 2002-07-15 | 2002-07-15 |  | 66d |  | finish no earlier than 2002-07-15 |  |  |
| 446 | 48 | D-List of Celebrities | milestone | 0d | 2002-07-15 | 2002-07-15 |  | 66d |  | finish no earlier than 2002-07-15 |  |  |
| 447 | 49 | D-Recorded Dialog | milestone | 0d | 2002-08-15 | 2002-08-15 |  | 43d |  | finish no earlier than 2002-08-15 |  |  |
| 448 | 50 | D-Level 1 & 2 Art Approval from FOX | milestone | 0d | 2002-09-15 | 2002-09-15 |  | 22d |  | finish no earlier than 2002-09-15 |  |  |

| ID | WBS | Task | Duration | Start | Finish | Total slack |
| --- | --- | --- | --- | --- | --- | --- |
| 449 | 51 | **D-Level 3 & 4 Art Approval from FOX** | 1d? | 2002-04-16 | 2002-04-17 | 107d |
| 450 | 51.1 | Xbox Ripping | 1d? | 2002-04-16 | 2002-04-17 | 107d |
