# SRRII Production Schedule

Schedule from MS Project, 2002-04-16 to 2003-07-04, status date 2002-10-28, A marks actual dates.
Simpsons Road Rage Production Schedule
Radical Entertainment

## Calendars

- Standard: Mon-Fri 08:00-12:00, 13:00-17:00; Sat-Sun off. Exceptions (off unless hours are given): 2002-05-20, 2003-02-15 08:00-12:00, 13:00-17:00, 2003-03-15 08:00-12:00, 13:00-17:00.

## Resources

| Resource | Group | Notes |
| --- | --- | --- |
| Joel DeYoung | Lead |  |
| Darwin Chau | Coder |  |
| Darren Esau | Sound |  |
| Cary Brisebois | Coder |  |
| Travis Brown-John | Coder |  |
| Greg Mayer | Coder |  |
| Darryl Long | Coder |  |
| Devin Murname | Coder |  |
| Michael Riegger | Coder |  |
| Vlad Ceraldi | Producer |  |
| Allister Jones | Project Manager - preproduction |  |
| Yayoi Maruno | Art Director |  |
| Jeff Pidsadny | Lead World Modeler |  |
| Kevin Fink | 3D Artist |  |
| Trevor Lim | Animator |  |
| Vincent Chin | World Artist |  |
| Aryan Hanbeck | Character Modeler |  |
| Jeremy Mesana | Lead Animator |  |
| Joe McGinn | Designer |  |
| Shawn Lee | Designer |  |
| Jeff Houde | Writer |  |
| Marc Baril | Sound |  |
| Chuck Chow | Coder |  |
| Ting Ting Chen | Graphic Artist |  |
| Wolfgang Hamann | Project Manager |  |
| Sheik Sahib | Artist |  |
| Sarah Meagher | World Artist |  |
| Tony Chu | Coder |  |
| Chris Mitchell | Designer |  |
| Carey Du Gray | Lead |  |
| Dusit Eakkachaichanvet | Coder |  |
| Elliott Roessler | Effect Artist |  |
| Eric Madill | World Artist |  |
| James Harrison | Coder |  |
| Jaroslav Chorny | Character Modeler |  |
| Robert Peet | World Artist |  |
| Ron Sombilon | Animator |  |
| Ross Young | World Artist |  |
| Sanela Mickovic | World Artist |  |
| Steve Bocska | Lead |  |
| Thomas Greenwood | Tester |  |
| Yousuf Mapara | Animator |  |
| Jonathan Lim | Tester |  |
| Mark Ng | Tester |  |
| Nigel Brooke | Coder |  |
| Jason Bone | Coder |  |
| Matthew Miller | QA |  |
| Alan Cheung | QA |  |
| Iain Gipson | Coder | Please join me in welcoming Ian Gipson to Fish Bulb! Ian comes to us / most recently from the lead PS2 programmer post on the Penthouse team. / He has experience in numerous areas of game development. Initially, he / will be helping Carey with changes to presentation and NIS / conversations. He will also be helping out with PS2 performance issues, / localization, and I'm sure other things that will come up! :) / He will be sitting in the same area as Michael, James and Aryan. |
| Jeff Plumley | Designer |  |
| Darren Evenson | Designer | A reminder that Darren Evenson is joining our team today. He will be sitting where Jason Bone has been. In case you missed it on Friday, Jason has finished his tour of duty with us and is returning to Squidney. / Darren will be working on placing data and tuning scripts for our mission gameplay. |
| Colin Lorimer | Concept Artist (Special Thanks) |  |
| Geoff Richardson | Special Thanks |  |
| Chris Dellinger | QA |  |
| Alan Cheung | QA |  |
| Matthew Miller | QA |  |
| Cory Hawthorne | Sound FX Design |  |
| Marc L'esperance | Engine Sound FX |  |
| Brad Dixon | Art Intern | Started Nev 27, 2002 / Assisting Aryan with Effects |
| Dustin Condie | World Building Inter | Another intern Dustin Condie coming from Mirth to assist world building Dec 1 |
| Dustin Condie | Intern - World Builders | Start Dec 2 - |
| Mike Miraffa | Artist - Effects | Mike Miraffa will also help with Effects and other miscalleneous stuff. |
| Roman Tomazin |  |  |
| Allan Levy |  |  |
| TBA |  |  |

## Schedule

| ID | WBS | Task | Duration | Start | Finish | Predecessors | Complete | Remaining | Total slack | Free slack | Constraint | Resources | Work | Actual work |
| --- | --- | --- | --- | --- | --- | --- | --- | --- | --- | --- | --- | --- | --- | --- |
| 2 | 1 | **DESIGN TASKS** | 200.88d? | 2002-04-16 A | 2003-01-22 |  | 22% | 156.65d? | 118.12d |  |  |  | 2728.6h | 536.36h |
| 3 | 2 | **Milestone 7 (May 15th)** | 20d | 2002-04-16 A | 2002-05-14 |  | 38% | 12.5d | 299d |  |  |  | 320h | 120h |
| 4 | 2.1 | All mission gameplay design (1st pass) | 4d | 2002-04-16 | 2002-04-22 |  |  |  | 299d | 0d |  | Joe McGinn | 32h |  |
| 5 | 2.2 | Updated camera design | 4d | 2002-04-22 | 2002-04-26 | 4 |  |  | 299d | 0d |  | Joe McGinn | 32h |  |
| 6 | 2.3 | Collate updated design doc, and write MS report | 4d | 2002-04-26 | 2002-05-02 | 5 |  |  | 299d | 0d |  | Joe McGinn | 32h |  |
| 7 | 2.4 | Final mission scripter section (INTERNAL, not for FOX) | 4d | 2002-05-02 | 2002-05-08 | 6 |  |  | 299d | 0d |  | Joe McGinn | 32h |  |
| 8 | 2.5 | Final collectibles section (INTERNAL, not for FOX) | 4d | 2002-05-08 | 2002-05-14 | 7 |  |  | 299d |  |  | Joe McGinn | 32h |  |
| 9 | 2.6 | Finalize dialog template/naming conventions (INTERNAL, not for FOX) | 5d | 2002-04-16 A | 2002-04-23 |  | 75% | 1.25d | 310.25d | 0d |  | Shawn Lee | 40h | 30h |
| 10 | 2.7 | Front End design, including all TRC requirements | 5d | 2002-04-23 A | 2002-04-30 | 9 | 75% | 1.25d | 306.5d | 0d |  | Shawn Lee | 40h | 30h |
| 11 | 2.8 | Controller design | 10d | 2002-04-30 A | 2002-05-14 | 10 | 75% | 2.5d | 299d |  |  | Shawn Lee | 80h | 60h |
| 12 | 3 | **Milestone 8 (April 15th)** | 20d | 2002-05-16 | 2002-06-14 |  |  |  | 277d |  |  |  | 320h |  |
| 13 | 3.1 | All mission gameplay design (2nd pass) | 4d | 2002-05-16 | 2002-05-23 |  |  |  | 277d | 0d | start no earlier than 2002-05-16 | Joe McGinn | 32h |  |
| 14 | 3.2 | Final Multiplayer design | 4d | 2002-05-23 | 2002-05-29 | 13 |  |  | 277d | 0d |  | Joe McGinn | 32h |  |
| 15 | 3.3 | Collate updated design doc, and write MS report | 4d | 2002-05-29 | 2002-06-04 | 14 |  |  | 277d | 0d |  | Joe McGinn | 32h |  |
| 16 | 3.4 | Initial driving engine review (INTERNAL, not for FOX) | 4d | 2002-06-04 | 2002-06-10 | 15 |  |  | 277d | 0d |  | Joe McGinn | 32h |  |
| 17 | 3.5 | 1st pass camera tuning (INTERNAL, not for FOX) | 4d | 2002-06-10 | 2002-06-14 | 16 |  |  | 277d |  |  | Joe McGinn | 32h |  |
| 18 | 3.6 | Final Characters/Vehicles section | 2d | 2002-05-16 | 2002-05-21 |  |  |  | 277d | 0d | start no earlier than 2002-05-16 | Shawn Lee | 16h |  |
| 19 | 3.7 | Final Front End design | 3d | 2002-05-21 | 2002-05-24 | 18 |  |  | 277d | 0d |  | Shawn Lee | 24h |  |
| 20 | 3.8 | Final Gameplay Controls section | 4d | 2002-05-24 | 2002-05-30 | 19 |  |  | 277d | 0d |  | Shawn Lee | 32h |  |
| 21 | 3.9 | Final Presentation section | 3d | 2002-05-30 | 2002-06-04 | 20 |  |  | 277d | 0d |  | Shawn Lee | 24h |  |
| 22 | 3.10 | Final Interface (HUD) section | 3d | 2002-06-04 | 2002-06-07 | 21 |  |  | 277d | 0d |  | Shawn Lee | 24h |  |
| 23 | 3.11 | 1st pass camera tuning (INTERNAL, not for FOX) | 5d | 2002-06-07 | 2002-06-14 | 22 |  |  | 277d |  |  | Shawn Lee | 40h |  |
| 24 | 4 | **Milestone 9 (July 15th)** | 20d | 2002-06-17 | 2002-07-15 |  |  |  | 256d |  |  |  | 320h |  |
| 25 | 4.1 | Driving engine tuning | 5d | 2002-06-17 | 2002-06-24 |  |  |  | 256d | 0d | start no earlier than 2002-06-17 | Joe McGinn | 40h |  |
| 26 | 4.2 | 1st Pass Tuning for 8 cars | 5d | 2002-06-24 | 2002-07-01 | 25 |  |  | 256d | 0d |  | Joe McGinn | 40h |  |
| 27 | 4.3 | Test world builder/trigger volume pipeline (INTERNAL, not for FOX) | 5d | 2002-07-01 | 2002-07-08 | 26 |  |  | 256d | 0d |  | Joe McGinn | 40h |  |
| 28 | 4.4 | Test mission scripter (INTERNAL, not for FOX) | 5d | 2002-07-08 | 2002-07-15 | 27 |  |  | 256d |  |  | Joe McGinn | 40h |  |
| 29 | 4.5 | 1st pass Collision Tuning | 8d | 2002-06-17 | 2002-06-27 |  |  |  | 256d | 0d | start no earlier than 2002-06-17 | Shawn Lee | 64h |  |
| 30 | 4.6 | 1st pass Damage States Tuning | 4d | 2002-06-27 | 2002-07-03 | 29 |  |  | 256d | 0d |  | Shawn Lee | 32h |  |
| 31 | 4.7 | 1st pass controller tuning | 8d | 2002-07-03 | 2002-07-15 | 30 |  |  | 256d |  |  | Shawn Lee | 64h |  |

Notes:
- 2: MetagameCarey RewardsCarey HUD/OverlaysCarey FMVCarey PresentationCarey Presentation CamerasCarey Collector CardChris Collector Card GameChris 2d GamesChris DialogChris Mission TuningDarren CollectablesDarren Driving Mini-GamesDarren Driving ModelJoe Vehicle TuningJoe AIJoe Secondary Mission ObjectivesJoe World RevisionsJoe Driving Gameplay CamerasJoe Data PlacementSheik Jumping PuzzlesSheik

| ID | WBS | Task | Duration | Start | Finish | Predecessors | Total slack | Free slack | Resources | Work |
| --- | --- | --- | --- | --- | --- | --- | --- | --- | --- | --- |
| 32 | 5 | **Milestone 10 (Aug 15th)** | 1d? | 2002-04-16 | 2002-04-17 |  | 318d |  |  |  |
| 33 | 5.1 | Designer Track Sign-Off | 1d? | 2002-04-16 | 2002-04-17 |  | 317d |  |  |  |
| 34 | 5.2 | Test of All Mission Types (1st Pass) | 1d? | 2002-04-16 | 2002-04-17 |  | 317d |  |  |  |
| 35 | 5.3 | 1st Pass Tuning for 8 Vehicles | 1d? | 2002-04-16 | 2002-04-17 |  | 317d |  |  |  |
| 36 | 5.4 | Start Creating Real Mission Data | 1d? | 2002-04-16 | 2002-04-17 |  | 317d |  |  |  |
| 37 | 5.5 | Controller Tuning (1st Pass) | 1d? | 2002-04-16 | 2002-04-17 |  | 317d |  |  |  |
| 38 | 5.6 | Camera Tuning (1st Pass) | 1d? | 2002-04-16 | 2002-04-17 |  | 317d |  |  |  |
| 39 | 6 | **Milestone 11 (Sep 15th)** | 1d? | 2002-04-16 | 2002-04-17 |  | 318d |  |  |  |
| 40 | 6.1 | Global AI Tuning (1st Pass) | 1d? | 2002-04-16 | 2002-04-17 |  | 317d |  |  |  |
| 41 | 6.2 | Multiplayer Data Placed | 1d? | 2002-04-16 | 2002-04-17 |  | 317d |  |  |  |
| 42 | 6.3 | Traffic System Tuning (1st Pass) | 1d? | 2002-04-16 | 2002-04-17 |  | 317d |  |  |  |
| 43 | 6.4 | Collectibles/Conversation Tuning (1st Pass) | 1d? | 2002-04-16 | 2002-04-17 |  | 317d |  |  |  |
| 44 | 6.5 | Counter Measures Tuning (1st Pass) | 1d? | 2002-04-16 | 2002-04-17 |  | 317d |  |  |  |
| 45 | 7 | **Milestone 12 (Oct 15th)** | 15d? | 2002-04-16 | 2002-05-07 |  | 304d |  |  | 524h |
| 46 | 7.1 | improve gameplay in level 1 missions | 5d | 2002-04-16 | 2002-04-23 |  | 308d | 0d | Joe McGinn | 40h |
| 47 | 7.2 | all mission data for level 4 complete | 1d? | 2002-04-23 | 2002-04-24 | 46 | 308d | 0d | Joe McGinn | 8h |
| 48 | 7.3 | all mission data for level 7 complete | 3d | 2002-04-24 | 2002-04-29 | 47 | 308d | 0d | Joe McGinn [50%]; Chris Mitchell [50%] | 24h |
| 49 | 7.4 | improvements to vehicle AI | 1d? | 2002-04-29 | 2002-04-30 | 48 | 308d | 0d | Joe McGinn | 8h |
| 50 | 7.5 | final AI traffic behaviour implemented | 1d? | 2002-04-30 | 2002-05-01 | 49 | 308d |  | Joe McGinn | 8h |
| 51 | 7.6 | Sound file naming-rest of today and part of tomorrow | 2d | 2002-04-16 | 2002-04-18 |  | 304d | 0d | Chris Mitchell | 16h |
| 52 | 7.7 | Sound file naming-rest of today and part of tomorrow | 1d? | 2002-04-18 | 2002-04-19 | 51 | 304d | 0d | Chris Mitchell | 8h |
| 53 | 7.8 | Finish level 4 (with Joe) 1 day | 3d | 2002-04-19 | 2002-04-24 | 52 | 304d | 0d | Chris Mitchell [50%]; Joe McGinn [50%] | 24h |
| 54 | 7.9 | Finish level 7 (with Joe) 3 days | 5d | 2002-04-24 | 2002-05-01 | 53 | 304d | 0d | Chris Mitchell [50%]; Joe McGinn [50%] | 40h |
| 55 | 7.10 | Develope/tune level 1 1 week | 1d? | 2002-05-01 | 2002-05-02 | 54 | 304d | 0d | Chris Mitchell | 8h |
| 56 | 7.11 | Dialogue for Homer 1 day | 1d? | 2002-05-02 | 2002-05-03 | 55 | 304d | 0d | Chris Mitchell | 8h |
| 57 | 7.12 | Dialogue for Bart (if time) 1 day | 1d? | 2002-05-03 | 2002-05-06 | 56 | 304d | 0d | Chris Mitchell | 8h |
| 58 | 7.13 | Dynamically loading textures- dependent on coder support. | 1d? | 2002-05-06 | 2002-05-07 | 57 | 304d |  | Chris Mitchell | 8h |

Notes:
- 49: ongoing (related to 1 gameplay tuning)
- 50: ongoing (related to level 1 gameplay tuning)

| ID | WBS | Task | Type | Duration | Start | Finish | Predecessors | Complete | Remaining | Total slack | Free slack | Constraint | Resources | Work | Actual work |
| --- | --- | --- | --- | --- | --- | --- | --- | --- | --- | --- | --- | --- | --- | --- | --- |
| 59 | 7.14 | **Level Art - Downtown** |  | 11d? | 2002-04-16 | 2002-05-01 |  |  |  | 305d |  |  | Sheik Sahib | 176h |  |
| 60 | 7.14.1 | all hailing points placed in the level |  | 1d? | 2002-04-16 | 2002-04-17 |  |  |  | 305d | 0d |  | Sheik Sahib | 8h |  |
| 61 | 7.14.2 | all food icons placed in the level |  | 1d? | 2002-04-17 | 2002-04-18 | 60 |  |  | 305d | 0d |  | Sheik Sahib | 8h |  |
| 62 | 7.14.3 | all destructible cameras placed in the level |  | 1d? | 2002-04-18 | 2002-04-19 | 61 |  |  | 305d | 0d |  | Sheik Sahib | 8h |  |
| 63 | 7.14.4 | all death volumes placed in the level |  | 1d? | 2002-04-19 | 2002-04-22 | 62 |  |  | 305d | 0d |  | Sheik Sahib | 8h |  |
| 64 | 7.14.5 | all pedestrians placed in the level |  | 3d | 2002-04-22 | 2002-04-25 | 63 |  |  | 305d | 0d |  | Sheik Sahib | 24h |  |
| 65 | 7.14.6 | Placement of track data |  | 3d | 2002-04-25 | 2002-04-30 | 64 |  |  | 305d | 0d |  | Sheik Sahib | 24h |  |
| 66 | 7.14.7 | Collector Cards |  | 1d? | 2002-04-30 | 2002-05-01 | 65 |  |  | 305d | 0d |  | Sheik Sahib | 8h |  |
| 67 | 7.15 | **Level Art -- Suburbs** |  | 1d? | 2002-05-01 | 2002-05-02 | 66 |  |  | 305d |  |  |  | 8h |  |
| 68 | 7.15.1 | all pedestrians placed in the level |  | 1d? | 2002-05-01 | 2002-05-02 |  |  |  | 305d | 0d |  | Sheik Sahib | 8h |  |
| 69 | 7.16 | changing placement of card in level1 |  | 1d? | 2002-05-02 | 2002-05-03 | 68 |  |  | 305d | 0d |  | Sheik Sahib | 8h |  |
| 70 | 7.17 | placement of static cameras for entering and exiting interiors |  | 1d? | 2002-05-03 | 2002-05-06 | 69 |  |  | 305d |  |  | Sheik Sahib | 8h |  |
| 71 | 7.18 | design what happens when user character gets hit by car |  | 0.5d | 2002-04-16 | 2002-04-16 |  |  |  | 304.5d | 0d |  | Carey Du Gray | 4h |  |
| 72 | 7.19 | first pass engine sounds -- on-going with sound |  | 1d? | 2002-04-16 | 2002-04-17 | 71 |  |  | 304.5d | 0d |  | Carey Du Gray | 8h |  |
| 73 | 7.20 | environmental/ambient sounds working in all levels -- on-going with sound |  | 6d | 2002-04-17 | 2002-04-25 | 72 |  |  | 304.5d | 0d |  | Carey Du Gray | 48h |  |
| 74 | 7.21 | environmental/ambient sounds working in all available interiors -- on-going with sound |  | 5d | 2002-04-25 | 2002-05-02 | 73 |  |  | 304.5d | 0d |  | Carey Du Gray | 40h |  |
| 75 | 7.22 | design for camera collisions and occlusion |  | 1d? | 2002-05-02 | 2002-05-03 | 74 |  |  | 304.5d | 0d |  | Carey Du Gray | 8h |  |
| 76 | 7.23 | address collector card/camera placement design issues |  | 1d? | 2002-05-03 | 2002-05-06 | 75 |  |  | 304.5d |  |  | Carey Du Gray | 8h |  |
| 77 | 8 | **Milestone 13 (Nov 15th)** |  | 33.5d? | 2002-10-16 A | 2002-12-02 |  | 60% | 13.32d? | 155.5d |  |  |  | 684.6h | 416.36h |
| 78 | 1.7.1 | Metagame Design | milestone | 0d | 2002-10-16 A | 2002-10-16 A |  | 100% |  |  |  | start no earlier than 2002-10-16 | Carey Du Gray [50%] |  |  |
| 79 | 1.7.2 | Rewards Design | milestone | 0d | 2002-10-18 A | 2002-10-18 A | 78 | 100% |  |  |  |  | Carey Du Gray [50%] |  |  |
| 80 | 1.7.3 | **Driving Mini-Games** |  | 5d? | 2002-10-22 A | 2002-10-29 | 79 | 20% | 4d? | 180d |  |  |  | 32h | 6.4h |
| 81 | 1.7.3.1 | Driving Mini-Games Design |  | 1d? | 2002-10-22 A | 2002-10-23 A |  | 100% |  |  |  | start no earlier than 2002-10-16 | Joe McGinn [80%] | 6.4h | 6.4h |
| 82 | 1.7.3.2 | Mini-Track #1 Design |  | 1d? | 2002-10-23 | 2002-10-24 | 81 |  |  | 180d | 0d |  | Joe McGinn [80%] | 6.4h |  |
| 83 | 1.7.3.3 | Mini-Track #2 Design |  | 1d | 2002-10-24 | 2002-10-25 | 82 |  |  | 180d | 0d |  | Joe McGinn [80%] | 6.4h |  |
| 84 | 1.7.3.4 | Mini-Track #3 Design |  | 1d | 2002-10-25 | 2002-10-28 | 83 |  |  | 180d | 0d |  | Joe McGinn [80%] | 6.4h |  |
| 85 | 1.7.3.5 | Gameplay Design |  | 1d | 2002-10-28 | 2002-10-29 | 84 |  |  | 180d |  |  | Joe McGinn [80%] | 6.4h |  |
| 86 | 1.7.4 | Reward Design | milestone | 0d | 2002-10-22 A | 2002-10-22 A | 79 | 100% |  |  |  |  | Carey Du Gray [50%] |  |  |
| 87 | 1.7.5 | HUD/Overlay Design |  | 2d | 2002-10-24 A | 2002-10-28 A | 86 | 100% |  |  |  |  | Carey Du Gray [18.8%] | 3h | 3h |
| 88 | 1.7.6 | FMV Design Revisions for cut Mini-Boss encounters | milestone | 0d? | 2002-10-28 A | 2002-10-28 A | 87 | 100% |  |  |  |  | Carey Du Gray [50%] |  |  |
| 89 | 1.7.7 | Presentation High-Level Design |  | 3d | 2002-10-29 A | 2002-11-01 | 88 | 50% | 1.5d | 176d | 0d |  | Carey Du Gray [50%] | 12h | 6h |
| 90 | 1.7.8 | Collectables Design |  | 1d? | 2002-11-01 | 2002-11-04 | 89 |  |  | 176d |  |  | Carey Du Gray [50%] | 4h |  |
| 91 | 1.7.9 | Collector Card High-Level Design |  | 3d | 2002-10-16 A | 2002-10-21 A |  | 100% |  |  |  | start no earlier than 2002-10-16 | Chris Mitchell [80%] | 19.2h | 19.2h |
| 92 | 1.7.10 | Collector Card Game Design |  | 3d | 2002-10-21 A | 2002-10-24 A | 91 | 100% |  |  |  |  | Chris Mitchell [80%] | 19.2h | 19.2h |
| 93 | 1.7.11 | AI Design for Collector Card Game |  | 2d | 2002-10-24 A | 2002-10-28 A | 92 | 100% |  |  |  |  | Chris Mitchell [80%] | 12.8h | 12.8h |
| 94 | 1.7.12 | 2D Brainstorming |  | 2d | 2002-10-28 A | 2002-10-30 A | 93 | 100% |  |  |  |  | Chris Mitchell [80%] | 12.8h | 12.8h |
| 95 | 1.7.13 | 2D Game Design |  | 4d | 2002-10-30 A | 2002-11-05 A | 94 | 100% |  |  |  |  | Chris Mitchell [80%] | 25.6h | 25.6h |

Notes:
- 59: All this stuff depends on the level being somewhat finalized.

| ID | WBS | Task | Type | Duration | Start | Finish | Predecessors | Complete | Remaining | Total slack | Free slack | Constraint | Resources | Work | Actual work |
| --- | --- | --- | --- | --- | --- | --- | --- | --- | --- | --- | --- | --- | --- | --- | --- |
| 96 | 1.7.14 | **Dialogue** |  | 11d | 2002-11-05 A | 2002-11-20 | 95 | 82% | 2d | 164d |  |  |  | 70.4h | 57.6h |
| 97 | 1.7.14.2 | Write Dialog for Driving Mini-Games |  | 2d | 2002-11-05 A | 2002-11-07 A |  | 100% |  |  |  |  | Chris Mitchell [80%] | 12.8h | 12.8h |
| 98 | 1.7.14.3 | Write Dialog for 2D Games |  | 2d | 2002-11-07 | 2002-11-11 | 97 |  |  | 171d |  |  | Chris Mitchell [80%] | 12.8h |  |
| 99 | 1.7.14.4 | Write Dialog for Collector Card Game |  | 2d | 2002-11-11 A | 2002-11-13 A | 98 | 100% |  |  |  |  | Chris Mitchell [80%] | 12.8h | 12.8h |
| 100 | 1.7.14.5 | Revise Dialog for Missions in Level 1 and 2 |  | 1d | 2002-11-13 A | 2002-11-14 A | 99 | 100% |  |  |  |  | Chris Mitchell [80%] | 6.4h | 6.4h |
| 101 | 1.7.14.6 | Revise Dialog for Mission in Level 3, 4, 5, 6 and 7 |  | 3d | 2002-11-14 A | 2002-11-19 A | 100 | 100% |  |  |  |  | Chris Mitchell [80%] | 19.2h | 19.2h |
| 102 | 1.7.14.7 | Revise Dialog for Boss Missions |  | 1d | 2002-11-19 A | 2002-11-20 A | 101 | 100% |  |  |  |  | Chris Mitchell [80%] | 6.4h | 6.4h |
| 103 | 1.7.15 | High-Level Design Revision for Driving Model |  | 3d | 2002-10-29 A | 2002-11-01 A | 85 | 100% |  |  |  |  | Joe McGinn [80%] | 19.2h | 19.2h |
| 104 | 1.7.16 | Tune Vehicle #1 (MS13) |  | 1.5d | 2002-11-01 A | 2002-11-04 A | 103 | 100% |  |  |  |  | Joe McGinn [80%] | 9.6h | 9.6h |
| 105 | 1.7.17 | Tune Vehicle #2 (MS13) | milestone | 0d | 2002-11-04 A | 2002-11-04 A | 104 | 100% |  |  |  |  | Jeff Plumley [80%] |  |  |
| 106 | 1.7.18 | Tune Vehicle #3 (MS13) | milestone | 0d | 2002-11-05 A | 2002-11-05 A | 105 | 100% |  |  |  |  | Jeff Plumley [80%] |  |  |
| 107 | 1.7.19 | Tune Vehicle #4 (MS13) |  | 0.5d | 2002-11-05 | 2002-11-05 | 106 |  |  | 167.1d | 0d |  | Jeff Plumley [80%] |  |  |
| 108 | 1.7.20 | Tune Vehicle #5 (MS13) |  | 0.5d | 2002-11-05 | 2002-11-06 | 107 |  |  | 167.1d | 0d |  | Jeff Plumley [80%] |  |  |
| 109 | 1.7.21 | Tune Vehicle #6 (MS13) |  | 0.5d | 2002-11-06 | 2002-11-06 | 108 |  |  | 167.1d | 0.5d |  | Jeff Plumley [80%] |  |  |
| 110 | 1.7.22 | High-Level Design Revisions to AI (MS13) |  | 3d | 2002-11-07 A | 2002-11-12 | 109 | 60% | 1.2d | 164.8d | 0d |  | Joe McGinn [80%] | 19.2h | 11.52h |
| 111 | 1.7.23 | Traffic AI Tuning (MS13) |  | 1d | 2002-11-12 | 2002-11-13 | 110 |  |  | 164.8d | 0d |  | Joe McGinn [80%] | 6.4h |  |
| 112 | 1.7.24 | Pedestrian AI Tuning |  | 1d | 2002-11-13 | 2002-11-14 | 111 |  |  | 164.8d | 0d |  | Joe McGinn [80%] | 6.4h |  |
| 113 | 1.7.25 | Racing AI Tuning (MS13) |  | 2d | 2002-11-14 | 2002-11-18 | 112 |  |  | 164.8d | 0d |  | Joe McGinn [80%] | 12.8h |  |
| 114 | 1.7.26 | Design Secondary Mission Objectives |  | 2d | 2002-11-18 A | 2002-11-20 | 113 | 40% | 1.2d | 164d |  |  | Joe McGinn [80%] | 12.8h | 5.12h |
| 115 | 1.7.27 | First High-Level Design Revisions to Seaside |  | 1d? | 2002-11-20 A | 2002-11-21 A | 114 | 100% |  |  |  |  | Joe McGinn [80%] | 6.4h | 6.4h |
| 116 | 1.7.28 | Revise Mission Design |  | 3d | 2002-11-21 A | 2002-11-26 A | 115 | 100% |  |  |  |  | Joe McGinn [80%] | 19.2h | 19.2h |
| 117 | 1.7.29 | Implement Level #2 -- Mission #1 - 7 |  | 3.5d | 2002-10-16 A | 2002-10-21 A |  | 100% |  |  |  | start no earlier than 2002-10-16 | Jason Bone [50%]; Chris Mitchell [50%] | 28h | 28h |
| 118 | 1.7.30 | Implement Level #3 -- Mission #1 |  | 2d | 2002-10-21 A | 2002-10-23 | 117 | 80% | 0.4d | 177.05d | 0d |  | Jason Bone [80%] | 12.8h | 10.24h |
| 119 | 1.7.31 | Implement Level #3 -- Mission #2 |  | 2d | 2002-10-23 A | 2002-10-25 | 118 | 50% | 1d | 176.05d | 0d |  | Jason Bone [80%] | 12.8h | 6.4h |
| 120 | 1.7.32 | Implement Level #3 -- Mission #3 |  | 1d | 2002-10-25 A | 2002-10-28 | 119 | 50% | 0.5d | 175.55d | 0d |  | Jason Bone [80%] | 6.4h | 3.2h |
| 121 | 1.7.33 | Implement Level #3 -- Mission #4 |  | 1d | 2002-10-28 A | 2002-10-29 | 120 | 50% | 0.5d | 175.05d | 0d |  | Jason Bone [80%] | 6.4h | 3.2h |
| 122 | 1.7.34 | Implement Level #3 -- Mission #5 |  | 1d | 2002-10-29 | 2002-10-30 | 121 |  |  | 175.05d | 0d |  | Jason Bone [80%] | 6.4h |  |
| 123 | 1.7.35 | Implement Level #3 -- Mission #6 |  | 0.5d | 2002-10-30 | 2002-10-31 | 122 |  |  | 175.05d | 0d |  | Jason Bone [80%] | 3.2h |  |
| 124 | 1.7.36 | Implement Level #3 -- Mission #7 |  | 0.5d | 2002-10-31 | 2002-10-31 | 123 |  |  | 175.05d | 0d |  | Jason Bone [80%] | 3.2h |  |
| 125 | 1.7.37 | Implement Level #4 -- Mission #1 - 7 |  | 3.5d | 2002-10-31 A | 2002-11-06 | 124 | 30% | 2.45d | 174d |  |  | Jason Bone [80%] | 22.4h | 6.72h |
| 126 | 1.7.38 | High-Level Design Revision to Jumping Puzzles |  | 3d | 2002-10-16 A | 2002-10-21 A |  | 100% |  |  |  | start no earlier than 2002-10-16 | Sheik Sahib [50%]; Carey Du Gray [50%] | 24h | 24h |
| 127 | 1.7.39 | Build Level #2 -- Jumping Puzzle #1 - 7 |  | 3.5d | 2002-10-21 A | 2002-10-24 | 126 | 90% | 0.35d | 174.03d | 0d |  | Sheik Sahib [80%] | 22.4h | 20.16h |
| 128 | 1.7.40 | Build Level #3 -- Jumping Puzzle #1 |  | 3.5d | 2002-10-24 A | 2002-10-30 | 127 | 15% | 2.98d | 173.5d | 0d |  | Sheik Sahib [80%] | 22.4h | 3.36h |
| 129 | 1.7.41 | Build Level #4 -- Jumping Puzzle #1 |  | 3.5d | 2002-10-30 | 2002-11-04 | 128 |  |  | 173.5d | 0d |  | Sheik Sahib [80%] | 22.4h |  |
| 130 | 1.7.42 | Build Revised Mini-Boss Jumping Puzzle #1 |  | 2d | 2002-11-04 | 2002-11-06 | 129 |  |  | 173.5d |  |  | Sheik Sahib [80%] | 12.8h |  |
| 131 | 1.7.43 | Design Revision to Special Effects |  | 2d | 2002-11-04 A | 2002-11-06 A | 90 | 100% |  |  |  |  | Carey Du Gray [50%] | 8h | 8h |
| 132 | 1.7.44 | Design New Vehicles |  | 2d | 2002-11-06 A | 2002-11-08 A | 131 | 100% |  |  |  |  | Carey Du Gray [50%] | 8h | 8h |
| 133 | 1.7.45 | Design Alternate Clothing |  | 2d | 2002-11-08 A | 2002-11-12 A | 132 | 100% |  |  |  |  | Carey Du Gray [50%] | 8h | 8h |
| 134 | 1.7.46 | Traffic Placement -- Level #2 |  | 2d | 2002-11-06 A | 2002-11-08 A | 130 | 100% |  |  |  |  | Sheik Sahib [80%] | 12.8h | 12.8h |
| 135 | 1.7.47 | Traffic Placement -- Level #3 |  | 2d | 2002-11-08 A | 2002-11-12 | 134 | 90% | 0.2d | 167.5d | 0d |  | Sheik Sahib [80%] | 12.8h | 11.52h |
| 136 | 1.7.48 | Traffic Placement -- Level #4 |  | 2d | 2002-11-12 | 2002-11-14 | 135 |  |  | 167.5d |  |  | Sheik Sahib [80%] | 12.8h |  |
| 137 | 1.7.49 | Pedestrian Placement -- Level #1 |  | 1d | 2002-11-14 A | 2002-11-15 A | 136 | 100% |  |  |  |  | Sheik Sahib [80%] | 6.4h | 6.4h |
| 138 | 1.7.50 | Pedestrian Placement -- Level #2 |  | 1d | 2002-11-15 A | 2002-11-18 A | 137 | 100% |  |  |  |  | Sheik Sahib [80%] | 6.4h | 6.4h |
| 139 | 1.7.51 | Pedestrian Placement -- Level #3 |  | 1d | 2002-11-18 | 2002-11-19 | 138 |  |  | 164.5d |  |  | Sheik Sahib [80%] | 6.4h |  |
| 140 | 1.7.52 | Food Placement -- Level #1 |  | 0.5d | 2002-11-19 A | 2002-11-20 A | 139 | 100% |  |  |  |  | Sheik Sahib [80%] | 3.2h | 3.2h |
| 141 | 1.7.53 | Food Placement -- Level #2 |  | 0.5d | 2002-11-20 A | 2002-11-20 A | 140 | 100% |  |  |  |  | Sheik Sahib [80%] | 3.2h | 3.2h |
| 142 | 1.7.54 | Food Placement -- Level #3 |  | 0.5d | 2002-11-20 A | 2002-11-21 A | 141 | 100% |  |  |  |  | Sheik Sahib [80%] | 3.2h | 3.2h |
| 143 | 1.7.55 | Camera Placement -- Level #1 |  | 1d | 2002-11-21 | 2002-11-22 | 142 |  |  | 156.55d | 0d |  | Sheik Sahib [80%] | 6.4h |  |
| 144 | 1.7.56 | Camera Placement -- Level #2 |  | 1d | 2002-11-22 | 2002-11-25 | 143 |  |  | 156.55d | 0d |  | Sheik Sahib [80%] | 6.4h |  |
| 145 | 1.7.57 | Camera Placement -- Level #3 |  | 1d | 2002-11-25 | 2002-11-26 | 144 |  |  | 156.55d | 0d |  | Sheik Sahib [80%] | 6.4h |  |
| 146 | 1.7.58 | Special Collectable Placement -- Level #1 |  | 1d | 2002-11-26 | 2002-11-27 | 145 |  |  | 156.55d | 0d |  | Sheik Sahib [80%] | 6.4h |  |
| 147 | 1.7.59 | Special Collectable Placement -- Level #2 |  | 1d | 2002-11-27 A | 2002-11-28 | 146 | 90% | 0.1d | 155.65d | 0d |  | Sheik Sahib [80%] | 6.4h | 5.76h |
| 148 | 1.7.60 | Special Collectable Placement -- Level #3 |  | 1d | 2002-11-28 A | 2002-11-29 | 147 | 15% | 0.85d | 155.5d | 0d |  | Sheik Sahib [80%] | 6.4h | 0.96h |
| 149 | 1.7.61 | On-Foot Camera Tuning -- Level #1 |  | 0.5d | 2002-11-29 | 2002-11-29 | 148 |  |  | 155.5d | 0d |  | Sheik Sahib [80%] | 3.2h |  |
| 150 | 1.7.62 | On-Foot Camera Tuning -- Level #2 |  | 0.5d | 2002-11-29 | 2002-12-02 | 149 |  |  | 155.5d | 0d |  | Sheik Sahib [80%] | 3.2h |  |
| 151 | 1.7.63 | On-Foot Camera Tuning -- Level #3 |  | 0.5d | 2002-12-02 | 2002-12-02 | 150 |  |  | 155.5d |  |  | Sheik Sahib [80%] | 3.2h |  |
| 152 | 1.7.64 | Driving Gameplay Camera Design |  | 1d? | 2002-11-26 | 2002-11-27 | 116 |  |  | 158d | 0d |  | Joe McGinn [80%] | 6.4h |  |
| 153 | 1.7.65 | Driving Gameplay Camera Tuning Template |  | 1d? | 2002-11-27 | 2002-11-28 | 152 |  |  | 158d |  |  | Joe McGinn [80%] | 6.4h |  |
| 154 | 1.7.66 | Presentation Camera Design |  | 1d? | 2002-11-12 | 2002-11-13 | 133 |  |  | 169d |  |  | Carey Du Gray [50%] | 4h |  |

Notes:
- 105: Joe McGinn (Thu 07/11/02): not my task - Jeff Plumley's / Jeff Plumley (Tue 12/11/02): ==== Published to Microsoft Project server by Wolfgang Hamann on 11/11/02 1:19 PM ===== / Joe McGinn (Thu 07/11/02): not my task - Jeff Plumley's
- 106: Joe McGinn (Thu 07/11/02): not my task - Jeff Plumley's / Jeff Plumley (Tue 12/11/02): ==== Published to Microsoft Project server by Wolfgang Hamann on 11/11/02 1:19 PM ===== / Joe McGinn (Thu 07/11/02): not my task - Jeff Plumley's
- 107: Joe McGinn (Thu 07/11/02): not my task - Jeff Plumley's / Jeff Plumley (Tue 12/11/02): ==== Published to Microsoft Project server by Wolfgang Hamann on 11/11/02 1:19 PM ===== / Joe McGinn (Thu 07/11/02): not my task - Jeff Plumley's
- 108: Joe McGinn (Thu 07/11/02): not my task - Jeff Plumley's / Jeff Plumley (Tue 12/11/02): ==== Published to Microsoft Project server by Wolfgang Hamann on 11/11/02 1:19 PM ===== / Joe McGinn (Thu 07/11/02): not my task - Jeff Plumley's
- 109: Joe McGinn (Thu 07/11/02): not my task - Jeff Plumley's / Jeff Plumley (Tue 12/11/02): ==== Published to Microsoft Project server by Wolfgang Hamann on 11/11/02 1:19 PM ===== / Joe McGinn (Thu 07/11/02): not my task - Jeff Plumley's

| ID | WBS | Task | Duration | Start | Finish | Predecessors | Complete | Remaining | Total slack | Free slack | Constraint | Resources | Work | Actual work |
| --- | --- | --- | --- | --- | --- | --- | --- | --- | --- | --- | --- | --- | --- | --- |
| 155 | 8 | **Milestone 14 (Dec 15th)** | 154d? | 2002-04-16 | 2002-11-19 |  |  |  | 165d |  |  |  | 560h |  |
| 163 | 1.8.1 | Dialogue Piping & Event Creation | 1d | 2002-11-18 | 2002-11-19 |  |  |  | 165d |  | start no earlier than 2002-11-18 | Chris Mitchell | 8h |  |
| 174 | 1.8.2 | Dialogue Piping & Event Creation | 1d? | 2002-11-18 | 2002-11-19 |  |  |  | 165d |  | start no earlier than 2002-11-18 | Darren Evenson | 8h |  |
| 228 | 9 | Milestone 15 - Alpha (Jan 15th) | 1d? | 2002-04-16 | 2002-04-17 |  |  |  | 317d |  |  |  |  |  |
| 229 | 9 | Milestone 16 - (Feb 15th) | 1d? | 2002-04-16 | 2002-04-17 |  |  |  | 317d |  |  |  |  |  |
| 230 | 9 | Milestone 17 - (March 15th) | 1d? | 2002-04-16 | 2002-04-17 |  |  |  | 317d |  |  |  |  |  |
| 231 | 1.12 | Milestone 18 - (April 15th) | 1d? | 2003-01-22 | 2003-01-22 |  |  |  | 117.12d |  | start no earlier than 2003-01-22 |  |  |  |
| 232 | 1.13 | Milestone 19 - (May 15th) | 1d? | 2003-01-22 | 2003-01-22 |  |  |  | 117.12d |  | start no earlier than 2003-01-22 |  |  |  |
| 233 | 1.14 | Milestone 20 - (June 15th) | 1d? | 2003-01-22 | 2003-01-22 |  |  |  | 117.12d |  | start no earlier than 2003-01-22 |  |  |  |
| 236 | 10 | **ART TASKS** | 280d? | 2002-04-16 A | 2003-05-12 |  | 18% | 229.31d? | 39d |  |  |  | 7150h | 1911.75h |
| 237 | 11 | **Milestone 7 (May 15th)** | 21d | 2002-04-16 A | 2002-05-15 |  | 55% | 9.54d | 298d |  |  |  | 1018h | 531.2h |
| 238 | 11.1 | Preliminary FE Concept Design | 21d | 2002-04-16 | 2002-05-15 |  |  |  | 298d |  |  | Yayoi Maruno [25%] | 42h |  |
| 239 | 11.2 | **World Building** | 20d | 2002-04-16 A | 2002-05-14 |  | 54% | 9.2d | 299d |  |  |  | 640h | 254.4h |
| 240 | 11.2.1 | **Level 3-Design & Preliminary Construction** | 10d | 2002-04-16 A | 2002-04-30 |  | 73% | 2.7d | 309d |  |  |  | 320h | 226.4h |
| 241 | 11.2.1.1 | Landmarks (Block out) | 4d | 2002-04-16 A | 2002-04-22 A |  | 100% |  |  |  |  | Jeff Pidsadny [50%]; Kevin Fink; Trevor Lim; Vincent Chin | 112h | 112h |
| 242 | 11.2.1.2 | Landmarks (1st textures) | 3d | 2002-04-22 A | 2002-04-25 | 241 | 25% | 2.25d | 301.25d | 0d |  | Jeff Pidsadny [50%]; Kevin Fink; Trevor Lim; Vincent Chin | 84h | 21h |
| 243 | 11.2.1.3 | Props | 3d | 2002-04-25 A | 2002-04-30 | 242 | 75% | 0.75d | 299d | 0d |  | Jeff Pidsadny [50%]; Kevin Fink; Trevor Lim; Vincent Chin | 84h | 63h |
| 244 | 11.2.1.4 | Track (diagram/plan) | 3d | 2002-04-16 A | 2002-04-19 A |  | 100% |  |  |  |  | Jeff Pidsadny [50%] | 12h | 12h |
| 245 | 11.2.1.5 | Track (initial layout) | 4d | 2002-04-19 A | 2002-04-25 A | 244 | 100% |  |  |  |  | Jeff Pidsadny [50%] | 16h | 16h |
| 246 | 11.2.1.6 | Track (revision/1st pass) | 3d | 2002-04-25 A | 2002-04-30 | 245 | 20% | 2.4d | 309d |  |  | Jeff Pidsadny [50%] | 12h | 2.4h |
| 247 | 11.2.2 | **Level 4-Design & Preliminary Construction** | 10d | 2002-04-30 A | 2002-05-14 |  | 35% | 6.5d | 299d |  |  |  | 320h | 28h |
| 248 | 11.2.2.1 | Landmarks (Block out) | 4d | 2002-04-30 | 2002-05-06 | 243 |  |  | 299d | 0d |  | Jeff Pidsadny [50%]; Kevin Fink; Trevor Lim; Vincent Chin | 112h |  |
| 249 | 11.2.2.2 | Landmarks (1st textures) | 3d | 2002-05-06 | 2002-05-09 | 248 |  |  | 299d | 0d |  | Jeff Pidsadny [50%]; Kevin Fink; Trevor Lim; Vincent Chin | 84h |  |
| 250 | 11.2.2.3 | Props | 3d | 2002-05-09 | 2002-05-14 | 249 |  |  | 299d |  |  | Jeff Pidsadny [50%]; Kevin Fink; Trevor Lim; Vincent Chin | 84h |  |
| 251 | 11.2.2.4 | Track (diagram/plan) | 3d | 2002-04-30 A | 2002-05-03 A | 246 | 100% |  |  |  |  | Jeff Pidsadny [50%] | 12h | 12h |
| 252 | 11.2.2.5 | Track (initial layout) | 4d | 2002-05-03 A | 2002-05-09 A | 251 | 100% |  |  |  |  | Jeff Pidsadny [50%] | 16h | 16h |
| 253 | 11.2.2.6 | Track (revision/1st pass) | 3d | 2002-05-09 | 2002-05-14 | 252 |  |  | 299d |  |  | Jeff Pidsadny [50%] | 12h |  |

Notes:
- 155: Milestone 14 Build Features / Art Cutoff: December 6 / CD delivery date: December 13 / Sony Performance Analyzer run: early December (tentative) / ·Level Art / oSpecial effects for Seaside complete / oOcean effect for Seaside complete / oSuburbs and Downtown interiors completed / §3 for Suburbs / §2 for Downtown / oSuburbs level completed with all level re-design changes made / oPolishing on Downtown and Seaside levels / ·FMV pipeline for all 6 SKUs complete / ·6 generic pedestrians modeled / ·Final logo FMVs for all 6 SKUs in the game / ·FMV #6, #7 animatic complete / ·Terrain tagging in and all art complete / ·All effects that use terrain tagging complete / oSound effects / oSkid marks / oParticle effects / oTerrain specific friction / oTerrain specific controller rumble / ·Can play the game with accessories: / oGameCube steering wheel / oGameCube Wavebird / oGameboy Advance as a controller / oLogitech PS2 steering wheel / ·Continuation of work on FMV #1 through #5 / ·Iris transition for interiors complete and in all interiors / ·Interior special gag demonstration camera working on for the Kwik-E-Mart / ·Can have conversations in interiors / ·Can trigger interactive gags in interiors and exteriors / ·Secondary mission objectives working in the game / ·Bonus missions working in the game / ·Can select and play unlocked movies from the front end / ·Phone booth re-design complete / oCan select all available cars / oCan select all available clothing / ·End credits fully designed and partially implemented / ·Code for randomized load of generic pedestrians working / ·HUD re-design complete / ·All 2D collector card art complete / ·All breakable cameras placed in all levels / ·All collector cards placed in levels 2, 3, 5 and 6 / ·Presentation flow re-design complete / oMission start / oMission finish / oStreet races / oBonus missions / oRewards / ·Level load newspaper screens complete / ·Generic load screen (game to front end) complete / ·All missions implemented and present in the game / ·All bonus vehicles complete and in the game / ·All bonus character skins complete / ·All generic pedestrian models and animations complete / ·All Halloween specific design requirements complete / ·All Halloween specific characters complete / ·All areas causing problematic camera collisions identified and replaced with rail cameras as appropriate / ·Rumble on controllers implemented and tuned according to ground surface, collision strength, etc. / ·Load cancels working correctly / ·Support for turning off environmental maps (or changing to an alternate map) in interiors, tunnels, etc. / ·Shadow volumes for tunnels, interiors, etc. / ·Object fade-in effect incorporated into the game where needed / ·Shadow volume and environmental mapping switches working for covered areas in the world / ·Half of all interactive gags working in the game with animations and placeholder audio / ·All randomized textures (e.g. billboards) finalized and in the game / ·All memory card screens complete / ·Street race missions working / ·Final in-car camera tuning for Homer, Bart, Lisa walker cars / ·All reward systems designed, implemented and integrated with gameplay / ·World geometry auto-optimize step integrated into art pipeline / ·Mipmap levels tuned on PS2 / ·Boulevard heaps integrated into dynamic loading system / ·Language auto-select / language select working in PAL build on all 3 platforms / ·Positional sounds working in the game / ·Sounds attached to moving objects working / ·Triggers for ambient sounds working / ·Car engine sound code finalized / ·First-pass mission music in the game / ·First-pass location based sounds in the game / ·Some final ambient sounds in the game / Switch to different music when in interiors working

| ID | WBS | Task | Duration | Start | Finish | Predecessors | Complete | Remaining | Total slack | Constraint | Resources | Work | Actual work |
| --- | --- | --- | --- | --- | --- | --- | --- | --- | --- | --- | --- | --- | --- |
| 254 | 11.3 | **Characters** | 21d | 2002-04-16 A | 2002-05-15 |  | 89% | 2.4d | 298d |  |  | 168h | 148.8h |
| 255 | 11.3.1 | 8 Redo Characters w/ LOD's | 15d | 2002-04-16 A | 2002-05-07 A |  | 100% |  |  |  | Aryan Hanbeck | 120h | 120h |
| 256 | 11.3.2 | Redo Skeletons on 8 main and 8 redo characters. | 6d | 2002-05-07 A | 2002-05-15 | 255 | 60% | 2.4d | 298d |  | Aryan Hanbeck | 48h | 28.8h |
| 257 | 11.4 | **Animations** | 21d | 2002-04-16 A | 2002-05-15 |  | 76% | 5d | 298d |  |  | 168h | 128h |
| 258 | 11.4.1 | E3 Promo Demo | 11d | 2002-04-16 A | 2002-05-01 A |  | 100% |  |  |  | Jeremy Mesana | 88h | 88h |
| 259 | 11.4.2 | All Animations for 1 Walker | 10d | 2002-05-01 A | 2002-05-15 | 258 | 50% | 5d | 298d |  | Jeremy Mesana | 80h | 40h |
| 260 | 12 | **Milestone 8 (June 15th)** | 43d? | 2002-04-16 | 2002-06-17 |  |  |  | 276d |  |  | 752h |  |
| 261 | 12.1 | FE Concept Design (1st pass) | 20d | 2002-05-16 | 2002-06-14 |  |  |  | 277d | start no earlier than 2002-05-16 | Yayoi Maruno [25%] | 40h |  |
| 262 | 12.2 | Final art design | 20d | 2002-05-16 | 2002-06-14 |  |  |  | 277d | start no earlier than 2002-05-16 | Yayoi Maruno [25%] | 40h |  |
| 263 | 12.3 | **World Building** | 1d? | 2002-04-16 | 2002-04-17 |  |  |  | 318d |  |  |  |  |
| 264 | 12.3.1 | Level 4 - 1st Pass | 1d? | 2002-04-16 | 2002-04-17 |  |  |  | 317d |  |  |  |  |
| 265 | 12.3.2 | Level 3 - 1st Pass | 1d? | 2002-04-16 | 2002-04-17 |  |  |  | 317d |  |  |  |  |
| 266 | 12.4 | **Characters** | 21d | 2002-05-16 | 2002-06-17 |  |  |  | 276d |  |  | 168h |  |
| 267 | 12.4.1 | 4 New Characters w/ LOD's | 21d | 2002-05-16 | 2002-06-17 |  |  |  | 276d | start no earlier than 2002-05-16 | Aryan Hanbeck | 168h |  |
| 268 | 12.5 | **Vehicles** | 21d | 2002-05-16 | 2002-06-17 |  |  |  | 276d |  |  | 168h |  |
| 269 | 12.5.1 | 4 Main Vehicles | 21d | 2002-05-16 | 2002-06-17 |  |  |  | 276d | start no earlier than 2002-05-16 | Kevin Fink | 168h |  |
| 270 | 12.6 | **Animations** | 21d | 2002-05-16 | 2002-06-17 |  |  |  | 276d |  |  | 336h |  |
| 271 | 12.6.1 | All Animations for 3 or 4 Walkers | 21d | 2002-05-16 | 2002-06-17 |  |  |  | 276d | start no earlier than 2002-05-16 | Jeremy Mesana; Trevor Lim | 336h |  |
| 272 | 12.7 | FMV Storyboards Complete | 21d | 2002-05-16 | 2002-06-17 |  |  |  | 275d | start no earlier than 2002-05-16 |  |  |  |
| 273 | 13 | **Milestone 9 (July 15th)** | 1d? | 2002-04-16 | 2002-04-17 |  |  |  | 318d |  |  |  |  |
| 274 | 13.1 | Level 3 & 4 - 1st Pass | 1d? | 2002-04-16 | 2002-04-17 |  |  |  | 317d |  |  |  |  |
| 275 | 13.2 | 8 FMV Characters | 1d? | 2002-04-16 | 2002-04-17 |  |  |  | 317d |  |  |  |  |
| 276 | 13.3 | 8 Main Vehicles | 1d? | 2002-04-16 | 2002-04-17 |  |  |  | 317d |  |  |  |  |
| 277 | 13.4 | All Animations for 2 Walkers | 1d? | 2002-04-16 | 2002-04-17 |  |  |  | 317d |  |  |  |  |
| 278 | 13.5 | All Driver Animations for 5 body types | 1d? | 2002-04-16 | 2002-04-17 |  |  |  | 317d |  |  |  |  |
| 279 | 13.6 | All passenger animations for 3 body types | 1d? | 2002-04-16 | 2002-04-17 |  |  |  | 317d |  |  |  |  |
| 280 | 13.7 | HUD Design Concepts | 1d? | 2002-04-16 | 2002-04-17 |  |  |  | 317d |  |  |  |  |

| ID | WBS | Task | Duration | Start | Finish | Predecessors | Complete | Remaining | Total slack | Free slack | Constraint | Resources | Work | Actual work |
| --- | --- | --- | --- | --- | --- | --- | --- | --- | --- | --- | --- | --- | --- | --- |
| 281 | 14 | **Milestone 10 (Aug 15th)** | 1d? | 2002-04-16 | 2002-04-17 |  |  |  | 318d |  |  |  |  |  |
| 282 | 14.1 | Levels 1 & 2 - 2nd Pass (send to FOX for Art Review) | 1d? | 2002-04-16 | 2002-04-17 |  |  |  | 317d |  |  |  |  |  |
| 283 | 14.2 | 6 New Characters w/ LOD's | 1d? | 2002-04-16 | 2002-04-17 |  |  |  | 317d |  |  |  |  |  |
| 284 | 14.3 | 4 FMV Characters | 1d? | 2002-04-16 | 2002-04-17 |  |  |  | 317d |  |  |  |  |  |
| 285 | 14.4 | All Boss Animations | 1d? | 2002-04-16 | 2002-04-17 |  |  |  | 317d |  |  |  |  |  |
| 286 | 14.5 | All Passenger Animations for 2 body types | 1d? | 2002-04-16 | 2002-04-17 |  |  |  | 317d |  |  |  |  |  |
| 287 | 14.6 | All pedestrian aninmations for 5 body types | 1d? | 2002-04-16 | 2002-04-17 |  |  |  | 317d |  |  |  |  |  |
| 288 | 14.7 | FMV/NIS Modeling (1 week per 4 modelers) | 1d? | 2002-04-16 | 2002-04-17 |  |  |  | 317d |  |  |  |  |  |
| 289 | 14.8 | Start FMV's/NIS's | 1d? | 2002-04-16 | 2002-04-17 |  |  |  | 317d |  |  |  |  |  |
| 290 | 14.9 | <New Animator #2> | 1d? | 2002-04-16 | 2002-04-17 |  |  |  | 317d |  |  |  |  |  |
| 291 | 15 | **Milestone 11 (Sep 15th)** | 1d? | 2002-04-16 | 2002-04-17 |  |  |  | 318d |  |  |  |  |  |
| 292 | 15.1 | Levels 3 & 4 - 2nd Pass | 1d? | 2002-04-16 | 2002-04-17 |  |  |  | 317d |  |  |  |  |  |
| 293 | 15.2 | 6 New Characters w/ LOD's | 1d? | 2002-04-16 | 2002-04-17 |  |  |  | 317d |  |  |  |  |  |
| 294 | 15.3 | 4 Redo Characters | 1d? | 2002-04-16 | 2002-04-17 |  |  |  | 317d |  |  |  |  |  |
| 295 | 15.4 | FMV/NIS Modeling (1 week per 4 modelers) | 1d? | 2002-04-16 | 2002-04-17 |  |  |  | 317d |  |  |  |  |  |
| 296 | 15.5 | HUD Implementation Complete | 1d? | 2002-04-16 | 2002-04-17 |  |  |  | 317d |  |  |  |  |  |
| 297 | 15.6 | SFX Completed | 1d? | 2002-04-16 | 2002-04-17 |  |  |  | 317d |  |  |  |  |  |
| 298 | 2.6 | **Milestone 12 (Oct 15th)** | 131d? | 2002-04-16 A | 2002-10-17 |  | 20% | 104.3d? | 188d |  |  |  | 992h | 233.59h |
| 299 | 2.6.1 | **Special FX (*this area of the game needs a lot of time and attention and close one on one tech support)** | 23d? | 2002-09-16 A | 2002-10-17 |  | 40% | 13.75d? | 188d |  |  |  | 280h | 117.75h |
| 300 | 2.6.1.1 | **Mission presentation elements:** | 14d? | 2002-09-16 A | 2002-10-04 |  | 42% | 8.13d? | 197d |  |  | Aryan Hanbeck | 216h | 90.55h |
| 301 | 2.6.1.1.1 | Some sort of special effect to draw attention better overall for all icons. | 1d? | 2002-09-16 A | 2002-09-17 |  | 75% | 0.25d? | 206.75d | 0d | start no earlier than 2002-09-16 | Aryan Hanbeck | 8h | 6h |
| 302 | 2.6.1.1.2 | Get mission detail icon | 1d? | 2002-09-17 A | 2002-09-18 | 301 | 75% | 0.25d? | 206d | 0d |  | Aryan Hanbeck | 8h | 6h |
| 303 | 2.6.1.1.3 | Present icon | 1d? | 2002-09-18 A | 2002-09-19 | 302 | 75% | 0.25d? | 205.25d | 0d |  | Aryan Hanbeck | 8h | 6h |
| 304 | 2.6.1.1.4 | Ai chase vehicle icon | 1d? | 2002-09-19 A | 2002-09-20 | 303 | 75% | 0.25d? | 204.5d | 1d |  | Aryan Hanbeck | 8h | 6h |
| 305 | 16.1.1.6 | Power couplings need electrical field effect | 1d? | 2002-09-23 A | 2002-09-24 | 304 | 50% | 0.5d? | 203d | 0d |  | Aryan Hanbeck | 8h | 4h |
| 306 | 16.1.1.7 | Food collectible icon | 1d? | 2002-09-24 | 2002-09-25 | 305 |  |  | 203d | 0d |  | Aryan Hanbeck | 8h |  |
| 307 | 16.1.1.8 | Button pressing flashy effect | 1d? | 2002-09-25 | 2002-09-26 | 306 |  |  | 203d |  |  | Aryan Hanbeck | 8h |  |
| 308 | 16.1.1.9 | Collector card glowing icon and getting it icon | 1d? | 2002-09-26 A | 2002-09-27 A | 307 | 100% |  |  |  |  | Aryan Hanbeck | 8h | 8h |
| 309 | 16.1.1.10 | Destroy particle effect for Video game cargo | 1d? | 2002-09-27 A | 2002-09-30 | 308 | 95% | 0.05d? | 1d | 0d |  | Aryan Hanbeck | 8h | 7.6h |
| 310 | 16.1.1.11 | After effect for collecting Mission icon | 1d? | 2002-09-30 | 2002-10-01 | 309 |  |  | 1d | 0d |  | Aryan Hanbeck | 8h |  |
| 311 | 16.1.1.12 | After effect for collecting food icons | 1d? | 2002-10-01 | 2002-10-02 | 310 |  |  | 1d | 0d |  | Aryan Hanbeck | 8h |  |
| 312 | 16.1.1.13 | Hud icons for food, mission collectibles and collector card (animations too) | 1d? | 2002-10-02 | 2002-10-03 | 311 |  |  | 1d | 0d |  | Aryan Hanbeck | 8h |  |
| 313 | 16.1.1.14 | Boss Arena ! - Textured & Modeled | 1d? | 2002-10-03 | 2002-10-04 | 312 |  |  | 1d | 0d |  | Kevin Fink | 8h |  |

Notes:
- 302: exclamation mark
- 305: won't get done unless travis' replacement can get Aryan up and running
- 307: power plant is holding Aryan up: these are on the vending machines in the power plant
- 308: not in due to Travis' replacement
- 309: art is done, waiting on coders
- 310: will get in for the 18th. Art will be done, ? implemention wrt code?
- 311: will probably move to next ms
- 312: next ms
- 313: ? may not get done?

| ID | WBS | Task | Duration | Start | Finish | Predecessors | Complete | Remaining | Total slack | Free slack | Constraint | Resources | Work | Actual work |
| --- | --- | --- | --- | --- | --- | --- | --- | --- | --- | --- | --- | --- | --- | --- |
| 314 | 2.6.1.2 | **Interior indicator (player needs visual to get into interior)** | 9d? | 2002-10-04 A | 2002-10-17 | 313 | 38% | 5.6d? | 188d |  |  |  | 64h | 27.2h |
| 315 | 2.6.1.2.1 | Water Special FX animation | 1d? | 2002-10-04 | 2002-10-07 |  |  |  | 196d |  |  | Aryan Hanbeck [50%]; Elliott Roessler [50%] | 8h |  |
| 316 | 2.6.1.2.2 | Small tree breakable effect. | 1d? | 2002-10-07 A | 2002-10-08 A | 315 | 100% |  |  |  |  | Aryan Hanbeck [50%]; Elliott Roessler [50%] | 8h | 8h |
| 317 | 2.6.1.2.3 | Power coupling effect in and working to iterate | 1d? | 2002-10-08 | 2002-10-09 | 316 |  |  | 194d |  |  | Aryan Hanbeck [50%]; Elliott Roessler [50%] | 8h |  |
| 318 | 2.6.1.2.4 | Bush particles | 1d? | 2002-10-09 A | 2002-10-10 A | 317 | 100% |  |  |  |  | Aryan Hanbeck [50%]; Elliott Roessler [50%] | 8h | 8h |
| 319 | 2.6.1.2.5 | Big tree particles and possible camera shake | 1d? | 2002-10-10 A | 2002-10-11 | 318 | 50% | 0.5d? | 188.9d | 0d |  | Aryan Hanbeck [50%]; Elliott Roessler [50%] | 8h | 4h |
| 320 | 2.6.1.2.6 | Refinement on spark effect (may need two variations) soft and hard hits | 1d? | 2002-10-11 A | 2002-10-14 | 319 | 90% | 0.1d? | 188d | 0d |  | Aryan Hanbeck [50%]; Elliott Roessler [50%] | 8h | 7.2h |
| 321 | 2.6.1.2.7 | Nuclear glow bubbles rising particle effect in powerplant | 1d? | 2002-10-14 | 2002-10-15 | 320 |  |  | 188d | 0d |  | Aryan Hanbeck [50%]; Elliott Roessler [50%] | 8h |  |
| 322 | 2.6.1.2.8 | Other ambient animations to be determined (to review game) | 1d? | 2002-10-15 | 2002-10-16 | 321 |  |  | 187d | 0d |  |  |  |  |
| 323 | 2.6.1.2.9 | Boss arena effects: Need to confirm a list | 1d? | 2002-10-16 | 2002-10-17 | 322 |  |  | 188d |  |  | Aryan Hanbeck [50%]; Elliott Roessler [50%] | 8h |  |
| 324 | 2.6.2 | **Downtown Level:** | 17d? | 2002-09-16 A | 2002-10-09 |  | 11% | 15.05d? | 194d |  |  |  | 184h | 31.2h |
| 325 | 2.6.2.1 | All geometry, tracks, and final textures completed | 1d? | 2002-09-16 A | 2002-09-17 |  | 60% | 0.4d? | 195.35d | 0d | start no earlier than 2002-09-16 | Jeff Pidsadny; Sarah Meagher [25%]; Vincent Chin [25%]; Sanela Mickovic [25%]; Ross Young [25%] | 16h | 9.6h |
| 326 | 2.6.2.2 | All collision volumes in place | 1d? | 2002-09-17 A | 2002-09-18 | 325 | 5% | 0.95d? | 195.3d | 0d |  | Jeff Pidsadny; Sarah Meagher [25%]; Vincent Chin [25%]; Sanela Mickovic [25%]; Ross Young [25%] | 16h | 0.8h |
| 327 | 2.6.2.3 | All moveable objects in place | 1d? | 2002-09-18 A | 2002-09-19 | 326 | 5% | 0.95d? | 195.25d | 0d |  | Jeff Pidsadny; Sarah Meagher [25%]; Vincent Chin [25%]; Sanela Mickovic [25%]; Ross Young [25%] | 16h | 0.8h |
| 328 | 2.6.2.4 | All breakable object in place (Need tech implementation ASAP) | 1d? | 2002-09-19 A | 2002-09-20 | 327 | 5% | 0.95d? | 195.2d | 0d |  | Jeff Pidsadny; Sarah Meagher [25%]; Vincent Chin [25%]; Sanela Mickovic [25%]; Ross Young [25%] | 16h | 0.8h |
| 329 | 2.6.2.5 | Geometry optimization step complete (all geometry at final poly count) | 1d? | 2002-09-20 | 2002-09-23 | 328 |  |  | 195.2d | 0d |  | Jeff Pidsadny; Sarah Meagher [25%]; Vincent Chin [25%]; Sanela Mickovic [25%]; Ross Young [25%] | 16h |  |
| 330 | 2.6.2.6 | 3 interiors in the level: | 1d? | 2002-09-23 | 2002-09-24 | 329 |  |  | 195.2d | 0d |  | Eric Madill | 8h |  |
| 331 | 2.6.2.7 | Final geometry, collisions, and character animations | 1d? | 2002-09-24 | 2002-09-25 | 330 |  |  | 194.2d | 0d |  |  |  |  |
| 332 | 2.6.2.8 | Final textures | 1d? | 2002-09-25 A | 2002-09-26 | 331 | 85% | 0.15d? | 194.35d | 0d |  | Jeff Pidsadny; Sarah Meagher [25%]; Vincent Chin [25%]; Sanela Mickovic [25%]; Ross Young [25%] | 16h | 13.6h |
| 333 | 2.6.2.9 | Lighting and light maps | 1d? | 2002-09-26 A | 2002-09-27 | 332 | 15% | 0.85d? | 194.2d | 0d |  | Jeff Pidsadny; Sarah Meagher [25%]; Vincent Chin [25%]; Sanela Mickovic [25%]; Ross Young [25%] | 16h | 2.4h |
| 334 | 2.6.2.10 | Camera placement | 1d? | 2002-09-27 | 2002-09-30 | 333 |  |  | 193.2d | 0d |  |  |  |  |
| 335 | 2.6.2.11 | All hailing points (phone booths and bus stops) modelled and placed | 1d? | 2002-09-30 | 2002-10-01 | 334 |  |  | 194.2d | 0d |  | Jeff Pidsadny; Sarah Meagher [25%]; Vincent Chin [25%]; Sanela Mickovic [25%]; Ross Young [25%] | 16h |  |
| 336 | 2.6.2.12 | All local world spheres completed | 1d? | 2002-10-01 A | 2002-10-02 | 335 | 20% | 0.8d? | 194d | 0d |  | Jeff Pidsadny; Sarah Meagher [25%]; Vincent Chin [25%]; Sanela Mickovic [25%]; Ross Young [25%] | 16h | 3.2h |
| 337 | 2.6.2.13 | All collectible cards placed in the level | 1d? | 2002-10-02 | 2002-10-03 | 336 |  |  | 193d | 0d |  |  |  |  |
| 338 | 2.6.2.14 | All food icons placed in the level | 1d? | 2002-10-03 | 2002-10-04 | 337 |  |  | 193d | 0d |  |  |  |  |
| 339 | 2.6.2.15 | All destructible cameras placed in the level | 1d? | 2002-10-04 | 2002-10-07 | 338 |  |  | 193d | 0d |  |  |  |  |
| 340 | 2.6.2.16 | All death volumes placed in the level | 1d? | 2002-10-07 | 2002-10-08 | 339 |  |  | 194d | 0d |  | Jeff Pidsadny; Sarah Meagher [25%]; Vincent Chin [25%]; Sanela Mickovic [25%]; Ross Young [25%] | 16h |  |
| 341 | 2.6.2.17 | Light maps and shadow maps complete | 1d? | 2002-10-08 | 2002-10-09 | 340 |  |  | 194d |  |  | Jeff Pidsadny; Sarah Meagher [25%]; Vincent Chin [25%]; Sanela Mickovic [25%]; Ross Young [25%] | 16h |  |

Notes:
- 315: will not be in for this ms, / basically for level 2 / next ms
- 317: art is done. see above re: power plant
- 319: camera shakes not done depends on coders
- 321: see above re: powerplant. / next ms
- 323: may not happen
- 329: one pass will get done for this ms
- 333: LIGHTMAPS WON'T HAPPEN
- 335: designers need to place
- 340: ?? what's happening with these. check with Yayoi. & who should do these
- 341: out of the game

| ID | WBS | Task | Duration | Start | Finish | Predecessors | Complete | Remaining | Total slack | Free slack | Constraint | Resources | Work | Actual work |
| --- | --- | --- | --- | --- | --- | --- | --- | --- | --- | --- | --- | --- | --- | --- |
| 342 | 2.6.3 | **Suburbs Level:** | 124d? | 2002-04-16 A | 2002-10-08 |  | 16% | 104.52d? | 195d |  |  |  | 528h | 84.64h |
| 343 | 2.6.3.1 | Breakables in place | 1d? | 2002-09-16 A | 2002-09-17 |  | 80% | 0.2d? | 210d |  | start no earlier than 2002-09-16 | Aryan Hanbeck [50%]; Robert Peet [50%] | 8h | 6.4h |
| 344 | 2.6.3.2 | Light maps implemented | 1d? | 2002-04-16 | 2002-04-17 |  |  |  | 316d | 0d |  | Robert Peet | 8h |  |
| 345 | 2.6.3.3 | Optimization of textures | 1d? | 2002-04-17 | 2002-04-18 | 344 |  |  | 316d | 0d |  | Robert Peet | 8h |  |
| 346 | 2.6.3.4 | Gameplay puzzle refine and complete (working with designer) | 1d? | 2002-04-18 | 2002-04-19 | 345 |  |  | 316d |  |  | Robert Peet | 8h |  |
| 347 | 2.6.3.5 | **3 interiors in the level:** | 4d? | 2002-09-16 | 2002-09-20 |  |  |  | 207d |  |  |  | 32h |  |
| 348 | 2.6.3.5.1 | Final geometry, collisions, and character animations | 1d? | 2002-09-16 | 2002-09-17 |  |  |  | 207d | 0d | start no earlier than 2002-09-16 | Eric Madill | 8h |  |
| 349 | 2.6.3.5.2 | Final textures | 1d? | 2002-09-17 | 2002-09-18 | 348 |  |  | 207d | 0d |  | Eric Madill | 8h |  |
| 350 | 2.6.3.5.3 | Lighting and light maps | 1d? | 2002-09-18 | 2002-09-19 | 349 |  |  | 207d | 0d |  | Eric Madill | 8h |  |
| 351 | 2.6.3.5.4 | Camera placement | 1d? | 2002-09-19 | 2002-09-20 | 350 |  |  | 207d |  |  | Eric Madill | 8h |  |
| 352 | 2.6.3.6 | All local world spheres completed | 1d? | 2002-04-16 | 2002-04-17 |  |  |  | 318d |  |  | Vincent Chin | 8h |  |
| 353 | 2.6.3.7 | **Animations** | 16d? | 2002-09-16 A | 2002-10-08 |  | 55% | 7.22d? | 195d |  |  |  | 136h | 78.24h |
| 354 | 2.6.3.7.1 | In-game character animations refine and finalize (pending no design changes) | 1d? | 2002-09-16 A | 2002-09-17 |  | 80% | 0.2d? | 210d |  | start no earlier than 2002-09-16 | Jeremy Mesana [25%]; Yousuf Mapara [25%]; Ron Sombilon [25%]; Trevor Lim [25%] | 8h | 6.4h |
| 355 | 2.6.3.7.2 | Pedestrian animations refine (Pending on when getting implemented) | 1d? | 2002-09-17 A | 2002-09-18 A | 354 | 100% |  |  |  |  | Jeremy Mesana [25%]; Yousuf Mapara [25%]; Ron Sombilon [25%]; Trevor Lim [25%] | 8h | 8h |
| 356 | 2.6.3.7.3 | Boss animations for all boss encounters | 1d? | 2002-09-18 | 2002-09-19 | 355 |  |  | 206d | 0d |  | Jeremy Mesana [25%]; Yousuf Mapara [25%]; Ron Sombilon [25%]; Trevor Lim [25%] | 8h |  |
| 357 | 2.6.3.7.4 | Boss NIS for intro sequences | 1d? | 2002-09-19 | 2002-09-20 | 356 |  |  | 206d | 0d |  | Jeremy Mesana [25%]; Yousuf Mapara [25%]; Ron Sombilon [25%]; Trevor Lim [25%] | 8h |  |
| 358 | 2.6.3.7.5 | Boss NIS for ending win/lose sequences | 1d? | 2002-09-20 | 2002-09-23 | 357 |  |  | 206d |  |  | Jeremy Mesana [25%]; Yousuf Mapara [25%]; Ron Sombilon [25%]; Trevor Lim [25%] | 8h |  |
| 359 | 2.6.3.7.6 | ALL FMV’s storyboarded | 1d? | 2002-09-23 A | 2002-09-24 A | 358 | 100% |  |  |  |  | Jeremy Mesana [25%]; Yousuf Mapara [25%]; Ron Sombilon [25%]; Trevor Lim [25%] | 8h | 8h |
| 360 | 2.6.3.7.7 | First animatic of FMV 2 | 1d? | 2002-09-24 A | 2002-09-25 A | 359 | 100% |  |  |  |  | Jeremy Mesana [25%]; Yousuf Mapara [25%]; Ron Sombilon [25%]; Trevor Lim [25%] | 8h | 8h |
| 361 | 2.6.3.7.8 | Refinements to FMV1 (Yayoi to review) | 1d? | 2002-09-25 A | 2002-09-26 A | 360 | 100% |  |  |  |  | Jeremy Mesana [25%]; Yousuf Mapara [25%]; Ron Sombilon [25%]; Trevor Lim [25%] | 8h | 8h |
| 362 | 2.6.3.7.9 | Create new gags ( Prioritize with designer) | 1d? | 2002-09-26 A | 2002-09-27 | 361 | 98% | 0.02d? | 202d |  |  | Jeremy Mesana [25%]; Yousuf Mapara [25%]; Ron Sombilon [25%]; Trevor Lim [25%] | 8h | 7.84h |
| 363 | 2.6.3.7.10 | **FRONT END animations:** | 1d? | 2002-09-27 A | 2002-09-30 A | 362 | 100% |  |  |  |  | Jeremy Mesana [25%]; Yousuf Mapara [25%]; Ron Sombilon [25%]; Trevor Lim [25%] | 16h | 16h |
| 364 | 2.6.3.7.10.1 | Sound Menu pans to a headset on the floor (Near the Lamp) | 1d? | 2002-09-27 A | 2002-09-30 A |  | 100% |  |  |  |  | Jeremy Mesana [25%]; Yousuf Mapara [25%]; Ron Sombilon [25%]; Trevor Lim [25%] | 8h | 8h |
| 365 | 2.6.3.7.11 | View Movie Menu goes to TV Screen | 1d? | 2002-09-30 A | 2002-10-01 A | 363 | 100% |  |  |  |  | Jeremy Mesana [25%]; Yousuf Mapara [25%]; Ron Sombilon [25%]; Trevor Lim [25%] | 8h | 8h |
| 366 | 2.6.3.7.12 | View Credits Menu goes to Simpsons Portrait | 1d? | 2002-10-01 A | 2002-10-02 A | 365 | 100% |  |  |  |  | Jeremy Mesana [25%]; Yousuf Mapara [25%]; Ron Sombilon [25%]; Trevor Lim [25%] | 8h | 8h |
| 367 | 2.6.3.7.13 | Vibration Menu goes close up to remote control (on/off) Button | 1d? | 2002-10-02 | 2002-10-03 | 366 |  |  | 195d | 0d |  | Jeremy Mesana [25%]; Yousuf Mapara [25%]; Ron Sombilon [25%]; Trevor Lim [25%] | 8h |  |
| 368 | 2.6.3.7.14 | Mouse runs across room from lamp side towards to camera and off screen | 1d? | 2002-10-03 | 2002-10-04 | 367 |  |  | 195d | 0d |  | Jeremy Mesana [25%]; Yousuf Mapara [25%]; Ron Sombilon [25%]; Trevor Lim [25%] | 8h |  |
| 369 | 2.6.3.7.15 | Mouse Jumps on closer side of couch, sniffs homer and then goes back. | 1d? | 2002-10-04 | 2002-10-07 | 368 |  |  | 195d | 0d |  | Jeremy Mesana [25%]; Yousuf Mapara [25%]; Ron Sombilon [25%]; Trevor Lim [25%] | 8h |  |
| 370 | 2.6.3.7.16 | 3 more Homer animations - ??? Ask Galan and Chris for ideas. | 1d? | 2002-10-07 | 2002-10-08 | 369 |  |  | 195d |  |  | Jeremy Mesana [25%]; Yousuf Mapara [25%]; Ron Sombilon [25%]; Trevor Lim [25%] | 8h |  |

Notes:
- 344: out of the game
- 356: on hold waiting for design
- 362: 1 left to do
- 367: may be done a different way. may not get done
- 368: won't get done
- 369: won't get done
- 370: won't get done

| ID | WBS | Task | Duration | Start | Finish | Predecessors | Total slack | Free slack | Constraint | Resources | Work |
| --- | --- | --- | --- | --- | --- | --- | --- | --- | --- | --- | --- |
| 371 | 2.6.3.8 | **Vehicles:** | 11d? | 2002-09-16 | 2002-10-01 |  | 200d |  |  |  | 320h |
| 372 | 2.6.3.8.1 | All damage states complete for all main driver vehicles (working in game) | 1d? | 2002-09-16 | 2002-09-17 |  | 202d | 0d | start no earlier than 2002-09-16 | Kevin Fink | 8h |
| 373 | 2.6.3.8.2 | All damage states for Generic traffic vehicle working | 1d? | 2002-09-17 | 2002-09-18 | 372 | 202d | 0d |  | Kevin Fink | 8h |
| 374 | 2.6.3.8.3 | All generic and ai vehicles in for Suburbs and Downtown. | 1d? | 2002-09-18 | 2002-09-19 | 373 | 202d | 0d |  | Kevin Fink | 8h |
| 375 | 2.6.3.8.4 | All shadows for all cars working in game complete | 1d? | 2002-09-19 | 2002-09-20 | 374 | 202d | 0d |  | Kevin Fink | 8h |
| 376 | 2.6.3.8.5 | Environmental mapping working on vehicles and iteration time needed | 1d? | 2002-09-20 | 2002-09-23 | 375 | 202d | 0d |  | Kevin Fink | 8h |
| 377 | 2.6.3.8.6 | Generic traffic vehicle refine. | 1d? | 2002-09-23 | 2002-09-24 | 376 | 202d | 0d |  | Kevin Fink | 8h |
| 378 | 2.6.3.8.7 | Place agnes (Low poly version) in Skinners vehicle | 1d? | 2002-09-24 | 2002-09-25 | 377 | 202d | 0d |  | Kevin Fink | 8h |
| 379 | 2.6.3.8.8 | Steering wheel in vehicles | 1d? | 2002-09-25 | 2002-09-26 | 378 | 202d | 0d |  | Kevin Fink | 8h |
| 380 | 2.6.3.8.9 | Shadows for vehicles working properly | 1d? | 2002-09-26 | 2002-09-27 | 379 | 202d |  |  | Kevin Fink | 8h |
| 381 | 2.6.3.8.10 | Damage states particle need time for iteration (when will get into game) | 1d? | 2002-09-16 | 2002-09-17 |  | 210d |  | start no earlier than 2002-09-16 | Vincent Chin | 8h |
| 382 | 2.6.3.8.11 | **Front End and pause menu** | 7d? | 2002-09-16 | 2002-09-25 |  | 200d |  |  |  | 56h |
| 383 | 2.6.3.8.11.1 | Finalize Font highlight for scrolling and selecting | 1d? | 2002-09-16 | 2002-09-17 |  | 200d | 0d | start no earlier than 2002-09-16 | Ting Ting Chen | 8h |
| 384 | 2.6.3.8.11.2 | Front end optimization | 1d? | 2002-09-17 | 2002-09-18 | 383 | 200d | 0d |  | Ting Ting Chen | 8h |
| 385 | 2.6.3.8.11.3 | Create Krusty headset (For sound menu ) | 1d? | 2002-09-18 | 2002-09-19 | 384 | 200d | 0d |  | Ting Ting Chen | 8h |
| 386 | 2.6.3.8.11.4 | Finalize Front END | 1d? | 2002-09-19 | 2002-09-20 | 385 | 200d | 0d |  | Ting Ting Chen | 8h |
| 387 | 2.6.3.8.11.5 | Finalize card gallery | 1d? | 2002-09-20 | 2002-09-23 | 386 | 200d | 0d |  | Ting Ting Chen | 8h |
| 388 | 2.6.3.8.11.6 | Finalize pause menu screen | 1d? | 2002-09-23 | 2002-09-24 | 387 | 200d | 0d |  | Ting Ting Chen | 8h |
| 389 | 2.6.3.8.11.7 | Mission HUD design finalized | 1d? | 2002-09-24 | 2002-09-25 | 388 | 200d | 0d |  | Ting Ting Chen | 8h |
| 390 | 2.6.3.8.12 | **Collector cards:** | 4d? | 2002-09-25 | 2002-10-01 | 389 | 200d |  |  | Ting Ting Chen | 64h |
| 391 | 2.6.3.8.12.1 | Finalize Collector card design for in-game | 1d? | 2002-09-25 | 2002-09-26 |  | 200d | 0d |  | Ting Ting Chen | 8h |
| 392 | 2.6.3.8.12.2 | Finalize collector card game design | 1d? | 2002-09-26 | 2002-09-27 | 391 | 200d | 0d |  | Ting Ting Chen | 8h |
| 393 | 2.6.3.8.12.3 | Create collector card images for Downtown level | 1d? | 2002-09-27 | 2002-09-30 | 392 | 200d | 0d |  | Ting Ting Chen | 8h |
| 394 | 2.6.3.8.12.4 | Create collector card images for Seaside level. | 1d? | 2002-09-30 | 2002-10-01 | 393 | 200d |  |  | Ting Ting Chen | 8h |

| ID | WBS | Task | Duration | Start | Finish | Predecessors | Complete | Remaining | Total slack | Free slack | Constraint | Resources | Work | Actual work |
| --- | --- | --- | --- | --- | --- | --- | --- | --- | --- | --- | --- | --- | --- | --- |
| 395 | 2.6.3.8.13 | **HUD:** | 4d? | 2002-09-16 | 2002-09-20 |  |  |  | 207d |  |  |  | 32h |  |
| 396 | 2.6.3.8.13.1 | Finalize hud map on screen (location and size and look) | 1d? | 2002-09-16 | 2002-09-17 |  |  |  | 207d | 0d | start no earlier than 2002-09-16 | Tony Chu | 8h |  |
| 397 | 2.6.3.8.13.2 | Mission presentation of mission complete and failure need to refine | 1d? | 2002-09-17 | 2002-09-18 | 396 |  |  | 207d | 0d |  | Tony Chu | 8h |  |
| 398 | 2.6.3.8.13.3 | 321 timing of starting mission needs to faster | 1d? | 2002-09-18 | 2002-09-19 | 397 |  |  | 207d | 0d |  | Tony Chu | 8h |  |
| 399 | 2.6.3.8.13.4 | Hud icons for missions, food and collector card created and in. | 1d? | 2002-09-19 | 2002-09-20 | 398 |  |  | 207d |  |  | Tony Chu | 8h |  |
| 400 | 2.6.3.8.14 | **Character models:** | 11d? | 2002-09-16 | 2002-10-01 |  |  |  | 200d |  | start no earlier than 2002-09-16 |  | 88h |  |
| 401 | 2.6.3.8.14.1 | Create monkey model for mission (Need to review with Designer) | 1d? | 2002-09-16 | 2002-09-17 |  |  |  | 200d | 0d | start no earlier than 2002-09-16 | Jaroslav Chorny | 8h |  |
| 402 | 2.6.3.8.14.2 | Create LEGS pedestrian model | 1d? | 2002-09-17 | 2002-09-18 | 401 |  |  | 200d | 0d |  | Jaroslav Chorny | 8h |  |
| 403 | 2.6.3.8.14.3 | Create character floats: | 1d? | 2002-09-18 | 2002-09-19 | 402 |  |  | 200d | 0d |  | Jaroslav Chorny | 8h |  |
| 404 | 2.6.3.8.14.4 | Pootchy | 1d? | 2002-09-19 | 2002-09-20 | 403 |  |  | 200d | 0d |  | Jaroslav Chorny | 8h |  |
| 405 | 2.6.3.8.14.5 | Scratchy | 1d? | 2002-09-20 | 2002-09-23 | 404 |  |  | 200d | 0d |  | Jaroslav Chorny | 8h |  |
| 406 | 2.6.3.8.14.6 | Itchy | 1d? | 2002-09-23 | 2002-09-24 | 405 |  |  | 200d | 0d |  | Jaroslav Chorny | 8h |  |
| 407 | 2.6.3.8.14.7 | Sideshow bob | 1d? | 2002-09-24 | 2002-09-25 | 406 |  |  | 200d | 0d |  | Jaroslav Chorny | 8h |  |
| 408 | 2.6.3.8.14.8 | krusty | 1d? | 2002-09-25 | 2002-09-26 | 407 |  |  | 200d | 0d |  | Jaroslav Chorny | 8h |  |
| 409 | 2.6.3.8.14.9 | Character shadows all working in-game. | 1d? | 2002-09-26 | 2002-09-27 | 408 |  |  | 200d | 0d |  | Jaroslav Chorny | 8h |  |
| 410 | 2.6.3.8.14.10 | Dash particles on character working well | 1d? | 2002-09-27 | 2002-09-30 | 409 |  |  | 200d | 0d |  | Jaroslav Chorny | 8h |  |
| 411 | 2.6.3.8.14.11 | Jump particle refined | 1d? | 2002-09-30 | 2002-10-01 | 410 |  |  | 200d |  |  | Jaroslav Chorny | 8h |  |
| 412 | 2.7 | **Milestone 13 (Nov 15th)** | 29d? | 2002-10-15 A | 2002-11-25 |  | 49% | 14.76d? | 161d |  |  |  | 1450.4h | 906.96h |
| 413 | 2.7.1 | All mission effects (Final) | 1d? | 2002-10-15 A | 2002-10-16 A |  | 100% |  |  |  | start no earlier than 2002-10-15 | Aryan Hanbeck | 8h | 8h |
| 414 | 2.7.2 | Mission effects Remaining for suburbs | 1d? | 2002-10-16 A | 2002-10-17 A | 413 | 100% |  |  |  |  | Aryan Hanbeck | 8h | 8h |
| 415 | 2.7.3 | Special effects for location volumes | 1d? | 2002-10-17 A | 2002-10-18 | 414 | 75% | 0.25d? | 186.5d | 0d |  | Aryan Hanbeck | 8h | 6h |
| 416 | 2.7.4 | Special effects for powerplant | 1d? | 2002-10-18 A | 2002-10-21 | 415 | 75% | 0.25d? | 185.75d | 0d |  | Aryan Hanbeck | 8h | 6h |
| 417 | 2.7.5 | Special effects for Downtown | 1d? | 2002-10-21 A | 2002-10-22 | 416 | 75% | 0.25d? | 185d |  |  | Aryan Hanbeck | 8h | 6h |
| 418 | 2.7.6 | Mission effects for Downtown (Probably done once suburbs mission effects final) | 1d? | 2002-10-22 A | 2002-10-23 A | 417 | 100% |  |  |  |  | Aryan Hanbeck | 8h | 8h |
| 419 | 2.7.7 | Breakables for Downtown | 1d? | 2002-10-23 | 2002-10-24 | 418 |  |  | 182d | 0d |  | Aryan Hanbeck | 8h |  |
| 420 | 2.7.8 | Breakables for Suburbs final | 1d? | 2002-10-24 | 2002-10-25 | 419 |  |  | 182d |  |  | Aryan Hanbeck | 8h |  |
| 421 | 2.7.9 | 2 interiors for Downtown complete | 1d? | 2002-10-16 A | 2002-10-17 A |  | 100% |  |  |  | start no earlier than 2002-10-16 | Eric Madill | 8h | 8h |
| 422 | 2.7.10 | design 2 interior for Seaside | 1d? | 2002-10-17 A | 2002-10-18 | 421 | 10% | 0.9d? | 187d |  |  | Eric Madill | 8h | 0.8h |
| 423 | 2.7.11 | Finalize intro movie (Pending Title for game approved) | 1d? | 2002-10-16 A | 2002-10-17 |  | 90% | 0.1d? | 187.4d | 0d | start no earlier than 2002-10-16 | Jeremy Mesana [25%]; Ron Sombilon [25%]; Yousuf Mapara [25%]; Trevor Lim [25%] | 8h | 7.2h |
| 424 | 2.7.12 | FMV #2 40% complete (% percentage will be higher if dialogue recorded) | 1d? | 2002-10-17 A | 2002-10-18 | 423 | 40% | 0.6d? | 187d |  |  | Jeremy Mesana [25%]; Ron Sombilon [25%]; Yousuf Mapara [25%]; Trevor Lim [25%] | 8h | 3.2h |
| 425 | 2.7.13 | Remaining in-game animations final (dependent on Driver, passenger, pedestrian all implemented in game) | 1d? | 2002-10-18 A | 2002-10-21 A | 424 | 100% |  |  |  |  | Jeremy Mesana [25%]; Ron Sombilon [25%]; Yousuf Mapara [25%]; Trevor Lim [25%] | 8h | 8h |

Notes:
- 421: To let you know, / I've finished one interior (ie. exported) and I'm currently a little over half way done the second for level 2 (which should be completed if not tommorrow then friday). Unfortunately I haven't been able to see them in game yet as we've been trying to sort out piping and loading issues. Therefore, there may still be some revisions needed for colour correction and camera work. / As for the designs for level 3, I have my previous conceptual drawings at hand, but have been focusing my attention on getting level 2 completed first. Realistically, I think the designs for the level 3 interiors can be bumped back to the next milestone as I've asked to help Jeff and the WB team fix level 1 next month. / Cheers. / Eric. / -- / Eric Madill (Tue 12/11/02): ==== Published to Microsoft Project server by Wolfgang Hamann on 11/11/02 1:13 PM ===== / To let you know, / I've finished one interior (ie. exported) and I'm currently a little over half way done the second for level 2 (which should be completed if not tommorrow then friday). Unfortunately I haven't been able to see them in game yet as we've been trying to sort out piping and loading issues. Therefore, there may still be some revisions needed for colour correction and camera work. / As for the designs for level 3, I have my previous conceptual drawings at hand, but have been focusing my attention on getting level 2 completed first. Realistically, I think the designs for the level 3 interiors can be bumped back to the next milestone as I've asked to help Jeff and the WB team fix level 1 next month. / Cheers. / Eric. / --
- 423: From Trevor: / modeling and texturing props/set / need some info from designers regarding final ending spot of gameplay
- 425: Jeremy Mesana (Thu 07/11/02): done but not finalized / Jeremy Mesana (Thu 07/11/02): done but not finalized / Trevor Lim (Tue 12/11/02): ==== Published to Microsoft Project server by Wolfgang Hamann on 11/11/02 1:13 PM ===== / Jeremy Mesana (Thu 07/11/02): done but not finalized / Jeremy Mesana (Thu 07/11/02): done but not finalized

| ID | WBS | Task | Duration | Start | Finish | Predecessors | Complete | Remaining | Total slack | Free slack | Constraint | Resources | Work | Actual work |
| --- | --- | --- | --- | --- | --- | --- | --- | --- | --- | --- | --- | --- | --- | --- |
| 426 | 2.7.14 | **FMV #2 - 7 animatic completed (Pending on FOx Approval)** | 5d? | 2002-10-21 A | 2002-10-28 | 425 | 16% | 4.2d? | 181d |  |  | Jeremy Mesana [25%]; Ron Sombilon [25%]; Yousuf Mapara [25%]; Trevor Lim [25%] | 80h | 12.8h |
| 427 | 2.7.14.1 | FMV #3 | 1d? | 2002-10-21 A | 2002-10-22 |  | 20% | 0.8d? | 181.6d | 0d |  | Jeremy Mesana [25%]; Ron Sombilon [25%]; Yousuf Mapara [25%]; Trevor Lim [25%] | 8h | 1.6h |
| 428 | 2.7.14.2 | FMV #4 | 1d? | 2002-10-22 A | 2002-10-23 | 427 | 20% | 0.8d? | 181.4d | 0d |  | Jeremy Mesana [25%]; Ron Sombilon [25%]; Yousuf Mapara [25%]; Trevor Lim [25%] | 8h | 1.6h |
| 429 | 2.7.14.3 | FMV #5 | 1d? | 2002-10-23 A | 2002-10-24 | 428 | 20% | 0.8d? | 181.2d | 0d |  | Jeremy Mesana [25%]; Ron Sombilon [25%]; Yousuf Mapara [25%]; Trevor Lim [25%] | 8h | 1.6h |
| 430 | 2.7.14.4 | FMV #6 | 1d? | 2002-10-24 | 2002-10-25 | 429 |  |  | 181.2d | 0d |  | Jeremy Mesana [25%]; Ron Sombilon [25%]; Yousuf Mapara [25%]; Trevor Lim [25%] | 8h |  |
| 431 | 2.7.14.5 | FMV #7 | 1d? | 2002-10-25 A | 2002-10-28 | 430 | 20% | 0.8d? | 181d |  |  | Jeremy Mesana [25%]; Ron Sombilon [25%]; Yousuf Mapara [25%]; Trevor Lim [25%] | 8h | 1.6h |
| 432 | 2.7.15 | Gags all working for suburbs and Downtown | 1d? | 2002-10-28 A | 2002-10-29 A | 426 | 100% |  |  |  |  | Jeremy Mesana [25%]; Ron Sombilon [25%]; Yousuf Mapara [25%]; Trevor Lim [25%] | 8h | 8h |
| 433 | 2.7.16 | **World Builders** | 28d | 2002-10-16 A | 2002-11-25 |  | 49% | 14.3d | 161d |  |  |  | 880.8h | 620.16h |
| 434 | 2.7.16.1 | 2 weeks on Seaside (all people) | 19d | 2002-10-16 A | 2002-11-12 |  | 85% | 2.85d | 170d |  | start no earlier than 2002-10-16 | Jeff Pidsadny [80%]; Sanela Mickovic [80%]; Ross Young [80%]; Robert Peet [80%]; Sarah Meagher [80%]; Vincent Chin [80%] | 729.6h | 620.16h |
| 435 | 2.7.16.2 | Polish Level 2 (Downtown) | 3d | 2002-11-13 | 2002-11-18 |  |  |  | 166d |  | start no earlier than 2002-11-13 | Sarah Meagher [80%]; Vincent Chin [80%] | 38.4h |  |
| 436 | 2.7.16.3 | Polish Level 3 (Seaside) | 3d | 2002-11-13 | 2002-11-18 |  |  |  | 166d |  | start no earlier than 2002-11-13 | Ross Young [80%]; Sanela Mickovic [80%] | 38.4h |  |
| 437 | 2.7.16.4 | Polish Level 1 (Suburbs) | 3d | 2002-11-13 | 2002-11-18 |  |  |  | 166d |  | start no earlier than 2002-11-13 | Jeff Pidsadny [80%]; Robert Peet [80%] | 38.4h |  |
| 438 | 2.7.17 | 1 week halloween complete (2 people) | 5d | 2002-11-18 | 2002-11-25 |  |  |  | 161d |  | start no earlier than 2002-11-18 | Jeff Pidsadny [15%]; Sanela Mickovic [15%]; Ross Young [15%]; Robert Peet [15%]; Sarah Meagher [15%]; Vincent Chin [15%] | 36h |  |
| 439 | 2.7.19 | Selma | 1d? | 2002-10-16 A | 2002-10-17 A |  | 100% |  |  |  | start no earlier than 2002-10-16 | Jaroslav Chorny | 8h | 8h |
| 440 | 2.7.20 | Skinner | 1d? | 2002-10-17 A | 2002-10-18 A | 439 | 100% |  |  |  |  | Jaroslav Chorny | 8h | 8h |
| 441 | 2.7.21 | Sea Captain | 1d? | 2002-10-18 A | 2002-10-21 A | 440 | 100% |  |  |  |  | Jaroslav Chorny | 8h | 8h |
| 442 | 2.7.22 | Sideshow Bob float | 1d? | 2002-10-21 A | 2002-10-22 A | 441 | 100% |  |  |  |  | Jaroslav Chorny | 8h | 8h |
| 443 | 2.7.23 | **Generic Pedestrians** | 4d? | 2002-10-22 | 2002-10-28 | 442 |  |  | 179d | 0d |  | Jaroslav Chorny | 64h |  |
| 444 | 2.7.23.1 | Generic ped kid F | 1d? | 2002-10-22 | 2002-10-23 |  |  |  | 179d | 0d |  | Jaroslav Chorny | 8h |  |
| 445 | 2.7.23.2 | Generic ped kid M | 1d? | 2002-10-23 | 2002-10-24 | 444 |  |  | 179d | 0d |  | Jaroslav Chorny | 8h |  |
| 446 | 2.7.23.3 | Generic ped adult M2 | 1d? | 2002-10-24 | 2002-10-25 | 445 |  |  | 179d | 0d |  | Jaroslav Chorny | 8h |  |
| 447 | 2.7.23.4 | Generic ped adult F2 | 1d? | 2002-10-25 | 2002-10-28 | 446 |  |  | 179d |  |  | Jaroslav Chorny | 8h |  |
| 448 | 2.7.24 | Zombie character | 1d? | 2002-10-28 | 2002-10-29 | 443 |  |  | 179d | 0d |  | Jaroslav Chorny | 8h |  |
| 449 | 2.7.25 | (Need to find out from designers about monkey status) | 1d? | 2002-10-29 | 2002-10-30 | 448 |  |  | 179d |  |  | Jaroslav Chorny | 8h |  |
| 450 | 2.7.26 | Damage states for all driver vehicles complete | 1d? | 2002-10-16 A | 2002-10-17 A |  | 100% |  |  |  | start no earlier than 2002-10-16 | Kevin Fink | 8h | 8h |
| 451 | 2.7.27 | Cartoonify Traffic vehicles | 1d? | 2002-10-17 A | 2002-10-18 | 450 | 50% | 0.5d? | 186.8d | 0d |  | Kevin Fink | 8h | 4h |
| 452 | 2.7.28 | Environmental mapping complete on vehicles. | 1d? | 2002-10-18 A | 2002-10-21 | 451 | 80% | 0.2d? | 186d |  |  | Kevin Fink | 8h | 6.4h |
| 453 | 2.7.29 | Track sprays and SKid marks final | 1d? | 2002-10-21 A | 2002-10-22 A | 452 | 100% |  |  |  |  | Kevin Fink | 8h | 8h |
| 454 | 2.7.30 | More vehicles | 1d? | 2002-10-22 A | 2002-10-23 | 453 | 30% | 0.7d? | 184d |  |  | Kevin Fink | 8h | 2.4h |

Notes:
- 426: From Trevor: / modeling and texturing set items and props / need final ending point of gameplay so i can continue to build more of the set to match
- 431: Trevor Lim (Tue 12/11/02): modeling and texturing props / need final location so i can start building more of the set for fmv7
- 432: Jeremy Mesana (Thu 07/11/02): completed but not tested due to the downtown interiors being unaccessable. / Jeremy Mesana (Thu 07/11/02): completed but not tested due to the downtown interiors being unaccessable. / Trevor Lim (Tue 12/11/02): ==== Published to Microsoft Project server by Wolfgang Hamann on 11/11/02 1:13 PM ===== / Jeremy Mesana (Thu 07/11/02): completed but not tested due to the downtown interiors being unaccessable. / Jeremy Mesana (Thu 07/11/02): completed but not tested due to the downtown interiors being unaccessable.
- 433: Level 1 - Suburbs / Level 2 - Downtown / Level 3 - Seaside / Since we're doing major revisions to the Suburbs level, Halloween will be put off for another couple weeks at least. Starting Nov.11th, Vincent & I will be polishing Level2 (Downtown), Ross & Sanela will be polishing Level3 (Seaside), and Jeff & Bob will be revising & polishing Level1 (Suburbs). When this is done (ask Yayoi for a finish date), we will move on to Halloween & time-of-day changes. Thanks Wolfgang!
- 434: I think you'll want to talk to Yayoi about our updated schedule. / Since we're doing major revisions to the Suburbs level, Halloween will be put off for another couple weeks at least. Starting Nov.11th, Vincent & I will be polishing Level2 (Downtown), Ross & Sanela will be polishing Level3 (Seaside), and Jeff & Bob will be revising & polishing Level1 (Suburbs). When this is done (ask Yayoi for a finish date), we will move on to Halloween & time-of-day changes. Thanks Wolfgang!
- 444: (Slava talk to Dusit about More gens) / Jaroslav Chorny (Thu 07/11/02): ==== Published to Microsoft Project server by Wolfgang Hamann on 06/11/02 1:13 PM ===== / (Slava talk to Dusit about More gens) / Jaroslav Chorny (Tue 12/11/02): ==== Published to Microsoft Project server by Wolfgang Hamann on 11/11/02 1:17 PM ===== / (Slava talk to Dusit about More gens) / Jaroslav Chorny (Thu 07/11/02): ==== Published to Microsoft Project server by Wolfgang Hamann on 06/11/02 1:13 PM ===== / (Slava talk to Dusit about More gens)

| ID | WBS | Task | Duration | Start | Finish | Predecessors | Complete | Remaining | Total slack | Free slack | Constraint | Resources | Work | Actual work |
| --- | --- | --- | --- | --- | --- | --- | --- | --- | --- | --- | --- | --- | --- | --- |
| 455 | 2.7.31 | **Generic Gremlin (Race)** | 7d? | 2002-10-23 A | 2002-11-01 A | 454 | 100% |  |  |  |  | Kevin Fink | 112h | 112h |
| 456 | 2.7.31.1 | (3) Black Limo (Chase and Destroy)* | 1d? | 2002-10-23 A | 2002-10-24 A |  | 100% |  |  |  |  | Kevin Fink | 8h | 8h |
| 457 | 2.7.31.2 | (5) Cola truck and Black Sedans (Chase and evade) (red /white siren ) | 1d? | 2002-10-24 A | 2002-10-25 A | 456 | 100% |  |  |  |  | Kevin Fink | 8h | 8h |
| 458 | 2.7.31.3 | (5) Armored Truck (Chase and destroy) | 1d? | 2002-10-25 A | 2002-10-28 A | 457 | 100% |  |  |  |  | Kevin Fink | 8h | 8h |
| 459 | 2.7.31.4 | (5) Curator vehicle (Race) | 1d? | 2002-10-28 A | 2002-10-29 A | 458 | 100% |  |  |  |  | Kevin Fink | 8h | 8h |
| 460 | 2.7.31.5 | (6) Krusty> '> s Limo (race) | 1d? | 2002-10-29 A | 2002-10-30 A | 459 | 100% |  |  |  |  | Kevin Fink | 8h | 8h |
| 461 | 2.7.31.6 | (7) Black Ferrini (race) | 1d? | 2002-10-30 A | 2002-10-31 A | 460 | 100% |  |  |  |  | Kevin Fink | 8h | 8h |
| 462 | 2.7.31.7 | (7) Generic Zombie Hearse Vehicle ???? ( Evade) (green/orange siren ) | 1d? | 2002-10-31 A | 2002-11-01 A | 461 | 100% |  |  |  |  | Kevin Fink | 8h | 8h |
| 463 | 2.7.32 | more reward vehicles (have yet to be determined with designers) | 1d? | 2002-11-01 A | 2002-11-04 A | 462 | 100% |  |  |  |  | Kevin Fink | 8h | 8h |
| 464 | 2.7.33 | Finalize Navigation map on hud (Needs redesign) | 1d? | 2002-10-21 A | 2002-10-22 |  | 70% | 0.3d? | 172.3d | 0d | start no earlier than 2002-10-21 | Ting Ting Chen | 8h | 5.6h |
| 465 | 2.7.34 | Mission object icons for HUD | 1d? | 2002-10-22 A | 2002-10-23 | 464 | 30% | 0.7d? | 172d | 0d |  | Ting Ting Chen | 8h | 2.4h |
| 466 | 2.7.35 | All collector cards complete for all levels (This may not be feasible pending new design changes) | 1d? | 2002-10-23 A | 2002-10-24 | 465 | 80% | 0.2d? | 171.2d | 0d |  | Ting Ting Chen | 8h | 6.4h |
| 467 | 2.7.36 | Finalize Card Gallery | 1d? | 2002-10-24 | 2002-10-25 | 466 |  |  | 171.2d | 0d |  | Ting Ting Chen | 8h |  |
| 468 | 2.7.37 | Finalize Pause Menu | 1d? | 2002-10-25 A | 2002-10-28 | 467 | 20% | 0.8d? | 171d | 0d |  | Ting Ting Chen | 8h | 1.6h |
| 469 | 2.7.38 | Design menu screens for new designs (Need to clarify with Carey) | 1d? | 2002-10-28 | 2002-10-29 | 468 |  |  | 171d | 9.88d |  | Ting Ting Chen | 8h |  |
| 470 | 2.7.37 | Map Icons | 1d? | 2002-11-12 | 2002-11-12 | 469 |  |  | 161.12d | 0d | start no earlier than 2002-11-12 | Ting Ting Chen [80%] | 6.4h |  |
| 471 | 2.7.38 | FMV Viewfinder | 1d? | 2002-11-13 | 2002-11-13 | 470 |  |  | 161.12d | 0d | start no earlier than 2002-11-12 | Ting Ting Chen [80%] | 6.4h |  |
| 472 | 2.7.39 | Fox Approval | 1d? | 2002-11-14 | 2002-11-14 | 471 |  |  | 161.12d | 0d | start no earlier than 2002-11-12 | Ting Ting Chen [80%] | 6.4h |  |
| 473 | 2.7.40 | (Level Loading ) Newspaper Loading Screen ( Need to get the final text from Chris ) | 1d? | 2002-11-15 | 2002-11-15 | 472 |  |  | 161.12d | 0d | start no earlier than 2002-11-12 | Ting Ting Chen [80%] | 6.4h |  |
| 474 | 2.7.41 | Redesign Mission Loading Screen | 1d? | 2002-11-18 | 2002-11-18 | 473 |  |  | 161.12d | 0d | start no earlier than 2002-11-12 | Ting Ting Chen [80%] | 6.4h |  |
| 475 | 2.7.42 | New reward Screen ( Need Info from Carey ) | 1d? | 2002-11-19 | 2002-11-19 | 474 |  |  | 161.12d | 0d | start no earlier than 2002-11-12 | Ting Ting Chen [80%] | 6.4h |  |
| 476 | 2.7.43 | Pause Option Arrows | 1d? | 2002-11-20 | 2002-11-20 | 475 |  |  | 161.12d | 0d | start no earlier than 2002-11-12 | Ting Ting Chen [80%] | 6.4h |  |
| 477 | 2.7.44 | Pause Sound Image | 1d? | 2002-11-21 | 2002-11-21 | 476 |  |  | 161.12d | 0d | start no earlier than 2002-11-12 | Ting Ting Chen [80%] | 6.4h |  |
| 478 | 2.7.45 | Error message overlay | 1d? | 2002-11-22 | 2002-11-22 | 477 |  |  | 161.12d |  | start no earlier than 2002-11-12 | Ting Ting Chen [80%] | 6.4h |  |

Notes:
- 464: Hi Wolfgang, / Can you add the List below into my task: / - Map Icons 100% / - FMV Viewfinder 100% / - Fox Approvel 80 % / - (Level Loading ) Newspaper Loading Screen ( Need to get the final text from Chris ) / - Redesign Mission Loading Screen / - New reward Screen ( Need Info from Carey ) / - Pause Option Arrows / - Pause Sound Image / - Error message overlay

| ID | WBS | Task | Duration | Start | Finish | Predecessors | Complete | Remaining | Total slack | Free slack | Constraint | Resources | Work | Actual work |
| --- | --- | --- | --- | --- | --- | --- | --- | --- | --- | --- | --- | --- | --- | --- |
| 479 | 2.8 | **Milestone 14 (Dec 15th)** | 60.88d? | 2002-10-15 A | 2003-01-07 |  | 10% | 54.92d? | 129.12d |  |  |  | 1336.8h | 240h |
| 480 | 2.8.1 | **Special FX** | 32.88d? | 2002-10-16 | 2002-11-29 |  |  |  | 156.12d |  |  |  | 231.2h |  |
| 481 | 2.8.1 | **First test will be:** | 1d? | 2002-10-16 | 2002-10-17 |  |  |  | 183d | 0d |  |  | 4h |  |
| 482 | 2.8.2 | Slot machines outside Burn’s Casino: pressing action causes lights to flash and sounds to play and in Moes | 1d? | 2002-10-16 | 2002-10-17 |  |  |  | 183d |  | start no earlier than 2002-10-16 | Aryan Hanbeck [50%] | 4h |  |
| 483 | 2.8.3 | **Downtown Interactive Gags (level 2 and 5)** | 1d? | 2002-10-17 | 2002-10-18 | 481 |  |  | 183d | 26.88d |  |  | 12h |  |
| 484 | 2.8.4 | Hitting Popsicle skyscraper causes a shower of Popsicle particles to appear. | 1d? | 2002-10-17 | 2002-10-18 |  |  |  | 183d |  |  | Aryan Hanbeck [50%] | 4h |  |
| 485 | 2.8.5 | Catapult, fires as in 4F15 | 1d? | 2002-10-17 | 2002-10-18 |  |  |  | 183d |  |  | Aryan Hanbeck [50%] | 4h |  |
| 486 | 2.8.6 | Wacking day memorabilia ??? | 1d? | 2002-10-17 | 2002-10-18 |  |  |  | 183d |  |  | Aryan Hanbeck [50%] | 4h |  |
| 487 | 2.8.1.3 | **Miscalleounous:** | 1d? | 2002-11-26 | 2002-11-26 | 483 |  |  | 156.12d | 0d |  |  | 20h |  |
| 488 | 2.8.1.3.1 | All mission collectibles | 1d? | 2002-11-26 | 2002-11-26 |  |  |  | 156.12d |  | start no earlier than 2002-11-26 | Aryan Hanbeck [50%] | 4h |  |
| 489 | 2.8.1.3.2 | Checkpoint icon for streetrace | 1d? | 2002-11-26 | 2002-11-26 |  |  |  | 156.12d |  | start no earlier than 2002-11-26 | Aryan Hanbeck [50%] | 4h |  |
| 490 | 2.8.1.3.3 | Bonus mission icon | 1d? | 2002-11-26 | 2002-11-26 |  |  |  | 156.12d |  | start no earlier than 2002-11-26 | Aryan Hanbeck [50%] | 4h |  |
| 491 | 2.8.1.3.4 | Interior door icon effect (Need to come up with design) | 1d? | 2002-11-26 | 2002-11-26 |  |  |  | 156.12d |  | start no earlier than 2002-11-26 | Aryan Hanbeck [50%] | 4h |  |
| 492 | 2.8.1.3.5 | Finalize all Presentation icons (ie exclamation, phone booth, ai vehicle) | 1d? | 2002-11-26 | 2002-11-26 |  |  |  | 156.12d |  | start no earlier than 2002-11-26 | Aryan Hanbeck [50%] | 4h |  |
| 493 | 2.8.1.4 | **Surburbs level 1 Effects:** | 1d? | 2002-11-27 | 2002-11-27 | 487 |  |  | 156.12d | 0d |  |  | 16h |  |
| 494 | 2.8.1.4.1 | River water effect | 1d? | 2002-11-27 | 2002-11-27 |  |  |  | 156.12d |  | start no earlier than 2002-11-26 | Aryan Hanbeck [50%] | 4h |  |
| 495 | 2.8.1.4.2 | Randomized textures for powerplant | 1d? | 2002-11-27 | 2002-11-27 |  |  |  | 156.12d |  | start no earlier than 2002-11-26 | Aryan Hanbeck [50%] | 4h |  |
| 496 | 2.8.1.4.3 | Randomized textures for church | 1d? | 2002-11-27 | 2002-11-27 |  |  |  | 156.12d |  | start no earlier than 2002-11-26 | Aryan Hanbeck [50%] | 4h |  |
| 497 | 2.8.1.4.4 | Glow for button effect implemented into game | 1d? | 2002-11-27 | 2002-11-27 |  |  |  | 156.12d |  | start no earlier than 2002-11-26 | Aryan Hanbeck [50%] | 4h |  |
| 498 | 2.8.1.5 | **Downtown Level 2 Effects:** | 1d? | 2002-11-28 | 2002-11-28 | 493 |  |  | 156.12d | 0d |  |  | 60h |  |
| 499 | 2.8.1.5.1 | Exploding glass for spaceneedle | 1d? | 2002-11-28 | 2002-11-28 |  |  |  | 156.12d |  | start no earlier than 2002-11-26 | Aryan Hanbeck [50%] | 4h |  |
| 500 | 2.8.1.5.2 | Randomized texture for stadium tron. | 1d? | 2002-11-28 | 2002-11-28 |  |  |  | 156.12d |  | start no earlier than 2002-11-26 | Aryan Hanbeck [50%] | 4h |  |
| 501 | 2.8.1.5.3 | Two water fountains in the stadium | 1d? | 2002-11-28 | 2002-11-28 |  |  |  | 156.12d |  | start no earlier than 2002-11-26 | Aryan Hanbeck [50%] | 4h |  |
| 502 | 2.8.1.5.4 | Animating flag by the stadium | 1d? | 2002-11-28 | 2002-11-28 |  |  |  | 156.12d |  | start no earlier than 2002-11-26 | Aryan Hanbeck [50%] | 4h |  |
| 503 | 2.8.1.5.5 | Corona lights by the stadium | 1d? | 2002-11-28 | 2002-11-28 |  |  |  | 156.12d |  | start no earlier than 2002-11-26 | Aryan Hanbeck [50%] | 4h |  |
| 504 | 2.8.1.5.6 | Magnify glass smoke effect | 1d? | 2002-11-28 | 2002-11-28 |  |  |  | 156.12d |  | start no earlier than 2002-11-26 | Aryan Hanbeck [50%] | 4h |  |
| 505 | 2.8.1.5.7 | Fire Truck sirens | 1d? | 2002-11-28 | 2002-11-28 |  |  |  | 156.12d |  | start no earlier than 2002-11-26 | Aryan Hanbeck [50%] | 4h |  |
| 506 | 2.8.1.5.8 | Tree effects revised textures | 1d? | 2002-11-28 | 2002-11-28 |  |  |  | 156.12d |  | start no earlier than 2002-11-26 | Aryan Hanbeck [50%] | 4h |  |
| 507 | 2.8.1.5.9 | All breakables need to be implemented | 1d? | 2002-11-28 | 2002-11-28 |  |  |  | 156.12d |  | start no earlier than 2002-11-26 | Aryan Hanbeck [50%] | 4h |  |
| 508 | 2.8.1.5.10 | Stuff to be implemented for tomorrow: | 1d? | 2002-11-28 | 2002-11-28 |  |  |  | 156.12d |  | start no earlier than 2002-11-26 | Aryan Hanbeck [50%] | 4h |  |
| 509 | 2.8.1.5.11 | Construction effects | 1d? | 2002-11-28 | 2002-11-28 |  |  |  | 156.12d |  | start no earlier than 2002-11-26 | Aryan Hanbeck [50%] | 4h |  |
| 510 | 2.8.1.5.12 | Railroad crossing breakable | 1d? | 2002-11-28 | 2002-11-28 |  |  |  | 156.12d |  | start no earlier than 2002-11-26 | Aryan Hanbeck [50%] | 4h |  |
| 511 | 2.8.1.5.13 | Lights under the freeway | 1d? | 2002-11-28 | 2002-11-28 |  |  |  | 156.12d |  | start no earlier than 2002-11-26 | Aryan Hanbeck [50%] | 4h |  |
| 512 | 2.8.1.5.14 | Light under the tunnel | 1d? | 2002-11-28 | 2002-11-28 |  |  |  | 156.12d |  | start no earlier than 2002-11-26 | Aryan Hanbeck [50%] | 4h |  |
| 513 | 2.8.1.5.15 | Animating signs | 1d? | 2002-11-28 | 2002-11-28 |  |  |  | 156.12d |  | start no earlier than 2002-11-26 | Aryan Hanbeck [50%] | 4h |  |

Notes:
- 481: Priority: Slot machine (interactive prop) Water effect for Seaside More interactive props Interactive Props (Need to define workflow)

| ID | WBS | Task | Duration | Start | Finish | Predecessors | Total slack | Free slack | Constraint | Resources | Work |
| --- | --- | --- | --- | --- | --- | --- | --- | --- | --- | --- | --- |
| 514 | 2.8.1.6 | **Seaside Level 3 Effects:** | 1d? | 2002-11-29 | 2002-11-29 | 498 | 156.12d |  |  |  | 60h |
| 515 | 2.8.1.6.1 | Ocean water effects | 1d? | 2002-11-29 | 2002-11-29 |  | 156.12d |  | start no earlier than 2002-11-26 | Aryan Hanbeck [50%] | 4h |
| 516 | 2.8.1.6.2 | Animating signs in the squidport | 1d? | 2002-11-29 | 2002-11-29 |  | 156.12d |  | start no earlier than 2002-11-26 | Aryan Hanbeck [50%] | 4h |
| 517 | 2.8.1.6.3 | Animating signs in the commercial district | 1d? | 2002-11-29 | 2002-11-29 |  | 156.12d |  | start no earlier than 2002-11-26 | Aryan Hanbeck [50%] | 4h |
| 518 | 2.8.1.6.4 | Flocking Seagulls | 1d? | 2002-11-29 | 2002-11-29 |  | 156.12d |  | start no earlier than 2002-11-26 | Aryan Hanbeck [50%] | 4h |
| 519 | 2.8.1.6.5 | Seagulls randomly flying by ocean (ambient animation) | 1d? | 2002-11-29 | 2002-11-29 |  | 156.12d |  | start no earlier than 2002-11-26 | Aryan Hanbeck [50%] | 4h |
| 520 | 2.8.1.6.6 | Sunset Flare | 1d? | 2002-11-29 | 2002-11-29 |  | 156.12d |  | start no earlier than 2002-11-26 | Aryan Hanbeck [50%] | 4h |
| 521 | 2.8.1.6.7 | River effect | 1d? | 2002-11-29 | 2002-11-29 |  | 156.12d |  | start no earlier than 2002-11-26 | Aryan Hanbeck [50%] | 4h |
| 522 | 2.8.1.6.8 | Dam waterfall | 1d? | 2002-11-29 | 2002-11-29 |  | 156.12d |  | start no earlier than 2002-11-26 | Aryan Hanbeck [50%] | 4h |
| 523 | 2.8.1.6.9 | Corona lights | 1d? | 2002-11-29 | 2002-11-29 |  | 156.12d |  | start no earlier than 2002-11-26 | Aryan Hanbeck [50%] | 4h |
| 524 | 2.8.1.6.10 | Corona for the lighthouse | 1d? | 2002-11-29 | 2002-11-29 |  | 156.12d |  | start no earlier than 2002-11-26 | Aryan Hanbeck [50%] | 4h |
| 525 | 2.8.1.6.11 | Corona lighting for Duff blimp area | 1d? | 2002-11-29 | 2002-11-29 |  | 156.12d |  | start no earlier than 2002-11-26 | Aryan Hanbeck [50%] | 4h |
| 526 | 2.8.1.6.12 | Cola effect coming out of pipe | 1d? | 2002-11-29 | 2002-11-29 |  | 156.12d |  | start no earlier than 2002-11-26 | Aryan Hanbeck [50%] | 4h |
| 527 | 2.8.1.6.13 | Task 1 | 1d? | 2002-11-29 | 2002-11-29 |  | 156.12d |  | start no earlier than 2002-11-26 | Aryan Hanbeck [50%] | 4h |
| 528 | 2.8.1.6.14 | Task 2 | 1d? | 2002-11-29 | 2002-11-29 |  | 156.12d |  | start no earlier than 2002-11-26 | Aryan Hanbeck [50%] | 4h |
| 529 | 2.8.1.6.15 | Task 3 | 1d? | 2002-11-29 | 2002-11-29 |  | 156.12d |  | start no earlier than 2002-11-26 | Aryan Hanbeck [50%] | 4h |
| 530 | 2.8.1.7 | **Moe’s Tavern Interactive Gags (level 2 and 5) Eric Madill** | 9.88d? | 2002-11-18 | 2002-11-29 |  | 156.12d |  |  |  | 59.2h |
| 531 | 2.8.1.7.1 | Pickle Jar: Pressing action causes eggs in pickle jar to move around | 1d? | 2002-11-18 | 2002-11-19 |  | 161d | 4.88d | start no earlier than 2002-11-18 | Eric Madill | 8h |
| 532 | 2.8.1.7.2 | Love Tester: Pressing action causes love tester lights to flash and machine to shake. | 1d? | 2002-11-26 | 2002-11-26 | 531 | 156.12d | 0d | start no earlier than 2002-11-26 | Eric Madill | 8h |
| 533 | 2.8.1.7.3 | Slot machine: Pressing action causes machine to light up and shake (same as Burns Casino) | 1d? | 2002-11-27 | 2002-11-27 | 532 | 156.12d | 0d | start no earlier than 2002-11-26 | Eric Madill | 8h |
| 534 | 2.8.1.7.4 | Rotating poster- 7 duffs, out of state liquor license, Bartenders do it till you barf | 1d? | 2002-11-28 | 2002-11-28 | 533 | 156.12d | 0d | start no earlier than 2002-11-26 | Eric Madill | 8h |
| 535 | 2.8.1.7.5 | Flaming Moes | 1d? | 2002-11-29 | 2002-11-29 | 534 | 156.12d |  | start no earlier than 2002-11-26 | Eric Madill | 8h |
| 536 | 2.8.1.7.6 | Task 1 | 1d? | 2002-11-26 | 2002-11-26 |  | 159.12d |  | start no earlier than 2002-11-26 | Eric Madill [80%] | 6.4h |
| 537 | 2.8.1.7.7 | Task 2 | 1d? | 2002-11-26 | 2002-11-26 |  | 159.12d |  | start no earlier than 2002-11-26 | Eric Madill [80%] | 6.4h |
| 538 | 2.8.1.7.8 | Task 3 | 1d? | 2002-11-26 | 2002-11-26 |  | 159.12d |  | start no earlier than 2002-11-26 | Eric Madill [80%] | 6.4h |

| ID | WBS | Task | Duration | Start | Finish | Predecessors | Complete | Remaining | Total slack | Free slack | Constraint | Resources | Work | Actual work |
| --- | --- | --- | --- | --- | --- | --- | --- | --- | --- | --- | --- | --- | --- | --- |
| 539 | 2.8.11 | **FMV’s** | 6d? | 2002-11-26 | 2002-12-03 |  |  |  | 0d |  |  |  | 72h |  |
| 540 | 2.8.2.1 | Fmv 3 will be completed and ready for sound | 1d? | 2002-11-26 | 2002-11-26 |  |  |  | 0d |  | start no earlier than 2002-11-26 | Jeremy Mesana [25%]; Ron Sombilon [25%]; Yousuf Mapara [25%]; Trevor Lim [25%] | 8h |  |
| 541 | 2.8.2.2 | Fmv 1 final fixes with lighting and rendering (ie Homer’s skintone) | 1d? | 2002-11-27 | 2002-11-27 | 540 |  |  | 0d |  | start no earlier than 2002-11-26 | Jeremy Mesana [25%]; Ron Sombilon [25%]; Yousuf Mapara [25%]; Trevor Lim [25%] | 8h |  |
| 542 | 2.8.2.3 | Fmv 2 40% complete (waiting on dialogue) | 1d? | 2002-11-28 | 2002-11-28 | 541 |  |  | 0d |  | start no earlier than 2002-11-26 | Jeremy Mesana [25%]; Ron Sombilon [25%]; Yousuf Mapara [25%]; Trevor Lim [25%] | 8h |  |
| 543 | 2.8.12 | Fmv 4 Models, scene, lighting complete animatic 70 % | 1d? | 2002-11-29 | 2002-11-29 | 542 |  |  | 0d |  |  | Jeremy Mesana [25%]; Ron Sombilon [25%]; Yousuf Mapara [25%]; Trevor Lim [25%] | 8h |  |
| 544 | 2.8.13 | FMv 5 Models, scene, lighting complete animatic 50 % | 1d? | 2002-12-02 | 2002-12-02 | 543 |  |  | 0d |  |  | Jeremy Mesana [25%]; Ron Sombilon [25%]; Yousuf Mapara [25%]; Trevor Lim [25%] | 8h |  |
| 545 | 2.8.15 | Fmv 7 Models, scene, lighting complete animatic 50 % | 1d? | 2002-12-03 | 2002-12-03 | 544 |  |  | 0d |  |  | Jeremy Mesana [25%]; Ron Sombilon [25%]; Yousuf Mapara [25%]; Trevor Lim [25%] | 8h |  |
| 546 | 2.8.2.7 | Task 1 | 1d? | 2002-11-26 | 2002-11-26 |  |  |  | 159.12d |  | start no earlier than 2002-11-26 | Jeremy Mesana [25%]; Ron Sombilon [25%]; Yousuf Mapara [25%]; Trevor Lim [25%] | 8h |  |
| 547 | 2.8.2.8 | Task 2 | 1d? | 2002-11-26 | 2002-11-26 |  |  |  | 159.12d |  | start no earlier than 2002-11-26 | Jeremy Mesana [25%]; Ron Sombilon [25%]; Yousuf Mapara [25%]; Trevor Lim [25%] | 8h |  |
| 548 | 2.8.2.9 | Task 3 | 1d? | 2002-11-26 | 2002-11-26 |  |  |  | 159.12d |  | start no earlier than 2002-11-26 | Jeremy Mesana [25%]; Ron Sombilon [25%]; Yousuf Mapara [25%]; Trevor Lim [25%] | 8h |  |
| 549 | 2.8.3 | **World Builders** | 12d? | 2002-11-26 A | 2002-12-11 |  | 38% | 7.39d? | 148.12d |  |  |  | 518.4h | 204.8h |
| 550 | 2.8.16 | **Complete Level 2 Downtown** | 6d? | 2002-12-04 A | 2002-12-11 | 545 | 49% | 3.07d? | 148.12d |  |  |  | 134.4h | 70.4h |
| 551 | 2.8.17 | Final textures and geometry | 1d? | 2002-12-04 A | 2002-12-04 |  | 80% | 0.2d? | 132.72d | 0d |  | Sarah Meagher; Vincent Chin | 16h | 12.8h |
| 552 | 2.8.18 | CBV foundation for lighting | 1d? | 2002-12-05 A | 2002-12-05 | 551 | 80% | 0.2d? | 131.93d | 0d |  | Sarah Meagher; Vincent Chin | 16h | 12.8h |
| 553 | 2.8.3.1.3 | All local world sphere and main world sphere | 1d? | 2002-12-06 A | 2002-12-06 | 552 | 70% | 0.3d? | 131.22d | 0d | start no earlier than 2002-11-26 | Sarah Meagher; Vincent Chin | 16h | 11.2h |
| 554 | 2.8.3.1.4 | Phone booth placement | 1d? | 2002-12-09 A | 2002-12-09 | 553 | 90% | 0.1d? | 130.32d | 0d | start no earlier than 2002-11-26 | Sarah Meagher; Vincent Chin | 16h | 14.4h |
| 555 | 2.8.3.1.5 | Moveable and breakable prop placement | 1d? | 2002-12-10 A | 2002-12-10 | 554 | 90% | 0.1d? | 129.43d | 0d | start no earlier than 2002-11-26 | Sarah Meagher; Vincent Chin | 16h | 14.4h |
| 556 | 2.8.3.1.6 | Simpson’s billboard signs | 1d? | 2002-12-11 A | 2002-12-11 | 555 | 30% | 0.7d? | 129.12d | 0d | start no earlier than 2002-11-26 | Sarah Meagher; Vincent Chin | 16h | 4.8h |
| 557 | 2.8.3.1.7 | Task 1 | 1d? | 2002-12-04 | 2002-12-04 |  |  |  | 153.12d |  | start no earlier than 2002-11-26 | Sarah Meagher [80%]; Vincent Chin [80%] | 12.8h |  |
| 558 | 2.8.3.1.8 | Task 2 | 1d? | 2002-12-04 | 2002-12-04 |  |  |  | 153.12d |  | start no earlier than 2002-11-26 | Sarah Meagher [80%]; Vincent Chin [80%] | 12.8h |  |
| 559 | 2.8.3.1.9 | Task 3 | 1d? | 2002-12-04 | 2002-12-04 |  |  |  | 153.12d |  | start no earlier than 2002-11-26 | Sarah Meagher [80%]; Vincent Chin [80%] | 12.8h |  |
| 560 | 2.8.3.2 | **Complete Level 3 Seaside** | 1d? | 2002-11-26 A | 2002-11-26 |  | 38% | 0.62d? | 159.12d |  |  |  | 134.4h | 55.2h |
| 561 | 2.8.3.2.1 | Final textures and geometry | 1d? | 2002-11-26 A | 2002-11-26 |  | 85% | 0.15d? | 159.12d |  | start no earlier than 2002-11-26 | Sanela Mickovic; Ross Young | 16h | 13.6h |
| 562 | 2.8.3.2.2 | CBV foundation for lighting | 1d? | 2002-11-26 A | 2002-11-26 |  | 85% | 0.15d? | 159.12d |  | start no earlier than 2002-11-26 | Sanela Mickovic; Ross Young | 16h | 13.6h |
| 563 | 2.8.3.2.3 | All local world sphere and main world sphere | 1d? | 2002-11-26 A | 2002-11-26 |  | 85% | 0.15d? | 159.12d |  | start no earlier than 2002-11-26 | Sanela Mickovic; Ross Young | 16h | 13.6h |
| 564 | 2.8.3.2.4 | Phone booth placement | 1d? | 2002-11-26 | 2002-11-26 |  |  |  | 159.12d |  | start no earlier than 2002-11-26 | Sanela Mickovic; Ross Young | 16h |  |
| 565 | 2.8.3.2.5 | Moveable and breakable prop placement | 1d? | 2002-11-26 A | 2002-11-26 |  | 90% | 0.1d? | 159.12d |  | start no earlier than 2002-11-26 | Sanela Mickovic; Ross Young | 16h | 14.4h |
| 566 | 2.8.3.2.6 | Simpson’s billboard signs | 1d? | 2002-11-26 | 2002-11-26 |  |  |  | 159.12d |  | start no earlier than 2002-11-26 | Sanela Mickovic; Ross Young | 16h |  |
| 567 | 2.8.3.2.7 | Task 1 | 1d? | 2002-11-26 | 2002-11-26 |  |  |  | 159.12d |  | start no earlier than 2002-11-26 | Sanela Mickovic [80%]; Ross Young [80%] | 12.8h |  |
| 568 | 2.8.3.2.8 | Task 2 | 1d? | 2002-11-26 | 2002-11-26 |  |  |  | 159.12d |  | start no earlier than 2002-11-26 | Sanela Mickovic [80%]; Ross Young [80%] | 12.8h |  |
| 569 | 2.8.3.2.9 | Task 3 | 1d? | 2002-11-26 | 2002-11-26 |  |  |  | 159.12d |  | start no earlier than 2002-11-26 | Sanela Mickovic [80%]; Ross Young [80%] | 12.8h |  |

| ID | WBS | Task | Duration | Start | Finish | Predecessors | Complete | Remaining | Total slack | Free slack | Constraint | Resources | Work | Actual work |
| --- | --- | --- | --- | --- | --- | --- | --- | --- | --- | --- | --- | --- | --- | --- |
| 570 | 2.8.3.3 | **Complete Level 1 Suburbs** | 1d? | 2002-11-26 A | 2002-11-26 |  | 30% | 0.7d? | 159.12d |  |  |  | 249.6h | 79.2h |
| 571 | 2.8.3.3.1 | Redesign of suburbs layout | 1d? | 2002-11-26 A | 2002-11-26 |  | 80% | 0.2d? | 159.12d |  | start no earlier than 2002-11-26 | Jeff Pidsadny; Robert Peet; Eric Madill | 24h | 19.2h |
| 572 | 2.8.3.3.2 | Massing and geometry placement | 1d? | 2002-11-26 A | 2002-11-26 |  | 80% | 0.2d? | 159.12d |  | start no earlier than 2002-11-26 | Jeff Pidsadny; Robert Peet; Eric Madill | 24h | 19.2h |
| 573 | 2.8.3.3.3 | Final textures and geometry | 1d? | 2002-11-26 A | 2002-11-26 |  | 60% | 0.4d? | 159.12d |  | start no earlier than 2002-11-26 | Jeff Pidsadny; Robert Peet; Eric Madill | 24h | 14.4h |
| 574 | 2.8.3.3.4 | CBV foundation for lighting | 1d? | 2002-11-26 A | 2002-11-26 |  | 50% | 0.5d? | 159.12d |  | start no earlier than 2002-11-26 | Jeff Pidsadny; Robert Peet; Eric Madill | 24h | 12h |
| 575 | 2.8.3.3.5 | All local world sphere and main world sphere | 1d? | 2002-11-26 A | 2002-11-26 |  | 60% | 0.4d? | 159.12d |  | start no earlier than 2002-11-26 | Jeff Pidsadny; Robert Peet; Eric Madill | 24h | 14.4h |
| 576 | 2.8.3.3.6 | Phone booth placement | 1d? | 2002-11-26 | 2002-11-26 |  |  |  | 159.12d |  | start no earlier than 2002-11-26 | Jeff Pidsadny; Robert Peet; Eric Madill | 24h |  |
| 577 | 2.8.3.3.7 | Moveable and breakable prop placement | 1d? | 2002-11-26 | 2002-11-26 |  |  |  | 159.12d |  | start no earlier than 2002-11-26 | Jeff Pidsadny; Robert Peet; Eric Madill | 24h |  |
| 578 | 2.8.3.3.8 | Simpson’s billboard signs | 1d? | 2002-11-26 | 2002-11-26 |  |  |  | 159.12d |  | start no earlier than 2002-11-26 | Jeff Pidsadny; Robert Peet; Eric Madill | 24h |  |
| 579 | 2.8.3.3.9 | Task 1 | 1d? | 2002-11-26 | 2002-11-26 |  |  |  | 159.12d |  | start no earlier than 2002-11-26 | Jeff Pidsadny [80%]; Robert Peet [80%]; Eric Madill [80%] | 19.2h |  |
| 580 | 2.8.3.3.10 | Task 2 | 1d? | 2002-11-26 | 2002-11-26 |  |  |  | 159.12d |  | start no earlier than 2002-11-26 | Jeff Pidsadny [80%]; Robert Peet [80%]; Eric Madill [80%] | 19.2h |  |
| 581 | 2.8.3.3.11 | Task 3 | 1d? | 2002-11-26 | 2002-11-26 |  |  |  | 159.12d |  | start no earlier than 2002-11-26 | Jeff Pidsadny [80%]; Robert Peet [80%]; Eric Madill [80%] | 19.2h |  |
| 582 | 2.8.4 | **Slava** | 19d? | 2002-12-12 | 2003-01-07 |  |  |  | 129.12d |  |  |  | 140.8h |  |
| 583 | 2.8.19 | **30 Generic Pedestrians (includes 600 hi and 200 low res) (1 per day)** | 4d? | 2002-12-12 | 2002-12-17 | 556 |  |  | 129.12d |  |  |  | 25.6h |  |
| 584 | 2.8.4.1.1 | 10 adult females | 1d? | 2002-12-12 | 2002-12-12 |  |  |  | 129.12d | 0d | start no earlier than 2002-11-26 | Jaroslav Chorny [80%] | 6.4h |  |
| 585 | 2.8.4.1.2 | 10 adult males | 1d? | 2002-12-13 | 2002-12-13 | 584 |  |  | 129.12d | 0d | start no earlier than 2002-11-26 | Jaroslav Chorny [80%] | 6.4h |  |
| 586 | 2.8.4.1.3 | 5 male kids | 1d? | 2002-12-16 | 2002-12-16 | 585 |  |  | 129.12d | 0d | start no earlier than 2002-11-26 | Jaroslav Chorny [80%] | 6.4h |  |
| 587 | 2.8.4.1.4 | 5 female kids | 1d? | 2002-12-17 | 2002-12-17 | 586 |  |  | 129.12d | 0d | start no earlier than 2002-11-26 | Jaroslav Chorny [80%] | 6.4h |  |
| 588 | 2.8.4.2 | Finalize specular on user walker characters (1 day) | 1d? | 2002-12-18 | 2002-12-18 | 587 |  |  | 129.12d | 0d | start no earlier than 2002-11-26 | Jaroslav Chorny [80%] | 6.4h |  |
| 589 | 2.8.4.3 | **14 Bonus Characters (1 character 2 days)** | 14d? | 2002-12-19 | 2003-01-07 | 588 |  |  | 129.12d |  |  |  | 108.8h |  |
| 590 | 2.8.4.3.1 | Homer in his underwear | 1d? | 2002-12-19 | 2002-12-19 |  |  |  | 129.12d | 0d | start no earlier than 2002-11-26 | Jaroslav Chorny [80%] | 6.4h |  |
| 591 | 2.8.4.3.2 | Homer in Stonecutters Robe | 1d? | 2002-12-20 | 2002-12-20 | 590 |  |  | 129.12d | 0d | start no earlier than 2002-11-26 | Jaroslav Chorny [80%] | 6.4h |  |
| 592 | 2.8.4.3.3 | Fat Homer | 1d? | 2002-12-23 | 2002-12-23 | 591 |  |  | 129.12d | 0d | start no earlier than 2002-11-26 | Jaroslav Chorny [80%] | 6.4h |  |
| 593 | 2.8.4.3.4 | Homer with donut for head | 1d? | 2002-12-24 | 2002-12-24 | 592 |  |  | 129.12d | 0d | start no earlier than 2002-11-26 | Jaroslav Chorny [80%] | 6.4h |  |
| 594 | 2.8.4.3.5 | Bart in military dress uniform | 1d? | 2002-12-25 | 2002-12-25 | 593 |  |  | 129.12d | 0d | start no earlier than 2002-11-26 | Jaroslav Chorny [80%] | 6.4h |  |
| 595 | 2.8.4.3.6 | Bart in Ninja outfit | 1d? | 2002-12-26 | 2002-12-26 | 594 |  |  | 129.12d | 0d | start no earlier than 2002-11-26 | Jaroslav Chorny [80%] | 6.4h |  |
| 596 | 2.8.4.3.7 | Bartman outfit with Cape | 1d? | 2002-12-27 | 2002-12-27 | 595 |  |  | 129.12d | 0d | start no earlier than 2002-11-26 | Jaroslav Chorny [80%] | 6.4h |  |
| 597 | 2.8.4.3.8 | Bart in football uniform | 1d? | 2002-12-30 | 2002-12-30 | 596 |  |  | 129.12d | 0d | start no earlier than 2002-11-26 | Jaroslav Chorny [80%] | 6.4h |  |
| 598 | 2.8.4.3.9 | Lisa cool Lisa | 1d? | 2002-12-31 | 2002-12-31 | 597 |  |  | 129.12d | 0d | start no earlier than 2002-11-26 | Jaroslav Chorny [80%] | 6.4h |  |
| 599 | 2.8.4.3.10 | Lisa in hockey jersey | 1d? | 2003-01-01 | 2003-01-01 | 598 |  |  | 129.12d | 0d | start no earlier than 2002-11-26 | Jaroslav Chorny [80%] | 6.4h |  |
| 600 | 2.8.4.3.11 | Marge in police outfit | 1d? | 2003-01-02 | 2003-01-02 | 599 |  |  | 129.12d | 0d | start no earlier than 2002-11-26 | Jaroslav Chorny [80%] | 6.4h |  |
| 601 | 2.8.4.3.12 | Marge in florida prison uniform | 1d? | 2003-01-03 | 2003-01-03 | 600 |  |  | 129.12d | 0d | start no earlier than 2002-11-26 | Jaroslav Chorny [80%] | 6.4h |  |
| 602 | 2.8.4.3.13 | Apu in All American suit | 1d? | 2003-01-06 | 2003-01-06 | 601 |  |  | 129.12d | 0d | start no earlier than 2002-11-26 | Jaroslav Chorny [80%] | 6.4h |  |
| 603 | 2.8.4.3.14 | Apu in Indian Army uniform | 1d? | 2003-01-07 | 2003-01-07 | 602 |  |  | 129.12d |  | start no earlier than 2002-11-26 | Jaroslav Chorny [80%] | 6.4h |  |
| 604 | 2.8.4.3.15 | Task 1 | 1d? | 2002-12-19 | 2002-12-19 |  |  |  | 142.12d |  | start no earlier than 2002-11-26 | Jaroslav Chorny [80%] | 6.4h |  |
| 605 | 2.8.4.3.16 | Task 2 | 1d? | 2002-12-19 | 2002-12-19 |  |  |  | 142.12d |  | start no earlier than 2002-11-26 | Jaroslav Chorny [80%] | 6.4h |  |
| 606 | 2.8.4.3.17 | Task 3 | 1d? | 2002-12-19 | 2002-12-19 |  |  |  | 142.12d |  | start no earlier than 2002-11-26 | Jaroslav Chorny [80%] | 6.4h |  |

| ID | WBS | Task | Duration | Start | Finish | Predecessors | Complete | Remaining | Total slack | Free slack | Constraint | Resources | Work | Actual work |
| --- | --- | --- | --- | --- | --- | --- | --- | --- | --- | --- | --- | --- | --- | --- |
| 607 | 2.8.5 | **Kevin Fink** | 41.88d? | 2002-10-15 A | 2002-12-11 |  | 22% | 32.66d? | 148.12d |  |  |  | 155.2h | 35.2h |
| 608 | 2.8.5.1 | Rework of Duff truck in the game | 1d? | 2002-11-26 A | 2002-11-26 A |  | 100% |  |  |  | start no earlier than 2002-11-26 | Kevin Fink | 8h | 8h |
| 609 | 2.8.5.2 | Main vehicles shadows need to look sharper (Talk to James Harrison) | 1d? | 2002-11-26 A | 2002-11-26 |  | 90% | 0.1d? | 159.12d |  | start no earlier than 2002-11-26 | Kevin Fink | 8h | 7.2h |
| 610 | 2.8.5.3 | **Ensure all environmental mapping is working Top quality in game.** | 1d? | 2002-11-26 | 2002-11-26 |  |  |  | 159.12d |  |  |  | 8h |  |
| 611 | 2.8.5.3.1 | -Need to address damage states on vehicles with Environmental mapping | 1d? | 2002-11-26 | 2002-11-26 |  |  |  | 159.12d |  | start no earlier than 2002-11-26 | Kevin Fink | 8h |  |
| 612 | 2.8.5.4 | **Oversee issue of Lighting per level on vehicles.** | 1d? | 2002-11-26 | 2002-11-26 |  |  |  | 159.12d |  |  |  | 8h |  |
| 613 | 2.8.5.4.1 | -Talk to Joel and Devin. | 1d? | 2002-11-26 | 2002-11-26 |  |  |  | 159.12d |  | start no earlier than 2002-11-26 | Kevin Fink | 8h |  |
| 614 | 2.8.5.5 | **Tweaks to existing Driver Vehicles** | 1d? | 2002-10-15 A | 2002-10-16 A |  | 100% |  |  |  |  |  | 8h | 8h |
| 615 | 2.8.26 | -Based on feedback from vehicle meeting. | 1d? | 2002-10-15 A | 2002-10-16 A |  | 100% |  |  |  | start no earlier than 2002-10-15 | Kevin Fink | 8h | 8h |
| 616 | 2.8.5.6 | **Specific Particle effects for driver vehicles: Includes trunk gags.** | 1d? | 2002-11-26 | 2002-11-26 | 615 |  |  | 159.12d |  |  |  | 8h |  |
| 617 | 2.8.5.6.1 | Chris Mitchell to come up with design list | 1d? | 2002-11-26 | 2002-11-26 |  |  |  | 159.12d |  | start no earlier than 2002-11-26 | Kevin Fink | 8h |  |
| 618 | 2.8.5.7 | **Break lights and headlights working in-game:** | 1d? | 2002-11-27 A | 2002-11-27 A | 617 | 100% |  |  |  |  |  | 8h | 8h |
| 619 | 2.8.5.7.1 | Headlight glow and cone on main vehicle and glows only for traffic vehicles. Establish pipeline with Carey B or Greg. | 1d? | 2002-11-27 A | 2002-11-27 A |  | 100% |  |  |  | start no earlier than 2002-11-26 | Kevin Fink | 8h | 8h |
| 620 | 2.8.5.8 | **Build and texture Museum with T-Rex. (First pass)** | 1d? | 2002-11-28 | 2002-11-28 | 619 |  |  | 5d |  |  |  | 8h |  |
| 621 | 2.8.5.8.1 | Need design and reference (Talk to Vincent) | 1d? | 2002-11-28 | 2002-11-28 |  |  |  | 5d | 0d | start no earlier than 2002-11-26 | Kevin Fink | 8h |  |
| 622 | 2.8.5.9 | Fix skid marks (Too light right now) | 1d? | 2002-11-29 | 2002-11-29 | 621 |  |  | 5d | 0d | start no earlier than 2002-11-26 | Kevin Fink | 8h |  |
| 623 | 2.8.5.10 | Remaining reward vehicles | 1d? | 2002-12-02 | 2002-12-02 | 622 |  |  | 5d | 0d | start no earlier than 2002-11-26 | Kevin Fink | 8h |  |
| 624 | 2.8.5.11 | **Get all in with main texture only** | 7d? | 2002-12-03 A | 2002-12-11 | 623 | 5% | 6.65d? | 148.12d |  |  |  | 75.2h | 4h |
| 625 | 2.8.5.11.1 | Moe's Sedan | 1d? | 2002-12-03 | 2002-12-03 |  |  |  | 148.62d | 0d | start no earlier than 2002-11-26 | Kevin Fink | 8h |  |
| 626 | 2.8.5.11.2 | Book Burning Mobile | 1d? | 2002-12-04 | 2002-12-04 | 625 |  |  | 148.62d | 0d | start no earlier than 2002-11-26 | Kevin Fink | 8h |  |
| 627 | 2.8.5.11.3 | F1/Nascar | 1d? | 2002-12-05 | 2002-12-05 | 626 |  |  | 148.62d | 0d | start no earlier than 2002-11-26 | Kevin Fink | 8h |  |
| 628 | 2.8.5.11.4 | School Bus | 1d? | 2002-12-06 | 2002-12-06 | 627 |  |  | 148.62d | 0d | start no earlier than 2002-11-26 | Kevin Fink | 8h |  |
| 629 | 2.8.5.11.5 | PlowKing | 1d? | 2002-12-09 | 2002-12-09 | 628 |  |  | 148.62d | 0d | start no earlier than 2002-11-26 | Kevin Fink | 8h |  |
| 630 | 2.8.5.11.6 | Scorpio Car | 1d? | 2002-12-10 A | 2002-12-10 | 629 | 50% | 0.5d? | 148.12d | 0d | start no earlier than 2002-11-26 | Kevin Fink | 8h | 4h |
| 631 | 2.8.5.11.7 | Willie Tractor | 1d? | 2002-12-11 | 2002-12-11 | 630 |  |  | 148.12d |  | start no earlier than 2002-11-26 | Kevin Fink | 8h |  |
| 632 | 2.8.5.11.8 | Task 1 | 1d? | 2002-12-03 | 2002-12-03 |  |  |  | 154.12d |  | start no earlier than 2002-11-26 | Kevin Fink [80%] | 6.4h |  |
| 633 | 2.8.5.11.9 | Task 2 | 1d? | 2002-12-03 | 2002-12-03 |  |  |  | 154.12d |  | start no earlier than 2002-11-26 | Kevin Fink [80%] | 6.4h |  |
| 634 | 2.8.5.11.10 | Task 3 | 1d? | 2002-12-03 | 2002-12-03 |  |  |  | 154.12d |  | start no earlier than 2002-11-26 | Kevin Fink [80%] | 6.4h |  |

| ID | WBS | Task | Duration | Start | Finish | Predecessors | Total slack | Free slack | Constraint | Resources | Work |
| --- | --- | --- | --- | --- | --- | --- | --- | --- | --- | --- | --- |
| 635 | 2.8.6 | **Ting** | 16d? | 2002-11-26 | 2002-12-17 |  | 144.12d |  |  |  | 219.2h |
| 636 | 2.8.6.1 | **Front End:** | 16d? | 2002-11-26 | 2002-12-17 |  | 144.12d |  |  |  | 219.2h |
| 637 | 2.8.6.1.1 | **Card Gallery Screen:** | 1d? | 2002-11-26 | 2002-11-26 |  | 159.12d |  |  |  | 48h |
| 638 | 2.8.6.1.1.1 | **Collector Cards** | 1d? | 2002-11-26 | 2002-11-26 |  | 159.12d |  |  |  | 16h |
| 639 | 2.8.6.1.1.1.1 | 6 remaing cards to create | 1d? | 2002-11-26 | 2002-11-26 |  | 159.12d |  | start no earlier than 2002-11-26 | Ting Ting Chen | 8h |
| 640 | 2.8.6.1.1.1.2 | 7 Bonus cards | 1d? | 2002-11-26 | 2002-11-26 |  | 159.12d |  | start no earlier than 2002-11-26 | Ting Ting Chen | 8h |
| 641 | 2.8.6.1.1.2 | **Card Gallery** | 1d? | 2002-11-26 | 2002-11-26 |  | 159.12d |  |  |  | 32h |
| 642 | 2.8.6.1.1.2.1 | Finalize screen layout | 1d? | 2002-11-26 | 2002-11-26 |  | 159.12d |  | start no earlier than 2002-11-26 | Ting Ting Chen | 8h |
| 643 | 2.8.6.1.1.2.2 | Reassess highlight cursor and card (Yayoi to confirm) | 1d? | 2002-11-26 | 2002-11-26 |  | 159.12d |  | start no earlier than 2002-11-26 | Ting Ting Chen | 8h |
| 644 | 2.8.6.1.1.2.3 | Card gallery arrows to game specific art | 1d? | 2002-11-26 | 2002-11-26 |  | 159.12d |  | start no earlier than 2002-11-26 | Ting Ting Chen | 8h |
| 645 | 2.8.6.1.1.2.4 | Card info screen need to create character icons | 1d? | 2002-11-26 | 2002-11-26 |  | 159.12d |  | start no earlier than 2002-11-26 | Ting Ting Chen | 8h |
| 646 | 2.8.6.1.2 | **Option Screen:** | 16d? | 2002-11-26 | 2002-12-17 |  | 144.12d |  |  |  | 171.2h |
| 647 | 2.8.6.1.2.1 | **Controller** | 1d? | 2002-11-26 | 2002-11-26 |  | 159.12d |  |  |  | 16h |
| 648 | 2.8.6.1.2.1.1 | Create game specific buttons | 1d? | 2002-11-26 | 2002-11-26 |  | 159.12d |  | start no earlier than 2002-11-26 | Ting Ting Chen | 8h |
| 649 | 2.8.6.1.2.1.2 | *double check on the doc, 10- 12 text lines space required | 1d? | 2002-11-26 | 2002-11-26 |  | 159.12d |  | start no earlier than 2002-11-26 | Ting Ting Chen | 8h |
| 650 | 2.8.6.1.2.2 | **Vibration** | 1d? | 2002-11-26 | 2002-11-26 |  | 159.12d |  |  |  | 8h |
| 651 | 2.8.6.1.2.2.1 | Need to know if this is necessary (Designer to determine) | 1d? | 2002-11-26 | 2002-11-26 |  | 159.12d |  | start no earlier than 2002-11-26 | Ting Ting Chen | 8h |
| 652 | 2.8.33 | **Sound** | 2d? | 2002-11-26 | 2002-11-27 |  | 144.12d |  |  |  | 16h |
| 653 | 2.8.6.1.2.3.1 | Sound icon (Need to be reviewed by Yayoi) | 1d? | 2002-11-26 | 2002-11-26 |  | 144.12d | 0d | start no earlier than 2002-11-26 | Ting Ting Chen | 8h |
| 654 | 2.8.6.1.2.3.2 | Create model and texture Krusty baby monitor 3d. | 1d? | 2002-11-27 | 2002-11-27 | 653 | 144.12d | 0d | start no earlier than 2002-11-26 | Ting Ting Chen | 8h |
| 655 | 2.8.6.1.2.4 | **Fonts:** | 1d? | 2002-11-28 | 2002-11-28 | 654 | 144.12d |  |  |  | 8h |
| 656 | 2.8.6.1.2.4.1 | Finalize all fonts for the game | 1d? | 2002-11-28 | 2002-11-28 |  | 144.12d | 0d | start no earlier than 2002-11-26 | Ting Ting Chen | 8h |
| 657 | 2.8.6.1.2.5 | **HUD:** | 4d? | 2002-11-29 | 2002-12-04 | 656 | 144.12d |  |  |  | 32h |
| 658 | 2.8.6.1.2.5.1 | Redesign of icons for nav map. | 1d? | 2002-11-29 | 2002-11-29 |  | 144.12d | 0d | start no earlier than 2002-11-26 | Ting Ting Chen | 8h |
| 659 | 2.8.6.1.2.5.2 | Navigation map finalize art (with Borders) | 1d? | 2002-12-02 | 2002-12-02 | 658 | 144.12d | 0d | start no earlier than 2002-11-26 | Ting Ting Chen | 8h |
| 660 | 2.8.6.1.2.5.3 | Create mission icon collectibles (Need to determine with designers) | 1d? | 2002-12-03 | 2002-12-03 | 659 | 144.12d | 0d | start no earlier than 2002-11-26 | Ting Ting Chen | 8h |
| 661 | 2.8.6.1.2.5.4 | Action button reassess | 1d? | 2002-12-04 | 2002-12-04 | 660 | 144.12d | 0d | start no earlier than 2002-11-26 | Ting Ting Chen | 8h |

| ID | WBS | Task | Duration | Start | Finish | Predecessors | Total slack | Free slack | Constraint | Resources | Work |
| --- | --- | --- | --- | --- | --- | --- | --- | --- | --- | --- | --- |
| 662 | 2.8.6.1.2.6 | **Loading screen:** | 2d? | 2002-12-05 | 2002-12-06 | 661 | 144.12d |  |  |  | 16h |
| 663 | 2.8.6.1.2.6.1 | All level loading newspaper headline screen (need reference) (Talk to Chris) | 1d? | 2002-12-05 | 2002-12-05 |  | 144.12d | 0d | start no earlier than 2002-11-26 | Ting Ting Chen | 8h |
| 664 | 2.8.6.1.2.6.2 | Create in-game generic loading screen (Yayoi to determine) (Itchy and Scratchy) | 1d? | 2002-12-06 | 2002-12-06 | 663 | 144.12d | 0d | start no earlier than 2002-11-26 | Ting Ting Chen | 8h |
| 665 | 2.8.6.1.2.7 | **Pause menu:** | 7d? | 2002-12-09 | 2002-12-17 | 664 | 144.12d |  |  |  | 75.2h |
| 666 | 2.8.6.1.2.7.1 | Finalize Pause menu screen | 1d? | 2002-12-09 | 2002-12-09 |  | 144.12d | 0d | start no earlier than 2002-11-26 | Ting Ting Chen | 8h |
| 667 | 2.8.6.1.2.7.2 | Pause menu Map (Need to determined if needed) | 1d? | 2002-12-10 | 2002-12-10 | 666 | 144.12d | 0d | start no earlier than 2002-11-26 | Ting Ting Chen | 8h |
| 668 | 2.8.6.1.2.7.3 | Save game layout finalize | 1d? | 2002-12-11 | 2002-12-11 | 667 | 144.12d | 0d | start no earlier than 2002-11-26 | Ting Ting Chen | 8h |
| 669 | 2.8.34 | Quit game layout finalize | 1d? | 2002-12-12 | 2002-12-12 | 668 | 144.12d | 0d |  | Ting Ting Chen | 8h |
| 670 | 2.8.35 | Mission info text font finalize | 1d? | 2002-12-13 | 2002-12-13 | 669 | 144.12d | 0d |  | Ting Ting Chen | 8h |
| 671 | 2.8.36 | Redesign of card screen in pause menu maybe (Tech to investigate) | 1d? | 2002-12-16 | 2002-12-16 | 670 | 144.12d | 0d |  | Ting Ting Chen | 8h |
| 672 | 2.8.37 | Warning message overlay | 1d? | 2002-12-17 | 2002-12-17 | 671 | 144.12d |  |  | Ting Ting Chen | 8h |
| 673 | 2.8.6.1.2.7.8 | Task 1 | 1d? | 2002-12-09 | 2002-12-09 |  | 150.12d |  | start no earlier than 2002-11-26 | Ting Ting Chen [80%] | 6.4h |
| 674 | 2.8.6.1.2.7.9 | Task 2 | 1d? | 2002-12-09 | 2002-12-09 |  | 150.12d |  | start no earlier than 2002-11-26 | Ting Ting Chen [80%] | 6.4h |
| 675 | 2.8.6.1.2.7.10 | Task 3 | 1d? | 2002-12-09 | 2002-12-09 |  | 150.12d |  | start no earlier than 2002-11-26 | Ting Ting Chen [80%] | 6.4h |
| 676 | 2.9 | **Milestone 15 - Alpha (Jan 15th) (Temp)** | 51d? | 2002-12-16 | 2003-02-24 |  | 95d |  |  |  | 533.6h |
| 677 | 2.9.1 | All mission effects (Final) | 1d? | 2002-12-16 | 2002-12-17 |  | 95d | 0d | start no earlier than 2002-12-16 | Aryan Hanbeck | 8h |
| 678 | 2.9.2 | Mission effects Remaining for suburbs | 1d? | 2002-12-17 | 2002-12-18 | 677 | 95d | 0d |  | Aryan Hanbeck | 8h |
| 679 | 2.9.3 | Special effects for location volumes | 1d? | 2002-12-18 | 2002-12-19 | 678 | 95d | 0d |  | Aryan Hanbeck | 8h |
| 680 | 2.9.4 | Special effects for powerplant | 1d? | 2002-12-19 | 2002-12-20 | 679 | 95d | 0d |  | Aryan Hanbeck | 8h |
| 681 | 2.9.5 | Special effects for Downtown | 1d? | 2002-12-20 | 2002-12-23 | 680 | 95d | 0d |  | Aryan Hanbeck | 8h |
| 682 | 2.9.6 | Mission effects for Downtown (Probably done once suburbs mission effects final) | 1d? | 2002-12-23 | 2002-12-24 | 681 | 95d | 0d |  | Aryan Hanbeck | 8h |
| 683 | 2.9.7 | Breakables for Downtown | 1d? | 2002-12-24 | 2002-12-25 | 682 | 95d | 0d |  | Aryan Hanbeck | 8h |
| 684 | 2.9.8 | Breakables for Suburbs final | 1d? | 2002-12-25 | 2002-12-26 | 683 | 95d | 0d |  | Aryan Hanbeck | 8h |
| 685 | 2.9.9 | 2 interiors for Downtown complete | 1d? | 2002-12-26 | 2002-12-27 | 684 | 95d | 0d | start no earlier than 2002-10-15 | Eric Madill | 8h |
| 686 | 2.9.10 | design 2 interior for Seaside | 1d? | 2002-12-27 | 2002-12-30 | 685 | 95d | 0d |  | Eric Madill | 8h |
| 687 | 2.9.11 | Finalize intro movie (Pending Title for game approved) | 1d? | 2002-12-30 | 2002-12-31 | 686 | 95d | 0d | start no earlier than 2002-10-15 | Jeremy Mesana [25%]; Ron Sombilon [25%]; Yousuf Mapara [25%]; Trevor Lim [25%] | 8h |
| 688 | 2.9.12 | FMV #2 40% complete (% percentage will be higher if dialogue recorded) | 1d? | 2002-12-31 | 2003-01-01 | 687 | 95d | 0d |  | Jeremy Mesana [25%]; Ron Sombilon [25%]; Yousuf Mapara [25%]; Trevor Lim [25%] | 8h |
| 689 | 2.9.13 | Remaining in-game animations final (dependent on Driver, passenger, pedestrian all implemented in game) | 1d? | 2003-01-01 | 2003-01-02 | 688 | 95d | 0d |  | Jeremy Mesana [25%]; Ron Sombilon [25%]; Yousuf Mapara [25%]; Trevor Lim [25%] | 8h |

| ID | WBS | Task | Duration | Start | Finish | Predecessors | Total slack | Free slack | Constraint | Resources | Work |
| --- | --- | --- | --- | --- | --- | --- | --- | --- | --- | --- | --- |
| 690 | 2.9.14 | **FMV #2 - 7 animatic completed (Pending on FOx Approval)** | 5d? | 2003-01-02 | 2003-01-09 | 689 | 95d | 0d |  | Jeremy Mesana [25%]; Ron Sombilon [25%]; Yousuf Mapara [25%]; Trevor Lim [25%] | 80h |
| 691 | 2.9.14.1 | FMV #3 | 1d? | 2003-01-02 | 2003-01-03 |  | 95d | 0d |  | Jeremy Mesana [25%]; Ron Sombilon [25%]; Yousuf Mapara [25%]; Trevor Lim [25%] | 8h |
| 692 | 2.9.14.2 | FMV #4 | 1d? | 2003-01-03 | 2003-01-06 | 691 | 95d | 0d |  | Jeremy Mesana [25%]; Ron Sombilon [25%]; Yousuf Mapara [25%]; Trevor Lim [25%] | 8h |
| 693 | 2.9.14.3 | FMV #5 | 1d? | 2003-01-06 | 2003-01-07 | 692 | 95d | 0d |  | Jeremy Mesana [25%]; Ron Sombilon [25%]; Yousuf Mapara [25%]; Trevor Lim [25%] | 8h |
| 694 | 2.9.14.4 | FMV #6 | 1d? | 2003-01-07 | 2003-01-08 | 693 | 95d | 0d |  | Jeremy Mesana [25%]; Ron Sombilon [25%]; Yousuf Mapara [25%]; Trevor Lim [25%] | 8h |
| 695 | 2.9.14.5 | FMV #7 | 1d? | 2003-01-08 | 2003-01-09 | 694 | 95d |  |  | Jeremy Mesana [25%]; Ron Sombilon [25%]; Yousuf Mapara [25%]; Trevor Lim [25%] | 8h |
| 696 | 2.9.15 | Gags all working for suburbs and Downtown | 1d? | 2003-01-09 | 2003-01-10 | 690 | 95d | 0d |  | Jeremy Mesana [25%]; Ron Sombilon [25%]; Yousuf Mapara [25%]; Trevor Lim [25%] | 8h |
| 697 | 2.9.16 | 2 weeks on Seaside (all people) | 1d? | 2003-01-10 | 2003-01-13 | 696 | 95d | 0d | start no earlier than 2002-10-15 | Jeff Pidsadny [15%]; Sanela Mickovic [15%]; Ross Young [15%]; Robert Peet [15%]; Sarah Meagher [15%]; Vincent Chin [15%]; Allister Jones | 7.2h |
| 698 | 2.9.17 | 1 week halloween complete (2 people) | 1d? | 2003-01-13 | 2003-01-14 | 697 | 95d | 0d |  | Jeff Pidsadny [15%]; Sanela Mickovic [15%]; Ross Young [15%]; Robert Peet [15%]; Sarah Meagher [15%]; Vincent Chin [15%]; Allister Jones | 7.2h |
| 699 | 2.9.18 | 1 week Seaside complete (3 people) | 1d? | 2003-01-14 | 2003-01-15 | 698 | 95d | 0d |  | Jeff Pidsadny [15%]; Sanela Mickovic [15%]; Ross Young [15%]; Robert Peet [15%]; Sarah Meagher [15%]; Vincent Chin [15%]; Allister Jones | 7.2h |
| 700 | 2.9.19 | Selma | 1d? | 2003-01-15 | 2003-01-16 | 699 | 95d | 0d | start no earlier than 2002-10-15 | Jaroslav Chorny | 8h |
| 701 | 2.9.20 | Skinner | 1d? | 2003-01-16 | 2003-01-17 | 700 | 95d | 0d |  | Jaroslav Chorny | 8h |
| 702 | 2.9.21 | Sea Captain | 1d? | 2003-01-17 | 2003-01-20 | 701 | 95d | 0d |  | Jaroslav Chorny | 8h |
| 703 | 2.9.22 | Sideshow Bob float | 1d? | 2003-01-20 | 2003-01-21 | 702 | 95d | 0d |  | Jaroslav Chorny | 8h |
| 704 | 2.9.23 | **Generic Pedestrians** | 4d? | 2003-01-21 | 2003-01-27 | 703 | 95d | 0d |  | Jaroslav Chorny | 64h |
| 705 | 2.9.23.1 | Generic ped kid F | 1d? | 2003-01-21 | 2003-01-22 |  | 95d | 0d |  | Jaroslav Chorny | 8h |
| 706 | 2.9.23.2 | Generic ped kid M | 1d? | 2003-01-22 | 2003-01-23 | 705 | 95d | 0d |  | Jaroslav Chorny | 8h |
| 707 | 2.9.23.3 | Generic ped adult M2 | 1d? | 2003-01-23 | 2003-01-24 | 706 | 95d | 0d |  | Jaroslav Chorny | 8h |
| 708 | 2.9.23.4 | Generic ped adult F2 | 1d? | 2003-01-24 | 2003-01-27 | 707 | 95d |  |  | Jaroslav Chorny | 8h |
| 709 | 2.9.24 | Zombie character | 1d? | 2003-01-27 | 2003-01-28 | 704 | 95d | 0d |  | Jaroslav Chorny | 8h |
| 710 | 2.9.25 | (Need to find out from designers about monkey status) | 1d? | 2003-01-28 | 2003-01-29 | 709 | 95d | 0d |  | Jaroslav Chorny | 8h |
| 711 | 2.9.26 | Damage states for all driver vehicles complete | 1d? | 2003-01-29 | 2003-01-30 | 710 | 95d | 0d | start no earlier than 2002-10-15 | Kevin Fink | 8h |
| 712 | 2.9.27 | Cartoonify Traffic vehicles | 1d? | 2003-01-30 | 2003-01-31 | 711 | 95d | 0d |  | Kevin Fink | 8h |
| 713 | 2.9.28 | Environmental mapping complete on vehicles. | 1d? | 2003-01-31 | 2003-02-03 | 712 | 95d | 0d |  | Kevin Fink | 8h |
| 714 | 2.9.29 | Track sprays and SKid marks final | 1d? | 2003-02-03 | 2003-02-04 | 713 | 95d | 0d |  | Kevin Fink | 8h |
| 715 | 2.9.30 | More vehicles | 1d? | 2003-02-04 | 2003-02-05 | 714 | 95d | 0d |  | Kevin Fink | 8h |

Notes:
- 705: (Slava talk to Dusit about More gens)

| ID | WBS | Task | Duration | Start | Finish | Predecessors | Total slack | Free slack | Constraint | Resources | Work |
| --- | --- | --- | --- | --- | --- | --- | --- | --- | --- | --- | --- |
| 716 | 2.9.31 | **Generic Gremlin (Race)** | 7d? | 2003-02-05 | 2003-02-14 | 715 | 95d | 0d |  | Kevin Fink | 112h |
| 717 | 2.9.31.1 | (3) Black Limo (Chase and Destroy)* | 1d? | 2003-02-05 | 2003-02-06 |  | 95d | 0d |  | Kevin Fink | 8h |
| 718 | 2.9.31.2 | (5) Cola truck and Black Sedans (Chase and evade) (red /white siren ) | 1d? | 2003-02-06 | 2003-02-07 | 717 | 95d | 0d |  | Kevin Fink | 8h |
| 719 | 2.9.31.3 | (5) Armored Truck (Chase and destroy) | 1d? | 2003-02-07 | 2003-02-10 | 718 | 95d | 0d |  | Kevin Fink | 8h |
| 720 | 2.9.31.4 | (5) Curator vehicle (Race) | 1d? | 2003-02-10 | 2003-02-11 | 719 | 95d | 0d |  | Kevin Fink | 8h |
| 721 | 2.9.31.5 | (6) Krusty> '> s Limo (race) | 1d? | 2003-02-11 | 2003-02-12 | 720 | 95d | 0d |  | Kevin Fink | 8h |
| 722 | 2.9.31.6 | (7) Black Ferrini (race) | 1d? | 2003-02-12 | 2003-02-13 | 721 | 95d | 0d |  | Kevin Fink | 8h |
| 723 | 2.9.31.7 | (7) Generic Zombie Hearse Vehicle ???? ( Evade) (green/orange siren ) | 1d? | 2003-02-13 | 2003-02-14 | 722 | 95d | 0d |  | Kevin Fink | 8h |
| 724 | 2.9.32 | more reward vehicles (have yet to be determined with designers) | 1d? | 2003-02-14 | 2003-02-15 | 723, 716 | 95d | 0d |  | Kevin Fink | 8h |
| 725 | 2.9.33 | Finalize Navigation map on hud (Needs redesign) | 1d? | 2003-02-15 | 2003-02-17 | 724 | 95d | 0d | start no earlier than 2002-10-15 | Ting Ting Chen | 8h |
| 726 | 2.9.34 | Mission object icons for HUD | 1d? | 2003-02-17 | 2003-02-18 | 725 | 95d | 0d |  | Ting Ting Chen | 8h |
| 727 | 2.9.35 | All collector cards complete for all levels (This may not be feasible pending new design changes) | 1d? | 2003-02-18 | 2003-02-19 | 726 | 95d | 0d |  | Ting Ting Chen | 8h |
| 728 | 2.9.36 | Finalize Card Gallery | 1d? | 2003-02-19 | 2003-02-20 | 727 | 95d | 0d |  | Ting Ting Chen | 8h |
| 729 | 2.9.37 | Finalize Pause Menu | 1d? | 2003-02-20 | 2003-02-21 | 728 | 95d | 0d |  | Ting Ting Chen | 8h |
| 730 | 2.9.38 | Design menu screens for new designs (Need to clarify with Carey) | 1d? | 2003-02-21 | 2003-02-24 | 729 | 95d |  |  | Ting Ting Chen | 8h |
| 731 | 2.10 | **Milestone 16 - Beta (Feb 28th) (Temp)** | 51d? | 2003-01-16 | 2003-03-26 |  | 72d |  |  |  | 533.6h |
| 732 | 2.10.1 | All mission effects (Final) | 1d? | 2003-01-16 | 2003-01-17 |  | 72d | 0d | start no earlier than 2003-01-16 | Aryan Hanbeck | 8h |
| 733 | 2.10.2 | Mission effects Remaining for suburbs | 1d? | 2003-01-17 | 2003-01-20 | 732 | 72d | 0d |  | Aryan Hanbeck | 8h |
| 734 | 2.10.3 | Special effects for location volumes | 1d? | 2003-01-20 | 2003-01-21 | 733 | 72d | 0d |  | Aryan Hanbeck | 8h |
| 735 | 2.10.4 | Special effects for powerplant | 1d? | 2003-01-21 | 2003-01-22 | 734 | 72d | 0d |  | Aryan Hanbeck | 8h |
| 736 | 2.10.5 | Special effects for Downtown | 1d? | 2003-01-22 | 2003-01-23 | 735 | 72d | 0d |  | Aryan Hanbeck | 8h |
| 737 | 2.10.6 | Mission effects for Downtown (Probably done once suburbs mission effects final) | 1d? | 2003-01-23 | 2003-01-24 | 736 | 72d | 0d |  | Aryan Hanbeck | 8h |
| 738 | 2.10.7 | Breakables for Downtown | 1d? | 2003-01-24 | 2003-01-27 | 737 | 72d | 0d |  | Aryan Hanbeck | 8h |
| 739 | 2.10.8 | Breakables for Suburbs final | 1d? | 2003-01-27 | 2003-01-28 | 738 | 72d | 0d |  | Aryan Hanbeck | 8h |
| 740 | 2.10.9 | 2 interiors for Downtown complete | 1d? | 2003-01-28 | 2003-01-29 | 739 | 72d | 0d | start no earlier than 2002-10-15 | Eric Madill | 8h |
| 741 | 2.10.10 | design 2 interior for Seaside | 1d? | 2003-01-29 | 2003-01-30 | 740 | 72d | 0d |  | Eric Madill | 8h |
| 742 | 2.10.11 | Finalize intro movie (Pending Title for game approved) | 1d? | 2003-01-30 | 2003-01-31 | 741 | 72d | 0d | start no earlier than 2002-10-15 | Jeremy Mesana [25%]; Ron Sombilon [25%]; Yousuf Mapara [25%]; Trevor Lim [25%] | 8h |
| 743 | 2.10.12 | FMV #2 40% complete (% percentage will be higher if dialogue recorded) | 1d? | 2003-01-31 | 2003-02-03 | 742 | 72d | 0d |  | Jeremy Mesana [25%]; Ron Sombilon [25%]; Yousuf Mapara [25%]; Trevor Lim [25%] | 8h |
| 744 | 2.10.13 | Remaining in-game animations final (dependent on Driver, passenger, pedestrian all implemented in game) | 1d? | 2003-02-03 | 2003-02-04 | 743 | 72d | 0d |  | Jeremy Mesana [25%]; Ron Sombilon [25%]; Yousuf Mapara [25%]; Trevor Lim [25%] | 8h |

| ID | WBS | Task | Duration | Start | Finish | Predecessors | Total slack | Free slack | Constraint | Resources | Work |
| --- | --- | --- | --- | --- | --- | --- | --- | --- | --- | --- | --- |
| 745 | 2.10.14 | **FMV #2 - 7 animatic completed (Pending on FOx Approval)** | 5d? | 2003-02-04 | 2003-02-11 | 744 | 72d | 0d |  | Jeremy Mesana [25%]; Ron Sombilon [25%]; Yousuf Mapara [25%]; Trevor Lim [25%] | 80h |
| 746 | 2.10.14.1 | FMV #3 | 1d? | 2003-02-04 | 2003-02-05 |  | 72d | 0d |  | Jeremy Mesana [25%]; Ron Sombilon [25%]; Yousuf Mapara [25%]; Trevor Lim [25%] | 8h |
| 747 | 2.10.14.2 | FMV #4 | 1d? | 2003-02-05 | 2003-02-06 | 746 | 72d | 0d |  | Jeremy Mesana [25%]; Ron Sombilon [25%]; Yousuf Mapara [25%]; Trevor Lim [25%] | 8h |
| 748 | 2.10.14.3 | FMV #5 | 1d? | 2003-02-06 | 2003-02-07 | 747 | 72d | 0d |  | Jeremy Mesana [25%]; Ron Sombilon [25%]; Yousuf Mapara [25%]; Trevor Lim [25%] | 8h |
| 749 | 2.10.14.4 | FMV #6 | 1d? | 2003-02-07 | 2003-02-10 | 748 | 72d | 0d |  | Jeremy Mesana [25%]; Ron Sombilon [25%]; Yousuf Mapara [25%]; Trevor Lim [25%] | 8h |
| 750 | 2.10.14.5 | FMV #7 | 1d? | 2003-02-10 | 2003-02-11 | 749 | 72d |  |  | Jeremy Mesana [25%]; Ron Sombilon [25%]; Yousuf Mapara [25%]; Trevor Lim [25%] | 8h |
| 751 | 2.10.15 | Gags all working for suburbs and Downtown | 1d? | 2003-02-11 | 2003-02-12 | 745 | 72d | 0d |  | Jeremy Mesana [25%]; Ron Sombilon [25%]; Yousuf Mapara [25%]; Trevor Lim [25%] | 8h |
| 752 | 2.10.16 | 2 weeks on Seaside (all people) | 1d? | 2003-02-12 | 2003-02-13 | 751 | 72d | 0d | start no earlier than 2002-10-15 | Jeff Pidsadny [15%]; Sanela Mickovic [15%]; Ross Young [15%]; Robert Peet [15%]; Sarah Meagher [15%]; Vincent Chin [15%]; Allister Jones | 7.2h |
| 753 | 2.10.17 | 1 week halloween complete (2 people) | 1d? | 2003-02-13 | 2003-02-14 | 752 | 72d | 0d |  | Jeff Pidsadny [15%]; Sanela Mickovic [15%]; Ross Young [15%]; Robert Peet [15%]; Sarah Meagher [15%]; Vincent Chin [15%]; Allister Jones | 7.2h |
| 754 | 2.10.18 | 1 week Seaside complete (3 people) | 1d? | 2003-02-14 | 2003-02-15 | 753 | 72d | 0d |  | Jeff Pidsadny [15%]; Sanela Mickovic [15%]; Ross Young [15%]; Robert Peet [15%]; Sarah Meagher [15%]; Vincent Chin [15%]; Allister Jones | 7.2h |
| 755 | 2.10.19 | Selma | 1d? | 2003-02-15 | 2003-02-17 | 754 | 72d | 0d | start no earlier than 2002-10-15 | Jaroslav Chorny | 8h |
| 756 | 2.10.20 | Skinner | 1d? | 2003-02-17 | 2003-02-18 | 755 | 72d | 0d |  | Jaroslav Chorny | 8h |
| 757 | 2.10.21 | Sea Captain | 1d? | 2003-02-18 | 2003-02-19 | 756 | 72d | 0d |  | Jaroslav Chorny | 8h |
| 758 | 2.10.22 | Sideshow Bob float | 1d? | 2003-02-19 | 2003-02-20 | 757 | 72d | 0d |  | Jaroslav Chorny | 8h |
| 759 | 2.10.23 | **Generic Pedestrians** | 4d? | 2003-02-20 | 2003-02-26 | 758 | 72d | 0d |  | Jaroslav Chorny | 64h |
| 760 | 2.10.23.1 | Generic ped kid F | 1d? | 2003-02-20 | 2003-02-21 |  | 72d | 0d |  | Jaroslav Chorny | 8h |
| 761 | 2.10.23.2 | Generic ped kid M | 1d? | 2003-02-21 | 2003-02-24 | 760 | 72d | 0d |  | Jaroslav Chorny | 8h |
| 762 | 2.10.23.3 | Generic ped adult M2 | 1d? | 2003-02-24 | 2003-02-25 | 761 | 72d | 0d |  | Jaroslav Chorny | 8h |
| 763 | 2.10.23.4 | Generic ped adult F2 | 1d? | 2003-02-25 | 2003-02-26 | 762 | 72d |  |  | Jaroslav Chorny | 8h |
| 764 | 2.10.24 | Zombie character | 1d? | 2003-02-26 | 2003-02-27 | 759 | 72d | 0d |  | Jaroslav Chorny | 8h |
| 765 | 2.10.25 | (Need to find out from designers about monkey status) | 1d? | 2003-02-27 | 2003-02-28 | 764 | 72d | 0d |  | Jaroslav Chorny | 8h |
| 766 | 2.10.26 | Damage states for all driver vehicles complete | 1d? | 2003-02-28 | 2003-03-03 | 765 | 72d | 0d | start no earlier than 2002-10-15 | Kevin Fink | 8h |
| 767 | 2.10.27 | Cartoonify Traffic vehicles | 1d? | 2003-03-03 | 2003-03-04 | 766 | 72d | 0d |  | Kevin Fink | 8h |
| 768 | 2.10.28 | Environmental mapping complete on vehicles. | 1d? | 2003-03-04 | 2003-03-05 | 767 | 72d | 0d |  | Kevin Fink | 8h |
| 769 | 2.10.29 | Track sprays and SKid marks final | 1d? | 2003-03-05 | 2003-03-06 | 768 | 72d | 0d |  | Kevin Fink | 8h |
| 770 | 2.10.30 | More vehicles | 1d? | 2003-03-06 | 2003-03-07 | 769 | 72d | 0d |  | Kevin Fink | 8h |

Notes:
- 760: (Slava talk to Dusit about More gens)

| ID | WBS | Task | Duration | Start | Finish | Predecessors | Total slack | Free slack | Constraint | Resources | Work |
| --- | --- | --- | --- | --- | --- | --- | --- | --- | --- | --- | --- |
| 771 | 2.10.31 | **Generic Gremlin (Race)** | 7d? | 2003-03-07 | 2003-03-17 | 770 | 72d | 0d |  | Kevin Fink | 112h |
| 772 | 2.10.31.1 | (3) Black Limo (Chase and Destroy)* | 1d? | 2003-03-07 | 2003-03-10 |  | 72d | 0d |  | Kevin Fink | 8h |
| 773 | 2.10.31.2 | (5) Cola truck and Black Sedans (Chase and evade) (red /white siren ) | 1d? | 2003-03-10 | 2003-03-11 | 772 | 72d | 0d |  | Kevin Fink | 8h |
| 774 | 2.10.31.3 | (5) Armored Truck (Chase and destroy) | 1d? | 2003-03-11 | 2003-03-12 | 773 | 72d | 0d |  | Kevin Fink | 8h |
| 775 | 2.10.31.4 | (5) Curator vehicle (Race) | 1d? | 2003-03-12 | 2003-03-13 | 774 | 72d | 0d |  | Kevin Fink | 8h |
| 776 | 2.10.31.5 | (6) Krusty> '> s Limo (race) | 1d? | 2003-03-13 | 2003-03-14 | 775 | 72d | 0d |  | Kevin Fink | 8h |
| 777 | 2.10.31.6 | (7) Black Ferrini (race) | 1d? | 2003-03-14 | 2003-03-15 | 776 | 72d | 0d |  | Kevin Fink | 8h |
| 778 | 2.10.31.7 | (7) Generic Zombie Hearse Vehicle ???? ( Evade) (green/orange siren ) | 1d? | 2003-03-15 | 2003-03-17 | 777 | 72d | 0d |  | Kevin Fink | 8h |
| 779 | 2.10.32 | more reward vehicles (have yet to be determined with designers) | 1d? | 2003-03-17 | 2003-03-18 | 778, 771 | 72d | 0d |  | Kevin Fink | 8h |
| 780 | 2.10.33 | Finalize Navigation map on hud (Needs redesign) | 1d? | 2003-03-18 | 2003-03-19 | 779 | 72d | 0d | start no earlier than 2002-10-15 | Ting Ting Chen | 8h |
| 781 | 2.10.34 | Mission object icons for HUD | 1d? | 2003-03-19 | 2003-03-20 | 780 | 72d | 0d |  | Ting Ting Chen | 8h |
| 782 | 2.10.35 | All collector cards complete for all levels (This may not be feasible pending new design changes) | 1d? | 2003-03-20 | 2003-03-21 | 781 | 72d | 0d |  | Ting Ting Chen | 8h |
| 783 | 2.10.36 | Finalize Card Gallery | 1d? | 2003-03-21 | 2003-03-24 | 782 | 72d | 0d |  | Ting Ting Chen | 8h |
| 784 | 2.10.37 | Finalize Pause Menu | 1d? | 2003-03-24 | 2003-03-25 | 783 | 72d | 0d |  | Ting Ting Chen | 8h |
| 785 | 2.10.38 | Design menu screens for new designs (Need to clarify with Carey) | 1d? | 2003-03-25 | 2003-03-26 | 784 | 72d |  |  | Ting Ting Chen | 8h |
| 786 | 2.11 | **Milestone 17 - Final (March 30th) (Temp)** | 51d? | 2003-03-03 | 2003-05-12 |  | 39d |  |  |  | 533.6h |
| 787 | 2.11.1 | All mission effects (Final) | 1d? | 2003-03-03 | 2003-03-04 |  | 39d | 0d | start no earlier than 2003-03-03 | Aryan Hanbeck | 8h |
| 788 | 2.11.2 | Mission effects Remaining for suburbs | 1d? | 2003-03-04 | 2003-03-05 | 787 | 39d | 0d |  | Aryan Hanbeck | 8h |
| 789 | 2.11.3 | Special effects for location volumes | 1d? | 2003-03-05 | 2003-03-06 | 788 | 39d | 0d |  | Aryan Hanbeck | 8h |
| 790 | 2.11.4 | Special effects for powerplant | 1d? | 2003-03-06 | 2003-03-07 | 789 | 39d | 0d |  | Aryan Hanbeck | 8h |
| 791 | 2.11.5 | Special effects for Downtown | 1d? | 2003-03-07 | 2003-03-10 | 790 | 39d | 0d |  | Aryan Hanbeck | 8h |
| 792 | 2.11.6 | Mission effects for Downtown (Probably done once suburbs mission effects final) | 1d? | 2003-03-10 | 2003-03-11 | 791 | 39d | 0d |  | Aryan Hanbeck | 8h |
| 793 | 2.11.7 | Breakables for Downtown | 1d? | 2003-03-11 | 2003-03-12 | 792 | 39d | 0d |  | Aryan Hanbeck | 8h |
| 794 | 2.11.8 | Breakables for Suburbs final | 1d? | 2003-03-12 | 2003-03-13 | 793 | 39d | 0d |  | Aryan Hanbeck | 8h |
| 795 | 2.11.9 | 2 interiors for Downtown complete | 1d? | 2003-03-13 | 2003-03-14 | 794 | 39d | 0d | start no earlier than 2002-10-15 | Eric Madill | 8h |
| 796 | 2.11.10 | design 2 interior for Seaside | 1d? | 2003-03-14 | 2003-03-15 | 795 | 39d | 0d |  | Eric Madill | 8h |
| 797 | 2.11.11 | Finalize intro movie (Pending Title for game approved) | 1d? | 2003-03-15 | 2003-03-17 | 796 | 39d | 0d | start no earlier than 2002-10-15 | Jeremy Mesana [25%]; Ron Sombilon [25%]; Yousuf Mapara [25%]; Trevor Lim [25%] | 8h |
| 798 | 2.11.12 | FMV #2 40% complete (% percentage will be higher if dialogue recorded) | 1d? | 2003-03-17 | 2003-03-18 | 797 | 39d | 0d |  | Jeremy Mesana [25%]; Ron Sombilon [25%]; Yousuf Mapara [25%]; Trevor Lim [25%] | 8h |
| 799 | 2.11.13 | Remaining in-game animations final (dependent on Driver, passenger, pedestrian all implemented in game) | 1d? | 2003-03-18 | 2003-03-19 | 798 | 39d | 0d |  | Jeremy Mesana [25%]; Ron Sombilon [25%]; Yousuf Mapara [25%]; Trevor Lim [25%] | 8h |

| ID | WBS | Task | Duration | Start | Finish | Predecessors | Total slack | Free slack | Constraint | Resources | Work |
| --- | --- | --- | --- | --- | --- | --- | --- | --- | --- | --- | --- |
| 800 | 2.11.14 | **FMV #2 - 7 animatic completed (Pending on FOx Approval)** | 5d? | 2003-03-19 | 2003-03-26 | 799 | 39d | 0d |  | Jeremy Mesana [25%]; Ron Sombilon [25%]; Yousuf Mapara [25%]; Trevor Lim [25%] | 80h |
| 801 | 2.11.14.1 | FMV #3 | 1d? | 2003-03-19 | 2003-03-20 |  | 39d | 0d |  | Jeremy Mesana [25%]; Ron Sombilon [25%]; Yousuf Mapara [25%]; Trevor Lim [25%] | 8h |
| 802 | 2.11.14.2 | FMV #4 | 1d? | 2003-03-20 | 2003-03-21 | 801 | 39d | 0d |  | Jeremy Mesana [25%]; Ron Sombilon [25%]; Yousuf Mapara [25%]; Trevor Lim [25%] | 8h |
| 803 | 2.11.14.3 | FMV #5 | 1d? | 2003-03-21 | 2003-03-24 | 802 | 39d | 0d |  | Jeremy Mesana [25%]; Ron Sombilon [25%]; Yousuf Mapara [25%]; Trevor Lim [25%] | 8h |
| 804 | 2.11.14.4 | FMV #6 | 1d? | 2003-03-24 | 2003-03-25 | 803 | 39d | 0d |  | Jeremy Mesana [25%]; Ron Sombilon [25%]; Yousuf Mapara [25%]; Trevor Lim [25%] | 8h |
| 805 | 2.11.14.5 | FMV #7 | 1d? | 2003-03-25 | 2003-03-26 | 804 | 39d |  |  | Jeremy Mesana [25%]; Ron Sombilon [25%]; Yousuf Mapara [25%]; Trevor Lim [25%] | 8h |
| 806 | 2.11.15 | Gags all working for suburbs and Downtown | 1d? | 2003-03-26 | 2003-03-27 | 800 | 39d | 0d |  | Jeremy Mesana [25%]; Ron Sombilon [25%]; Yousuf Mapara [25%]; Trevor Lim [25%] | 8h |
| 807 | 2.11.16 | 2 weeks on Seaside (all people) | 1d? | 2003-03-27 | 2003-03-28 | 806 | 39d | 0d | start no earlier than 2002-10-15 | Jeff Pidsadny [15%]; Sanela Mickovic [15%]; Ross Young [15%]; Robert Peet [15%]; Sarah Meagher [15%]; Vincent Chin [15%]; Allister Jones | 7.2h |
| 808 | 2.11.17 | 1 week halloween complete (2 people) | 1d? | 2003-03-28 | 2003-03-31 | 807 | 39d | 0d |  | Jeff Pidsadny [15%]; Sanela Mickovic [15%]; Ross Young [15%]; Robert Peet [15%]; Sarah Meagher [15%]; Vincent Chin [15%]; Allister Jones | 7.2h |
| 809 | 2.11.18 | 1 week Seaside complete (3 people) | 1d? | 2003-03-31 | 2003-04-01 | 808 | 39d | 0d |  | Jeff Pidsadny [15%]; Sanela Mickovic [15%]; Ross Young [15%]; Robert Peet [15%]; Sarah Meagher [15%]; Vincent Chin [15%]; Allister Jones | 7.2h |
| 810 | 2.11.19 | Selma | 1d? | 2003-04-01 | 2003-04-02 | 809 | 39d | 0d | start no earlier than 2002-10-15 | Jaroslav Chorny | 8h |
| 811 | 2.11.20 | Skinner | 1d? | 2003-04-02 | 2003-04-03 | 810 | 39d | 0d |  | Jaroslav Chorny | 8h |
| 812 | 2.11.21 | Sea Captain | 1d? | 2003-04-03 | 2003-04-04 | 811 | 39d | 0d |  | Jaroslav Chorny | 8h |
| 813 | 2.11.22 | Sideshow Bob float | 1d? | 2003-04-04 | 2003-04-07 | 812 | 39d | 0d |  | Jaroslav Chorny | 8h |
| 814 | 2.11.23 | **Generic Pedestrians** | 4d? | 2003-04-07 | 2003-04-11 | 813 | 39d | 0d |  | Jaroslav Chorny | 64h |
| 815 | 2.11.23.1 | Generic ped kid F | 1d? | 2003-04-07 | 2003-04-08 |  | 39d | 0d |  | Jaroslav Chorny | 8h |
| 816 | 2.11.23.2 | Generic ped kid M | 1d? | 2003-04-08 | 2003-04-09 | 815 | 39d | 0d |  | Jaroslav Chorny | 8h |
| 817 | 2.11.23.3 | Generic ped adult M2 | 1d? | 2003-04-09 | 2003-04-10 | 816 | 39d | 0d |  | Jaroslav Chorny | 8h |
| 818 | 2.11.23.4 | Generic ped adult F2 | 1d? | 2003-04-10 | 2003-04-11 | 817 | 39d |  |  | Jaroslav Chorny | 8h |
| 819 | 2.11.24 | Zombie character | 1d? | 2003-04-11 | 2003-04-14 | 814 | 39d | 0d |  | Jaroslav Chorny | 8h |
| 820 | 2.11.25 | (Need to find out from designers about monkey status) | 1d? | 2003-04-14 | 2003-04-15 | 819 | 39d | 0d |  | Jaroslav Chorny | 8h |
| 821 | 2.11.26 | Damage states for all driver vehicles complete | 1d? | 2003-04-15 | 2003-04-16 | 820 | 39d | 0d | start no earlier than 2002-10-15 | Kevin Fink | 8h |
| 822 | 2.11.27 | Cartoonify Traffic vehicles | 1d? | 2003-04-16 | 2003-04-17 | 821 | 39d | 0d |  | Kevin Fink | 8h |
| 823 | 2.11.28 | Environmental mapping complete on vehicles. | 1d? | 2003-04-17 | 2003-04-18 | 822 | 39d | 0d |  | Kevin Fink | 8h |
| 824 | 2.11.29 | Track sprays and SKid marks final | 1d? | 2003-04-18 | 2003-04-21 | 823 | 39d | 0d |  | Kevin Fink | 8h |
| 825 | 2.11.30 | More vehicles | 1d? | 2003-04-21 | 2003-04-22 | 824 | 39d | 0d |  | Kevin Fink | 8h |

Notes:
- 815: (Slava talk to Dusit about More gens)

| ID | WBS | Task | Type | Duration | Start | Finish | Predecessors | Complete | Remaining | Total slack | Free slack | Constraint | Resources | Work | Actual work |
| --- | --- | --- | --- | --- | --- | --- | --- | --- | --- | --- | --- | --- | --- | --- | --- |
| 826 | 2.11.31 | **Generic Gremlin (Race)** |  | 7d? | 2003-04-22 | 2003-05-01 | 825 |  |  | 39d | 0d |  | Kevin Fink | 112h |  |
| 827 | 2.11.31.1 | (3) Black Limo (Chase and Destroy)* |  | 1d? | 2003-04-22 | 2003-04-23 |  |  |  | 39d | 0d |  | Kevin Fink | 8h |  |
| 828 | 2.11.31.2 | (5) Cola truck and Black Sedans (Chase and evade) (red /white siren ) |  | 1d? | 2003-04-23 | 2003-04-24 | 827 |  |  | 39d | 0d |  | Kevin Fink | 8h |  |
| 829 | 2.11.31.3 | (5) Armored Truck (Chase and destroy) |  | 1d? | 2003-04-24 | 2003-04-25 | 828 |  |  | 39d | 0d |  | Kevin Fink | 8h |  |
| 830 | 2.11.31.4 | (5) Curator vehicle (Race) |  | 1d? | 2003-04-25 | 2003-04-28 | 829 |  |  | 39d | 0d |  | Kevin Fink | 8h |  |
| 831 | 2.11.31.5 | (6) Krusty> '> s Limo (race) |  | 1d? | 2003-04-28 | 2003-04-29 | 830 |  |  | 39d | 0d |  | Kevin Fink | 8h |  |
| 832 | 2.11.31.6 | (7) Black Ferrini (race) |  | 1d? | 2003-04-29 | 2003-04-30 | 831 |  |  | 39d | 0d |  | Kevin Fink | 8h |  |
| 833 | 2.11.31.7 | (7) Generic Zombie Hearse Vehicle ???? ( Evade) (green/orange siren ) |  | 1d? | 2003-04-30 | 2003-05-01 | 832 |  |  | 39d | 0d |  | Kevin Fink | 8h |  |
| 834 | 2.11.32 | more reward vehicles (have yet to be determined with designers) |  | 1d? | 2003-05-01 | 2003-05-02 | 833, 826 |  |  | 39d | 0d |  | Kevin Fink | 8h |  |
| 835 | 2.11.33 | Finalize Navigation map on hud (Needs redesign) |  | 1d? | 2003-05-02 | 2003-05-05 | 834 |  |  | 39d | 0d | start no earlier than 2002-10-15 | Ting Ting Chen | 8h |  |
| 836 | 2.11.34 | Mission object icons for HUD |  | 1d? | 2003-05-05 | 2003-05-06 | 835 |  |  | 39d | 0d |  | Ting Ting Chen | 8h |  |
| 837 | 2.11.35 | All collector cards complete for all levels (This may not be feasible pending new design changes) |  | 1d? | 2003-05-06 | 2003-05-07 | 836 |  |  | 39d | 0d |  | Ting Ting Chen | 8h |  |
| 838 | 2.11.36 | Finalize Card Gallery |  | 1d? | 2003-05-07 | 2003-05-08 | 837 |  |  | 39d | 0d |  | Ting Ting Chen | 8h |  |
| 839 | 2.11.37 | Finalize Pause Menu |  | 1d? | 2003-05-08 | 2003-05-09 | 838 |  |  | 39d | 0d |  | Ting Ting Chen | 8h |  |
| 840 | 2.11.38 | Design menu screens for new designs (Need to clarify with Carey) |  | 1d? | 2003-05-09 | 2003-05-12 | 839 |  |  | 39d |  |  | Ting Ting Chen | 8h |  |
| 842 | 20 | **CODING TASKS** |  | 319d? | 2002-04-16 A | 2003-07-04 |  | 20% | 255.44d? | 0d |  |  |  | 11300.4h | 2680.73h |
| 843 | 21 | **Milestone 7 (May 15th)** |  | 66d | 2002-04-16 A | 2002-07-18 |  | 55% | 29.51d | 253d |  |  |  | 3503.5h | 2201.74h |
| 844 | 21.1 | Dynamic Loading Design |  | 22d | 2002-04-16 | 2002-05-16 |  |  |  | 297d |  | start no earlier than 2002-04-16 | Joel DeYoung [50%] | 88h |  |
| 845 | 21.2 | **First Driveable** |  | 22d | 2002-04-16 A | 2002-05-16 A |  | 100% |  |  |  |  | Greg Mayer | 352h | 352h |
| 846 | 21.2.1 | Driving Engine (1st Pass) |  | 22d | 2002-04-16 A | 2002-05-16 A |  | 100% |  |  |  | start no earlier than 2002-04-16 | Greg Mayer | 176h | 176h |
| 847 | 21.3 | **Loading Manager (1st Pass)** |  | 4d | 2002-04-16 A | 2002-04-22 A |  | 100% |  |  |  |  | Darwin Chau [50%] | 48h | 48h |
| 848 | 21.3.1 | Implementation |  | 3d | 2002-04-16 A | 2002-04-19 A |  | 100% |  |  |  |  | Darwin Chau | 24h | 24h |
| 849 | 21.3.2 | Testing |  | 1d | 2002-04-19 A | 2002-04-22 A | 848 | 100% |  |  |  |  | Darwin Chau | 8h | 8h |
| 850 | 21.4 | Memory Monitor Integrated |  | 12d | 2002-04-22 A | 2002-05-08 A | 849 | 100% |  |  |  |  | Darwin Chau | 96h | 96h |
| 851 | 21.5 | Proview + Evaluation |  | 1d | 2002-04-16 A | 2002-04-17 A |  | 100% |  |  |  |  | Darren Esau | 8h | 8h |
| 852 | 21.6 | Getting PS2 CodeWarrior build going |  | 2d | 2002-04-17 A | 2002-04-19 A | 851 | 100% |  |  |  |  | Darren Esau | 16h | 16h |
| 853 | 21.7 | Write command-line script parser for World Builder |  | 4d | 2002-04-19 A | 2002-04-25 A | 852 | 100% |  |  |  |  | Darren Esau | 32h | 32h |
| 854 | 21.8 | Design a naming convention/directory structure for the sound files |  | 1.88d | 2002-04-25 A | 2002-04-26 A | 853 | 100% |  |  |  |  | Darren Esau | 15h | 15h |
| 855 | 21.9 | Take the makefile process from the prototype and incorporate it into SRR2, with .wav->.rsd conversion and type info generation | milestone | 0d | 2002-04-29 A | 2002-04-29 A | 854 | 100% |  |  |  |  | Darren Esau |  |  |
| 856 | 21.10 | Add first cut at cement file generation to pipeline | milestone | 0d | 2002-05-02 A | 2002-05-02 A | 855 | 100% |  |  |  |  | Darren Esau |  |  |

| ID | WBS | Task | Type | Duration | Start | Finish | Predecessors | Complete | Remaining | Total slack | Constraint | Resources | Work | Actual work |
| --- | --- | --- | --- | --- | --- | --- | --- | --- | --- | --- | --- | --- | --- | --- |
| 857 | 21.11 | **Controller System (1st Pass)** |  | 2.5d | 2002-04-16 A | 2002-04-18 A |  | 100% |  |  |  | Travis Brown-John [50%] | 30h | 30h |
| 858 | 21.11.1 | Integrate controller system into new Game Architecture. |  | 0.5d | 2002-04-16 A | 2002-04-16 A |  | 100% |  |  |  | Travis Brown-John | 4h | 4h |
| 859 | 21.11.2 | Clean up controller enumeration code. |  | 1d | 2002-04-16 A | 2002-04-17 A | 858 | 100% |  |  |  | Travis Brown-John | 8h | 8h |
| 860 | 21.11.3 | Make use of memory pools ( if available) for controller objects. |  | 1d | 2002-04-17 A | 2002-04-18 A | 859 | 100% |  |  |  | Travis Brown-John | 8h | 8h |
| 861 | 21.12 | **Integrate Choreo System** |  | 2.5d | 2002-04-18 A | 2002-04-23 A | 860 | 100% |  |  |  | Travis Brown-John [50%] | 16.5h | 16.5h |
| 862 | 21.12.1 | Add choreo.dsp to Xbox |  | 0.5d | 2002-04-18 A | 2002-04-19 A |  | 100% |  |  |  | Travis Brown-John | 4h | 4h |
| 863 | 21.12.2 | Add choreo library to PS2 build |  | 0.88d | 2002-04-19 A | 2002-04-19 A | 862 | 100% |  |  |  | Travis Brown-John | 7h | 7h |
| 864 | 21.12.3 | Add choreo library to GameCube build | milestone | 0d | 2002-04-23 A | 2002-04-23 A | 863 | 100% |  |  |  | Travis Brown-John |  |  |
| 865 | 21.13 | **Pipelines Implemented (1st Pass)** |  | 8d | 2002-04-16 A | 2002-04-26 A |  | 100% |  |  |  | Cary Brisebois | 128h | 128h |
| 866 | 21.13.1 | Art Database Design | milestone | 0d | 2002-04-16 A | 2002-04-16 A |  | 100% |  |  |  | Cary Brisebois |  |  |
| 867 | 21.13.2 | Implement quick-build |  | 2d | 2002-04-16 A | 2002-04-18 A |  | 100% |  |  |  | Cary Brisebois | 16h | 16h |
| 868 | 21.13.3 | Implement art library support (instancing) |  | 2d | 2002-04-18 A | 2002-04-22 A | 867 | 100% |  |  |  | Cary Brisebois | 16h | 16h |
| 869 | 21.13.4 | Implement (fix) art rules system |  | 2d | 2002-04-22 A | 2002-04-24 A | 868 | 100% |  |  |  | Cary Brisebois | 16h | 16h |
| 870 | 21.13.5 | Implement art database interface |  | 2d | 2002-04-24 A | 2002-04-26 A | 869 | 100% |  |  |  | Cary Brisebois | 16h | 16h |
| 871 | 21.14 | **Camera System (1st Pass)** |  | 15d | 2002-04-26 A | 2002-05-17 | 870 | 73% | 4d | 296d |  | Cary Brisebois | 240h | 176h |
| 872 | 21.14.1 | Camera Design | milestone | 0d | 2002-04-26 A | 2002-04-26 A |  | 100% |  |  |  | Cary Brisebois |  |  |
| 873 | 21.14.2 | Implement Supercam Central |  | 2d | 2002-04-26 A | 2002-04-30 A |  | 100% |  |  |  | Cary Brisebois | 16h | 16h |
| 874 | 21.14.3 | Implement Main Camera mode (In car) |  | 3d | 2002-04-30 A | 2002-05-03 A | 873 | 100% |  |  |  | Cary Brisebois | 24h | 24h |
| 875 | 21.14.4 | Implement Main Camera mode (on foot) |  | 3d | 2002-05-03 A | 2002-05-08 A | 874 | 100% |  |  |  | Cary Brisebois | 24h | 24h |
| 876 | 21.14.5 | Implement Head-Head Camera mode |  | 3d | 2002-05-08 | 2002-05-13 | 875 |  |  | 300d |  | Cary Brisebois | 24h |  |
| 877 | 21.14.6 | Implement Bumper-cam |  | 1d | 2002-05-13 A | 2002-05-14 A | 876 | 100% |  |  |  | Cary Brisebois | 8h | 8h |
| 878 | 21.14.7 | Implement Cut-camera system |  | 2d | 2002-05-14 A | 2002-05-16 A | 877 | 100% |  |  |  | Cary Brisebois | 16h | 16h |
| 879 | 21.14.8 | Implement "Race-Cam" |  | 1d | 2002-05-16 | 2002-05-17 | 878 |  |  | 296d |  | Cary Brisebois | 8h |  |
| 880 | 21.15 | **Rendering Engine (1st Pass)** |  | 26d | 2002-04-18 A | 2002-05-27 |  | 96% | 1.02d | 291d |  | Devin Murname | 608h | 583.84h |
| 881 | 21.15.1 | **RenderManager** |  | 6.75d | 2002-04-18 A | 2002-04-26 A |  | 100% |  |  |  | Devin Murname | 92h | 92h |
| 882 | 21.15.1.1 | Render Docs |  | 1d | 2002-04-18 A | 2002-04-19 A |  | 100% |  |  | start no earlier than 2002-04-18 |  |  |  |
| 883 | 21.15.1.2 | Render Flow |  | 0.5d | 2002-04-19 A | 2002-04-19 A | 882 | 100% |  |  |  |  |  |  |
| 884 | 21.15.1.3 | Pure3D Views |  | 0.25d | 2002-04-22 A | 2002-04-22 A | 883 | 100% |  |  | start no earlier than 2002-04-22 | Devin Murname | 2h | 2h |
| 885 | 21.15.1.4 | Pure3D Context |  | 0.25d | 2002-04-22 A | 2002-04-22 A | 884 | 100% |  |  |  | Devin Murname | 2h | 2h |
| 886 | 21.15.1.5 | Pure3D Platform |  | 0.25d | 2002-04-22 A | 2002-04-22 A | 885 | 100% |  |  |  | Devin Murname | 2h | 2h |
| 887 | 21.15.1.6 | Renderables |  | 1d | 2002-04-22 A | 2002-04-23 A | 886 | 100% |  |  |  | Devin Murname | 8h | 8h |
| 888 | 21.15.1.7 | Layer System |  | 0.25d | 2002-04-23 A | 2002-04-24 A | 887 | 100% |  |  |  | Devin Murname | 2h | 2h |
| 889 | 21.15.1.8 | Add/Remove View |  | 0.25d | 2002-04-24 A | 2002-04-24 A | 888 | 100% |  |  |  | Devin Murname | 2h | 2h |
| 890 | 21.15.1.9 | Camera System |  | 0.5d | 2002-04-24 A | 2002-04-24 A | 889 | 100% |  |  |  | Devin Murname | 4h | 4h |
| 891 | 21.15.1.10 | Debugging |  | 2d | 2002-04-24 A | 2002-04-26 A | 890 | 100% |  |  |  | Devin Murname | 16h | 16h |

Notes:
- 857: working game specific controller interface using FTT controller. Full Controller functionality can be added by clients (Camera Control, Vehicle Control, etc).
- 861: choreo library integrated and building on all platforms (Xbox, Ps2, GameCube)
- 867: This is the system where the artists can iterate art through the pipline with only the minimum of processing. Also, there will need to be a facility for creating secondary/tertiary scenegraphs so the main ones don't need to be rebuilt. / Depend: Devin supporting multiple Scenegraphs
- 868: The artists will create a set of objects that reside in a central "library". The pipeline will take these library objects and replace selected objects with the library version. This will allow fast iteration of props and such. / Depend: Unclear how we will do instancing.
- 869: Bryan Ewert is fixing the Art rules system. This task will apply the rules to given art files to test for art errors. Also includes the export-time rules checking. / Depend: Bryan Ewert fixing p3drule
- 870: The art database will likely run the pipeline, however, it may be necessary to allow the pipeline to query statistics about art through the rules system. / Depend: Chuck and I completing the Design and some stubs
- 873: Almost complete. I have already written most of the Supercam central code. All that remains is writing the camera loading code and how the Supercam central is updated. / Depend: Greg, world physics manager
- 874: The camera system from SRR is sufficient. There needs to be changes for the new physics system, and some improvements to the designer interface for tweaking.
- 875: This is a whole new camera system. IT will likely use most of the code from SRR 1, but it will need some customization.
- 876: This camera system is also completely new. The main changes it needs is the ability to look at multiple targets.
- 877: Same as last year.
- 878: Same system as last year, but needs better logic for shutting down the camera-cut and possibly looking at multiple targets.
- 879: This is the camera system that I implemented a couple of days afer final for SRR. I would like to put it into this game also.

| ID | WBS | Task | Duration | Start | Finish | Predecessors | Complete | Remaining | Total slack | Free slack | Constraint | Resources | Work | Actual work |
| --- | --- | --- | --- | --- | --- | --- | --- | --- | --- | --- | --- | --- | --- | --- |
| 892 | 21.15.2 | **SceneGraph** | 7.5d | 2002-04-26 A | 2002-05-08 A | 891 | 100% |  |  |  |  | Devin Murname | 120h | 120h |
| 893 | 21.15.2.1 | SceneGraph (static geo) | 1d | 2002-04-26 A | 2002-04-29 A |  | 100% |  |  |  | start no earlier than 2002-04-26 | Devin Murname | 8h | 8h |
| 894 | 21.15.2.2 | SceneGraph (dyn geo) | 1.5d | 2002-04-29 A | 2002-05-01 A | 893 | 100% |  |  |  |  | Devin Murname | 12h | 12h |
| 895 | 21.15.2.3 | Add/Remove Objects | 1d | 2002-05-01 A | 2002-05-02 A | 894 | 100% |  |  |  |  | Devin Murname | 8h | 8h |
| 896 | 21.15.2.4 | Static World Loader | 1.5d | 2002-05-02 A | 2002-05-03 A | 895 | 100% |  |  |  |  | Devin Murname | 12h | 12h |
| 897 | 21.15.2.5 | Debugging | 2.5d | 2002-05-03 A | 2002-05-08 A | 896 | 100% |  |  |  |  | Devin Murname | 20h | 20h |
| 898 | 21.15.3 | **World Geometry** | 4.25d | 2002-05-08 A | 2002-05-14 | 897 | 76% | 1d | 298.5d |  |  | Devin Murname | 68h | 52h |
| 899 | 21.15.3.1 | File Handlers | 0.5d | 2002-05-08 A | 2002-05-08 A |  | 100% |  |  |  |  | Devin Murname | 4h | 4h |
| 900 | 21.15.3.2 | Simpsons Geo Loader | 0.5d | 2002-05-08 A | 2002-05-09 A | 899 | 100% |  |  |  |  | Devin Murname | 4h | 4h |
| 901 | 21.15.3.3 | Intf w/ LoadManager | 0.25d | 2002-05-09 A | 2002-05-09 A | 900 | 100% |  |  |  |  | Devin Murname | 2h | 2h |
| 902 | 21.15.3.4 | Pipeline Tools | 1d | 2002-05-09 | 2002-05-10 | 901 |  |  | 300.5d |  |  | Devin Murname | 8h |  |
| 903 | 21.15.3.5 | Debugging | 2d | 2002-05-10 A | 2002-05-14 A | 902 | 100% |  |  |  |  | Devin Murname | 16h | 16h |
| 904 | 21.15.4 | **Vehicles** | 7.5d | 2002-05-14 A | 2002-05-27 A | 903 | 100% |  |  |  |  | Devin Murname | 120h | 120h |
| 905 | 21.15.4.1 | Connect to Physics | 3d | 2002-05-14 A | 2002-05-17 A |  | 100% |  |  |  |  | Devin Murname | 24h | 24h |
| 906 | 21.15.4.2 | Loading | 1.25d | 2002-05-17 A | 2002-05-21 A | 905 | 100% |  |  |  |  | Devin Murname | 10h | 10h |
| 907 | 21.15.4.3 | Render | 1d | 2002-05-21 A | 2002-05-22 A | 906 | 100% |  |  |  |  | Devin Murname | 8h | 8h |
| 908 | 21.15.4.4 | Debugging | 2.25d | 2002-05-22 A | 2002-05-27 A | 907 | 100% |  |  |  |  | Devin Murname | 18h | 18h |
| 909 | 21.16 | **Presentation Manager (1st Pass)** | 40.5d | 2002-04-16 A | 2002-06-12 |  | 46% | 22.05d | 278.5d |  |  | Darryl Long [50%] | 486h | 221.4h |
| 910 | 21.16.1 | **Movie Player** | 12d | 2002-04-16 A | 2002-05-02 |  | 77% | 2.8d | 302d |  |  | Darryl Long [50%] | 96h | 73.6h |
| 911 | 21.16.1.1 | MoviePlayer class | 1d | 2002-04-16 A | 2002-04-17 A |  | 100% |  |  |  |  | Darryl Long [50%] | 4h | 4h |
| 912 | 21.16.1.2 | MoviePlayer code | 2d | 2002-04-17 A | 2002-04-19 A | 911 | 100% |  |  |  |  | Darryl Long [50%] | 8h | 8h |
| 913 | 21.16.1.3 | PlatformPlayer code | 2d | 2002-04-19 A | 2002-04-23 A | 912 | 100% |  |  |  |  | Darryl Long [50%] | 8h | 8h |
| 914 | 21.16.1.4 | Debugging | 7d | 2002-04-23 A | 2002-05-02 | 913 | 60% | 2.8d | 302d | 0d |  | Darryl Long [50%] | 28h | 16.8h |
| 915 | 21.16.2 | **NIS Player** | 14d | 2002-05-02 A | 2002-05-23 | 914 | 64% | 5d | 293d |  |  | Darryl Long [50%] | 112h | 72h |
| 916 | 21.16.2.1 | NISPlayer class | 1d | 2002-05-02 A | 2002-05-03 A |  | 100% |  |  |  |  | Darryl Long [50%] | 4h | 4h |
| 917 | 21.16.2.2 | NIS queuing | 2d | 2002-05-03 A | 2002-05-07 A | 916 | 100% |  |  |  |  | Darryl Long [50%] | 8h | 8h |
| 918 | 21.16.2.3 | NIS loading | 2d | 2002-05-07 A | 2002-05-09 A | 917 | 100% |  |  |  |  | Darryl Long [50%] | 8h | 8h |
| 919 | 21.16.2.4 | Animation Controller | 2d | 2002-05-09 A | 2002-05-13 A | 918 | 100% |  |  |  |  | Darryl Long [50%] | 8h | 8h |
| 920 | 21.16.2.5 | Sound Streams | 1d | 2002-05-13 | 2002-05-14 | 919 |  |  | 299d |  |  | Darryl Long [50%] | 4h |  |
| 921 | 21.16.2.6 | Camera Animations | 2d | 2002-05-14 A | 2002-05-16 A | 920 | 100% |  |  |  |  | Darryl Long [50%] | 8h | 8h |
| 922 | 21.16.2.7 | Debugging | 4d | 2002-05-16 | 2002-05-23 | 921 |  |  | 278.75d | 0d |  | Darryl Long [50%] | 16h |  |

| ID | WBS | Task | Duration | Start | Finish | Predecessors | Complete | Remaining | Total slack | Free slack | Resources | Work | Actual work |
| --- | --- | --- | --- | --- | --- | --- | --- | --- | --- | --- | --- | --- | --- |
| 923 | 21.16.3 | **Gameplay Manager** | 4d | 2002-05-23 A | 2002-05-29 | 922 | 6% | 3.75d | 278.5d |  | Darryl Long [50%] | 32h | 2h |
| 924 | 21.16.3.1 | GPManager class | 1d | 2002-05-23 A | 2002-05-24 |  | 25% | 0.75d | 278.5d | 0d | Darryl Long [50%] | 4h | 1h |
| 925 | 21.16.3.2 | Basic code | 3d | 2002-05-24 | 2002-05-29 | 924 |  |  | 278.5d | 0d | Darryl Long [50%] | 12h |  |
| 926 | 21.16.4 | **Presentation** | 10.5d | 2002-05-29 | 2002-06-12 | 925 |  |  | 278.5d |  | Darryl Long [50%] | 84h |  |
| 927 | 21.16.4.1 | Get list of events | 0.5d | 2002-05-29 | 2002-05-29 |  |  |  | 278.5d | 0d | Darryl Long [50%] | 2h |  |
| 928 | 21.16.4.2 | Play music | 0.5d | 2002-05-29 | 2002-05-30 | 927 |  |  | 278.5d | 0d | Darryl Long [50%] | 2h |  |
| 929 | 21.16.4.3 | Play sounds | 0.5d | 2002-05-30 | 2002-05-30 | 928 |  |  | 278.5d | 0d | Darryl Long [50%] | 2h |  |
| 930 | 21.16.4.4 | Show overlays | 0.5d | 2002-05-30 | 2002-05-31 | 929 |  |  | 278.5d | 0d | Darryl Long [50%] | 2h |  |
| 931 | 21.16.4.5 | Hide overlays | 0.5d | 2002-05-31 | 2002-05-31 | 930 |  |  | 278.5d | 0d | Darryl Long [50%] | 2h |  |
| 932 | 21.16.4.6 | Start of Mission Sequence | 2d | 2002-05-31 | 2002-06-04 | 931 |  |  | 278.5d | 0d | Darryl Long [50%] | 8h |  |
| 933 | 21.16.4.7 | End of Mission Sequence | 3d | 2002-06-04 | 2002-06-07 | 932 |  |  | 278.5d | 0d | Darryl Long [50%] | 12h |  |
| 934 | 21.16.4.8 | Debugging | 3d | 2002-06-07 | 2002-06-12 | 933 |  |  | 278.5d |  | Darryl Long [50%] | 12h |  |
| 935 | 21.17 | **Head to Head (1st Pass)** | 32d | 2002-04-16 A | 2002-05-31 |  | 20% | 25.75d | 287d |  | Darryl Long [50%] | 360h | 63h |
| 936 | 21.17.1 | **H2H Manager** | 9d | 2002-04-16 A | 2002-04-29 |  | 36% | 5.75d | 310d |  | Darryl Long [50%] | 72h | 26h |
| 937 | 21.17.1.1 | H2HManager class | 0.5d | 2002-04-16 A | 2002-04-16 |  | 50% | 0.25d | 315d | 0d | Darryl Long [50%] | 2h | 1h |
| 938 | 21.17.1.2 | H2HPlayer class | 0.5d | 2002-04-16 | 2002-04-17 | 937 |  |  | 315d | 0d | Darryl Long [50%] | 2h |  |
| 939 | 21.17.1.3 | Two rendering views | 3d | 2002-04-17 | 2002-04-22 | 938 |  |  | 315d |  | Darryl Long [50%] | 12h |  |
| 940 | 21.17.1.4 | Two controllers | 2d | 2002-04-22 A | 2002-04-24 A | 939 | 100% |  |  |  | Darryl Long [50%] | 8h | 8h |
| 941 | 21.17.1.5 | H2HMission class | 2d | 2002-04-24 A | 2002-04-26 | 940 | 50% | 1d | 290d | 0d | Darryl Long [50%] | 8h | 4h |
| 942 | 21.17.1.6 | SpawnFlag method start | 1d | 2002-04-26 | 2002-04-29 | 941 |  |  | 290d | 0d | Darryl Long [50%] | 4h |  |
| 943 | 21.17.2 | **H2H Gameplay** | 17d | 2002-04-29 | 2002-05-23 | 942 |  |  | 290d |  | Darryl Long [50%] | 136h |  |
| 944 | 21.17.2.1 | Get event requirements | 2d | 2002-04-29 | 2002-05-01 |  |  |  | 290d | 0d | Darryl Long [50%] | 8h |  |
| 945 | 21.17.2.2 | Vehicle Collision | 0.5d | 2002-05-01 | 2002-05-01 | 944 |  |  | 290d | 0d | Darryl Long [50%] | 2h |  |
| 946 | 21.17.2.3 | Flag Switching | 0.5d | 2002-05-01 | 2002-05-02 | 945 |  |  | 290d | 0d | Darryl Long [50%] | 2h |  |
| 947 | 21.17.2.4 | Base Trigger | 0.5d | 2002-05-02 | 2002-05-02 | 946 |  |  | 290d | 0d | Darryl Long [50%] | 2h |  |
| 948 | 21.17.2.5 | Out of bounds | 0.5d | 2002-05-02 | 2002-05-03 | 947 |  |  | 290d | 0d | Darryl Long [50%] | 2h |  |
| 949 | 21.17.2.6 | Create sounds | 2d | 2002-05-03 | 2002-05-07 | 948 |  |  | 290d | 0d | Darryl Long [50%] | 8h |  |
| 950 | 21.17.2.7 | Start and end pres. | 2d | 2002-05-07 | 2002-05-09 | 949 |  |  | 290d | 0d | Darryl Long [50%] | 8h |  |
| 951 | 21.17.2.8 | Flag Render | 2d | 2002-05-09 | 2002-05-13 | 950 |  |  | 290d | 0d | Darryl Long [50%] | 8h |  |
| 952 | 21.17.2.9 | Finish H2HMission class | 2d | 2002-05-13 | 2002-05-15 | 951 |  |  | 290d | 0d | Darryl Long [50%] | 8h |  |
| 953 | 21.17.2.10 | Finish SpawnFlag method | 1d | 2002-05-15 | 2002-05-16 | 952 |  |  | 290d | 0d | Darryl Long [50%] | 4h |  |
| 954 | 21.17.2.11 | Watch for vehicle proximity | 0.5d | 2002-05-16 | 2002-05-16 | 953 |  |  | 290d | 0d | Darryl Long [50%] | 2h |  |
| 955 | 21.17.2.12 | Provide NavMap intf | 0.5d | 2002-05-16 | 2002-05-17 | 954 |  |  | 290d | 0d | Darryl Long [50%] | 2h |  |
| 956 | 21.17.2.13 | Debugging | 3d | 2002-05-17 | 2002-05-23 | 955 |  |  | 290d | 0d | Darryl Long [50%] | 12h |  |

| ID | WBS | Task | Duration | Start | Finish | Predecessors | Complete | Remaining | Total slack | Free slack | Constraint | Resources | Work | Actual work |
| --- | --- | --- | --- | --- | --- | --- | --- | --- | --- | --- | --- | --- | --- | --- |
| 957 | 21.17.3 | **Transitions** | 6d | 2002-05-23 A | 2002-05-31 | 956 | 50% | 3d | 287d |  |  |  | 24h | 12h |
| 958 | 21.17.3.1 | View/Layer Mgmt | 2d | 2002-05-23 A | 2002-05-27 A |  | 100% |  |  |  |  | Darryl Long [50%] | 8h | 8h |
| 959 | 21.17.3.2 | Transition ViewWatcher | 0.5d | 2002-05-27 A | 2002-05-27 A | 958 | 100% |  |  |  |  | Darryl Long [50%] | 2h | 2h |
| 960 | 21.17.3.3 | Full screen alpha | 0.5d | 2002-05-27 | 2002-05-28 | 959 |  |  | 290d |  |  | Darryl Long [50%] | 2h |  |
| 961 | 21.17.3.4 | Left-to-right wipe | 0.5d | 2002-05-28 A | 2002-05-28 A | 960 | 100% |  |  |  |  | Darryl Long [50%] | 2h | 2h |
| 962 | 21.17.3.5 | Cross fade | 0.5d | 2002-05-28 | 2002-05-29 | 961 |  |  | 275.5d | 0d |  | Darryl Long [50%] | 2h |  |
| 963 | 21.17.3.6 | Debugging | 2d | 2002-05-29 | 2002-05-31 | 962 |  |  | 275.5d | 0d |  | Darryl Long [50%] | 8h |  |
| 964 | 21.18 | **Milestone preparation** | 11.5d | 2002-05-31 | 2002-06-17 | 963 |  |  | 275.5d |  |  |  | 68h |  |
| 965 | 21.18.1 | MoviePlayer | 2d | 2002-05-31 | 2002-06-04 |  |  |  | 275.5d | 0d |  | Darryl Long [50%] | 8h |  |
| 966 | 21.18.2 | NIS Player | 1d | 2002-06-04 | 2002-06-05 | 965 |  |  | 275.5d | 0d |  | Darryl Long [50%] | 4h |  |
| 967 | 21.18.3 | Transitions | 2d | 2002-06-05 | 2002-06-07 | 966 |  |  | 275.5d | 0d |  | Darryl Long [50%] | 8h |  |
| 968 | 21.18.4 | Gameplay Manager | 1d | 2002-06-07 | 2002-06-10 | 967 |  |  | 275.5d | 0d |  | Darryl Long [50%] | 4h |  |
| 969 | 21.18.5 | Head to Head | 3d | 2002-06-10 | 2002-06-13 | 968 |  |  | 275.5d | 0d |  | Darryl Long | 24h |  |
| 970 | 21.18.6 | Final Debugging | 2.5d | 2002-06-13 | 2002-06-17 | 969 |  |  | 275.5d |  |  | Darryl Long | 20h |  |
| 971 | 21.19 | Integrate Watcher | 10d | 2002-04-16 A | 2002-04-30 A |  | 100% |  |  |  |  | Chuck Chow | 80h | 80h |
| 972 | 21.20 | **Art Database** | 42d | 2002-04-30 A | 2002-06-28 |  | 50% | 21d | 253d |  |  | Chuck Chow | 672h | 336h |
| 973 | 21.20.1 | Finalize Art Base Specs | 6d | 2002-04-30 A | 2002-05-08 A | 971 | 100% |  |  |  | start no earlier than 2002-04-26 | Chuck Chow | 48h | 48h |
| 974 | 21.20.2 | Create Backend to ArtDB (some kind of sql) | 20d | 2002-05-08 A | 2002-06-06 | 973 | 75% | 5d | 253d | 0d |  | Chuck Chow | 160h | 120h |
| 975 | 21.20.3 | Create Frontend to ArtDB | 16d | 2002-06-06 | 2002-06-28 | 974 |  |  | 253d | 0d |  | Chuck Chow | 128h |  |
| 976 | 21.21 | **Add Functionality** | 6d | 2002-06-28 | 2002-07-08 | 975 |  |  | 253d |  |  | Chuck Chow | 96h |  |
| 977 | 21.21.1 | Check for New textures | 2d | 2002-06-28 | 2002-07-02 |  |  |  | 253d | 0d |  | Chuck Chow | 16h |  |
| 978 | 21.21.2 | Check for New/Different Geometry | 2d | 2002-07-02 | 2002-07-04 | 977 |  |  | 253d | 0d |  | Chuck Chow | 16h |  |
| 979 | 21.21.3 | Generates New Records Report | 2d | 2002-07-04 | 2002-07-08 | 978 |  |  | 253d | 0d |  | Chuck Chow | 16h |  |
| 980 | 21.22 | Integrate with Art Pipeline | 8d | 2002-07-08 | 2002-07-18 | 979 |  |  | 253d |  |  | Chuck Chow | 64h |  |

| ID | WBS | Task | Duration | Start | Finish | Predecessors | Total slack | Free slack | Constraint | Resources | Work |
| --- | --- | --- | --- | --- | --- | --- | --- | --- | --- | --- | --- |
| 981 | 22 | **Milestone 8 (June 15th)** | 22d | 2002-05-16 | 2002-06-18 |  | 275d |  |  |  | 1296h |
| 982 | 22.1 | **Profiler Integrated** | 10d | 2002-05-16 | 2002-05-31 |  | 275d |  |  | Darwin Chau [50%] | 120h |
| 983 | 22.1.1 | Investigate VTune for Xbox | 2d | 2002-05-16 | 2002-05-21 |  | 275d | 0d | start no earlier than 2002-05-16 | Darwin Chau | 16h |
| 984 | 22.1.2 | Extract and cleanup Profiler from SRR | 2d | 2002-05-21 | 2002-05-23 | 983 | 275d | 0d |  | Darwin Chau | 16h |
| 985 | 22.1.3 | Integrate Profiler | 2d | 2002-05-23 | 2002-05-27 | 984 | 275d | 0d |  | Darwin Chau | 16h |
| 986 | 22.1.4 | Integrate Watcher | 1d | 2002-05-27 | 2002-05-28 | 985 | 275d | 0d |  | Darwin Chau | 8h |
| 987 | 22.1.5 | Investigate Alternatives to DebugInfo | 1d | 2002-05-28 | 2002-05-29 | 986 | 275d | 0d |  | Darwin Chau | 8h |
| 988 | 22.1.6 | Integrate DebugInfo | 2d | 2002-05-29 | 2002-05-31 | 987 | 275d | 0d |  | Darwin Chau | 16h |
| 989 | 22.2 | **Memory System** | 5d | 2002-05-31 | 2002-06-07 | 988 | 275d |  |  | Darwin Chau | 80h |
| 990 | 22.2.1 | Implement Memory Pools | 3d | 2002-05-31 | 2002-06-05 |  | 275d | 0d | start no earlier than 2002-05-16 | Darwin Chau | 24h |
| 991 | 22.2.2 | Integrate Ftech Memory Monitor | 2d | 2002-06-05 | 2002-06-07 | 990 | 275d | 0d |  | Darwin Chau | 16h |
| 992 | 22.3 | **Scripting System (1st Pass)** | 7d | 2002-06-07 | 2002-06-18 |  | 275d |  |  | Darwin Chau | 112h |
| 993 | 22.3.1 | Extract and Cleanup Scripter from Mirth | 3d | 2002-06-07 | 2002-06-12 | 991 | 275d | 0d |  | Darwin Chau | 24h |
| 994 | 22.3.2 | Integrate Scripter | 3d | 2002-06-12 | 2002-06-17 | 993 | 275d | 0d |  | Darwin Chau | 24h |
| 995 | 22.3.3 | Testing | 1d | 2002-06-17 | 2002-06-18 | 994 | 275d |  |  | Darwin Chau | 8h |
| 996 | 22.4 | Add DA sound layer code to game | 3d | 2002-05-29 | 2002-06-03 |  | 278d | 0d | start no earlier than 2002-05-29 | Darren Esau | 24h |
| 997 | 22.5 | Knock dead and unneeded code out of layer | 3d | 2002-06-03 | 2002-06-06 | 996 | 278d | 0d |  | Darren Esau | 24h |
| 998 | 22.6 | Remove unneeded interfaces | 2d | 2002-06-06 | 2002-06-10 | 997 | 278d | 0d |  | Darren Esau | 16h |
| 999 | 22.7 | Write simple sound drivers to load scripts and prove that sounds can be made | 2d | 2002-06-10 | 2002-06-12 | 998 | 278d | 0d |  | Darren Esau | 16h |
| 1000 | 22.8 | Add debug display code | 1d | 2002-06-12 | 2002-06-13 | 999 | 278d |  |  | Darren Esau | 8h |
| 1001 | 22.9 | **World builder complete** | 13d | 2002-05-16 | 2002-06-05 |  | 276d |  |  |  | 104h |
| 1002 | 22.9.1 | Implement Tree-line Tool | 4d | 2002-05-16 | 2002-05-23 |  | 276d | 0d | start no earlier than 2002-05-16 | Cary Brisebois | 32h |
| 1003 | 22.9.2 | Implement Bilboarded Quad | 1d | 2002-05-23 | 2002-05-24 | 1002 | 276d | 0d |  | Cary Brisebois | 8h |
| 1004 | 22.9.3 | Update Existing World builder tools | 4d | 2002-05-24 | 2002-05-30 | 1003 | 276d | 0d |  | Cary Brisebois | 32h |
| 1005 | 22.9.4 | Create Locator Placement Plug-in | 2d | 2002-05-30 | 2002-06-03 | 1004 | 276d | 0d |  | Cary Brisebois | 16h |
| 1006 | 22.9.5 | Integrate Sound Script Parsing System | 2d | 2002-06-03 | 2002-06-05 | 1005 | 276d | 0d |  | Cary Brisebois | 16h |

Notes:
- 1001: Prototyped: / - Grounding Tool / - Bounding Vol. Fence Tool / These will need some updating to reflect designer requirements and bug fixes. / To do: / - Tree-line Tool / - Bilboarded Quad
- 1002: The tree line tool creates a series of quads that are automatically snaped to the surface (or y=0) and generate texture tiling automatically
- 1003: Bilboarded quads are supposed to be supported by Pure3d, but apparently they don't work. I will need some time to sort this out.
- 1004: The grounding tool and the boundign volume fence tool will need some time to update them.
- 1005: This already exists for the SRR version of locators trigger volumes.
- 1006: Esan is making a tool that will parse the sound scripts to determine what sound effects are available as locator-based sounds. This tool wil update the locators, and allow the placement of new ones.

| ID | WBS | Task | Duration | Start | Finish | Predecessors | Total slack | Free slack | Constraint | Resources | Work |
| --- | --- | --- | --- | --- | --- | --- | --- | --- | --- | --- | --- |
| 1007 | 22.10 | **Create Art Database** | 8d | 2002-06-05 | 2002-06-17 | 1006 | 276d |  |  |  | 64h |
| 1008 | 22.10.1 | Integrate with Art Library | 3d | 2002-06-05 | 2002-06-10 |  | 276d | 0d |  | Cary Brisebois | 24h |
| 1009 | 22.10.2 | Integrate with Art Pipeline Build | 2d | 2002-06-10 | 2002-06-12 | 1008 | 276d | 0d |  | Cary Brisebois | 16h |
| 1010 | 22.10.3 | Integrate with Rules Generation | 3d | 2002-06-12 | 2002-06-17 | 1009 | 276d |  |  | Cary Brisebois | 24h |
| 1011 | 22.11 | **Out of Car Functionality (1st Pass)** | 15d | 2002-05-16 | 2002-06-07 |  | 282d |  |  | Travis Brown-John [50%] | 292h |
| 1012 | 22.11.1 | **Avatar system** | 4d | 2002-05-16 | 2002-05-23 |  | 282d |  |  | Travis Brown-John | 64h |
| 1013 | 22.11.1.1 | Implement control (vehicle <--> character) switching logic. | 2d | 2002-05-16 | 2002-05-21 |  | 282d | 0d | start no earlier than 2002-05-16 | Travis Brown-John | 16h |
| 1014 | 22.11.1.2 | Implement event handler for GetInCar event | 0.5d | 2002-05-21 | 2002-05-21 | 1013 | 282d | 0d |  | Travis Brown-John | 4h |
| 1015 | 22.11.1.3 | Implement event handler for GetOutofCar event | 0.5d | 2002-05-21 | 2002-05-22 | 1014 | 282d | 0d |  | Travis Brown-John | 4h |
| 1016 | 22.11.1.4 | Implement VehicleControllerFactory | 1d | 2002-05-22 | 2002-05-23 | 1015 | 282d | 0d |  | Travis Brown-John | 8h |
| 1017 | 22.11.2 | **Character Manager** | 1d | 2002-05-23 | 2002-05-24 | 1016 | 282d |  |  | Travis Brown-John | 16h |
| 1018 | 22.11.2.1 | Implement Character Manager (Create/Init/update/destroy) | 1d | 2002-05-23 | 2002-05-24 |  | 282d | 0d |  | Travis Brown-John | 8h |
| 1019 | 22.11.3 | **Character Motion Controller** | 3d | 2002-05-24 | 2002-05-29 | 1018 | 282d |  |  | Travis Brown-John | 48h |
| 1020 | 22.11.3.1 | Implement Locomotion smooth acceleration/decel | 0.5d | 2002-05-24 | 2002-05-24 |  | 282d | 0d |  | Travis Brown-John | 4h |
| 1021 | 22.11.3.2 | Implement Locomotion smooth rotation | 0.5d | 2002-05-24 | 2002-05-27 | 1020 | 282d | 0d |  | Travis Brown-John | 4h |
| 1022 | 22.11.3.3 | Implement U turn transition | 1d | 2002-05-27 | 2002-05-28 | 1021 | 282d | 0d |  | Travis Brown-John | 8h |
| 1023 | 22.11.3.4 | Write basic Choreo script | 1d | 2002-05-28 | 2002-05-29 | 1022 | 282d | 0d |  | Travis Brown-John | 8h |
| 1024 | 22.11.4 | Physical Character Controller Implementation | 0.5d | 2002-05-29 | 2002-05-29 | 1023 | 282d | 0d |  | Travis Brown-John | 4h |
| 1025 | 22.11.5 | Physical Vehicle Controller Implementation | 0.5d | 2002-05-29 | 2002-05-30 | 1024 | 282d | 0d |  | Travis Brown-John | 4h |
| 1026 | 22.11.6 | **Character Animations** | 4d | 2002-05-30 | 2002-06-05 | 1025 | 282d |  |  | Travis Brown-John | 64h |
| 1027 | 22.11.6.1 | Implement Action Tree/Animation Sequencer (port from Hulk/Squidney) | 4d | 2002-05-30 | 2002-06-05 |  | 282d | 0d |  | Travis Brown-John | 32h |
| 1028 | 22.11.7 | **Character AI** | 2d | 2002-06-05 | 2002-06-07 | 1027 | 282d |  |  | Travis Brown-John | 32h |
| 1029 | 22.11.7.1 | Trigger GetInCar Event (poll input, test conditions: proximity to car) | 1d | 2002-06-05 | 2002-06-06 |  | 282d | 0d |  | Travis Brown-John | 8h |
| 1030 | 22.11.7.2 | Trigger GetOutofCar Event | 1d | 2002-06-06 | 2002-06-07 | 1029 | 282d |  |  | Travis Brown-John | 8h |

Notes:
- 1008: The art database will need to access the p3d chunks in the art library. This will need to use Toollib as part of the art database.
- 1009: The plan is to make the art database run the pipeline. This will be a GUI to the pipeline and possible tools to write pipeline ini files.
- 1010: The plan includes creating rules for the p3drule tool in the Art Data base tool / Depend: Bryan Ewert to make p3dRule work
- 1011: User will be able to "walk" in world with character.* User will be able to get in/out of car. Control will switch between character and vehicle. / Character will teleport into/out of car. / DEPENDICIES / Terrain system functional to give y height at xz coord. Locators in vehicle data for passenger sit, get in/out coordinates. Need to tell the camera system what to look at (character or vehicle).

| ID | WBS | Task | Duration | Start | Finish | Predecessors | Total slack | Free slack | Constraint | Resources | Work |
| --- | --- | --- | --- | --- | --- | --- | --- | --- | --- | --- | --- |
| 1031 | 22.12 | **World Sphere** | 1d | 2002-05-16 | 2002-05-17 |  | 296d |  |  | Devin Murname | 16h |
| 1032 | 22.12.1 | Loading | 0.13d | 2002-05-16 | 2002-05-16 |  | 296d | 0d | start no earlier than 2002-05-16 | Devin Murname | 1.03h |
| 1033 | 22.12.2 | Rendering | 0.62d | 2002-05-16 | 2002-05-16 | 1032 | 296d | 0d |  | Devin Murname | 4.97h |
| 1034 | 22.12.3 | Debugging | 0.25d | 2002-05-16 | 2002-05-17 | 1033 | 296d |  |  | Devin Murname | 2h |
| 1035 | 22.13 | Tuning Cars Possible | 21d | 2002-05-16 | 2002-06-17 |  | 276d |  | start no earlier than 2002-05-16 | Greg Mayer [20%] | 33.6h |
| 1036 | 22.14 | Car Damage States (1st Pass) | 21d | 2002-05-16 | 2002-06-17 |  | 276d |  | start no earlier than 2002-05-16 | Greg Mayer [40%] | 67.2h |
| 1037 | 22.15 | Collision Manager (1st Pass) | 21d | 2002-05-16 | 2002-06-17 |  | 276d |  | start no earlier than 2002-05-16 | Greg Mayer [40%] | 67.2h |
| 1038 | 22.16 | Track Editor Complete (1st Pass) | 21d | 2002-05-16 | 2002-06-17 |  | 276d |  | start no earlier than 2002-05-16 | Cary Brisebois [50%] | 84h |
| 1039 | 22.17 | Basic FE System | 21d | 2002-05-16 | 2002-06-17 |  | 276d |  | start no earlier than 2002-05-16 | Michael Riegger | 168h |
| 1040 | 23 | **Milestone 9 (July 15th)** | 27d? | 2002-06-17 | 2002-07-24 |  | 249d |  |  |  | 728h |
| 1041 | 23.1 | Write Sound Manager class, with component creation/destruction | 2d | 2002-06-17 | 2002-06-19 |  | 249d | 0d | start no earlier than 2002-06-17 | Darren Esau | 16h |
| 1042 | 23.2 | Write sound loader system | 4d | 2002-06-19 | 2002-06-25 | 1041 | 249d | 0d |  | Darren Esau | 32h |
| 1043 | 23.3 | Write global tuner | 2d | 2002-06-25 | 2002-06-27 | 1042 | 249d | 0d |  | Darren Esau | 16h |
| 1044 | 23.4 | Write SimpsonsSoundPlayer class | 3d | 2002-06-27 | 2002-07-02 | 1043 | 249d | 0d |  | Darren Esau | 24h |
| 1045 | 23.5 | Write avatar sound system structure, ignoring logic for walker sound | 5d | 2002-07-02 | 2002-07-09 | 1044 | 249d | 0d |  | Darren Esau | 40h |
| 1046 | 23.6 | Set up car sound system scripts with RadTuner support | 2d | 2002-07-09 | 2002-07-11 | 1045 | 249d | 0d |  | Darren Esau | 16h |
| 1047 | 23.7 | Write sound effect subsystem | 3d | 2002-07-11 | 2002-07-16 | 1046 | 249d | 0d |  | Darren Esau | 24h |
| 1048 | 23.8 | Write music subsystem | 3d | 2002-07-16 | 2002-07-19 | 1047 | 249d | 0d |  | Darren Esau | 24h |
| 1049 | 23.9 | Set up music and sound effect scripts with RadTuner support | 2d | 2002-07-19 | 2002-07-23 | 1048 | 249d | 0d |  | Darren Esau | 16h |
| 1050 | 23.10 | Add debug display code | 1d | 2002-07-23 | 2002-07-24 | 1049 | 249d |  |  | Darren Esau | 8h |
| 1051 | 23.11 | Fence tool runtime to bound worlds | 1d? | 2002-06-17 | 2002-06-18 |  | 275d |  | start no earlier than 2002-06-17 | Greg Mayer | 8h |
| 1052 | 23.12 | Character Out of Car Interactions w/ World Objects (1st Pass) | 21d | 2002-06-17 | 2002-07-16 |  | 255d |  | start no earlier than 2002-06-17 | Travis Brown-John [50%] | 84h |
| 1053 | 23.13 | Road Network System (1st Pass) | 21d | 2002-06-17 | 2002-07-16 |  | 255d |  | start no earlier than 2002-06-17 | Travis Brown-John [50%]; Cary Brisebois | 252h |
| 1054 | 23.14 | HUD Implemented (1st Pass) | 21d | 2002-06-17 | 2002-07-16 |  | 255d |  | start no earlier than 2002-06-17 | Michael Riegger | 168h |

Notes:
- 1040: Milestone 9 Build Features / ·6 CDs burned: NTSC and PAL on all platforms / ·PAL build process and directory structures complete / ·Firewire build working / ·2 Levels / oLevel 2 / §Final geometry, terrrain, and full representative textures on 2 adjacent zones and the 3 surrounding rails / §As much geometry, terrain, and textures as possible on the remainder of the level. / §Several examples of instanced objects, created with Carys instancing tool / §Several examples of dynamic objects that are meant to move around the world / §Several examples of bounding volumes laid down with Carys fence tool / §One world animation / §Baked lighting on part of level / §Initial shadow map complete / oLevel 8 (test track) / §8 driveable vehicles at once with ability for player to switch / ·Logo movies at startup using new movie player on all platforms / ·FE pipeline fully in place / ·HUD elements partly complete / oAll on-screen HUD elements complete for 1 and 2 player modes, except art for overhead map / oPause menu with continue and quit; can cycle indefinitely between game and frontend / ·Dynamic loading nominally working, loads and frees continually with unconstrained user movement through the world / ·Collidable object properties can be specified in the pipeline using the art DB / ·Fence runtime completely working / ·Car shadow working / ·Main player character shadow working / ·Engine sounds working and changing based on RPM / ·Player car skid sounds working / ·Out of car interaction example in a real level / oSimple jumping puzzle / oCharacter moves vertically and horizontally on animated platform / oCharacter triggers animation of moving platform with a button / oCharacter plays animation to push activation button / ·AI traffic cars (at least one) using real pipelined road data / Demonstration of mission system allowing a single mission to be played

| ID | WBS | Task | Duration | Start | Finish | Predecessors | Complete | Remaining | Total slack | Free slack | Constraint | Resources | Work | Actual work |
| --- | --- | --- | --- | --- | --- | --- | --- | --- | --- | --- | --- | --- | --- | --- |
| 1055 | 24 | **Milestone 10 (Aug 15th)** | 44d | 2002-06-17 | 2002-08-16 |  |  |  | 232d |  |  |  | 1088h |  |
| 1056 | 24.1 | **Write SpeechCoordinator dialog management system** | 8d | 2002-07-16 | 2002-07-26 |  |  |  | 232d |  |  |  | 64h |  |
| 1057 | 24.1.1 | Class Structure | 3d | 2002-07-16 | 2002-07-19 |  |  |  | 232d | 0d | start no earlier than 2002-07-16 | Darren Esau | 24h |  |
| 1058 | 24.1.2 | Parsing & sorting Code | 5d | 2002-07-19 | 2002-07-26 | 1057 |  |  | 232d | 0d |  | Darren Esau | 40h |  |
| 1059 | 24.2 | Write DialogCoordinator | 2d | 2002-07-26 | 2002-07-30 | 1058 |  |  | 232d | 0d |  | Darren Esau | 16h |  |
| 1060 | 24.3 | Write priority queue system | 5d | 2002-07-30 | 2002-08-06 | 1059 |  |  | 232d | 0d |  | Darren Esau | 40h |  |
| 1061 | 24.4 | Add in the Cone of Silence logic | 4d | 2002-08-06 | 2002-08-12 | 1060 |  |  | 232d | 0d |  | Darren Esau | 32h |  |
| 1062 | 24.5 | Linked conversation capability | 3d | 2002-08-12 | 2002-08-15 | 1061 |  |  | 232d | 0d |  | Darren Esau | 24h |  |
| 1063 | 24.6 | Add debug display code | 1d | 2002-08-15 | 2002-08-16 | 1062 |  |  | 232d |  |  | Darren Esau | 8h |  |
| 1064 | 24.7 | Chase/Evade Mission Playable | 23d | 2002-07-16 | 2002-08-16 |  |  |  | 231d |  | start no earlier than 2002-07-16 |  |  |  |
| 1065 | 24.8 | Collection Mission Playable | 23d | 2002-07-16 | 2002-08-16 |  |  |  | 231d |  | start no earlier than 2002-07-16 |  |  |  |
| 1066 | 24.9 | All Mission Types Possible | 23d | 2002-07-16 | 2002-08-16 |  |  |  | 231d |  | start no earlier than 2002-07-16 |  |  |  |
| 1067 | 24.10 | Chase AI (1st Pass) | 23d | 2002-07-16 | 2002-08-16 |  |  |  | 232d |  | start no earlier than 2002-07-16 | Travis Brown-John | 184h |  |
| 1068 | 24.11 | Evade AI (1st Pass) | 23d | 2002-07-16 | 2002-08-16 |  |  |  | 232d |  | start no earlier than 2002-07-16 | Travis Brown-John | 184h |  |
| 1069 | 24.12 | Traffic System AI (1st Pass) | 23d | 2002-07-16 | 2002-08-16 |  |  |  | 232d |  | start no earlier than 2002-07-16 | Cary Brisebois [50%] | 92h |  |
| 1070 | 24.13 | Counter Measures (1st Pass) | 23d | 2002-07-16 | 2002-08-16 |  |  |  | 232d |  | start no earlier than 2002-07-16 | Cary Brisebois [50%] | 92h |  |
| 1071 | 24.14 | Pedestrian AI (1st Pass) | 44d | 2002-06-17 | 2002-08-16 |  |  |  | 232d |  | start no earlier than 2002-06-17 | Darryl Long | 352h |  |
| 1072 | 25 | **Milestone 11 (Sep 15th)** | 95d? | 2002-04-16 | 2002-08-28 |  |  |  | 224d |  |  |  | 72h |  |
| 1073 | 25.1 | Write ambient sound system | 5d | 2002-08-16 | 2002-08-23 |  |  |  | 224d | 0d | start no earlier than 2002-08-16 | Darren Esau | 40h |  |
| 1074 | 25.2 | Write NIS sound system | 2d | 2002-08-23 | 2002-08-27 | 1073 |  |  | 224d | 0d |  | Darren Esau | 16h |  |
| 1075 | 25.3 | Add debug display code | 1d | 2002-08-27 | 2002-08-28 | 1074 |  |  | 224d |  |  | Darren Esau | 8h |  |
| 1076 | 25.4 | Xbox Ripping | 1d? | 2002-04-16 | 2002-04-17 |  |  |  | 318d |  |  | Darren Esau | 8h |  |
| 1077 | 3.6 | **Milestone 12 (Oct 15th)** | 19d? | 2002-09-16 A | 2002-10-11 |  | 7% | 17.69d? | 192d |  |  |  | 656h | 45.2h |
| 1078 | 3.6.1 | Ability to go to any mission from front end or pause menu | 1d? | 2002-09-16 | 2002-09-17 |  |  |  | 205d | 0d | start no earlier than 2002-09-16 | Cary Brisebois | 8h |  |
| 1079 | 3.6.2 | Missions: Work with mission team to make sure they work | 1d? | 2002-09-17 | 2002-09-18 | 1078 |  |  | 205d | 0d |  | Cary Brisebois | 8h |  |
| 1080 | 3.6.3 | Camera collisions: on foot | 1d? | 2002-09-18 | 2002-09-19 | 1079 |  |  | 205d | 0d |  | Cary Brisebois | 8h |  |
| 1081 | 3.6.4 | Camera collisions: driving | 1d? | 2002-09-19 | 2002-09-20 | 1080 |  |  | 205d | 0d |  | Cary Brisebois | 8h |  |
| 1082 | 3.6.5 | Camera collisions: interiors | 1d? | 2002-09-20 | 2002-09-23 | 1081 |  |  | 205d | 0d |  | Cary Brisebois | 8h |  |
| 1083 | 3.6.6 | Rail Cam improvements | 1d? | 2002-09-23 | 2002-09-24 | 1082 |  |  | 205d |  |  | Cary Brisebois | 8h |  |
| 1084 | 3.6.7 | Mission restart correctly resets the players position, mission elements, and returns to mission instruction screen | 1d? | 2002-09-16 | 2002-09-17 |  |  |  | 207d | 0d | start no earlier than 2002-09-16 | Chuck Chow | 8h |  |
| 1085 | 3.6.8 | Missions: Work with mission team to make sure they work | 1d? | 2002-09-17 | 2002-09-18 | 1084 |  |  | 207d | 0d |  | Chuck Chow | 8h |  |
| 1086 | 3.6.9 | Artist pipeline support | 1d? | 2002-09-18 | 2002-09-19 | 1085 |  |  | 207d | 0d |  | Chuck Chow | 8h |  |
| 1087 | 3.6.10 | Artist memory budget enforcement | 1d? | 2002-09-19 | 2002-09-20 | 1086 |  |  | 207d |  |  | Chuck Chow | 8h |  |
| 1088 | 3.6.11 | Audio for gag NISes | 1d? | 2002-09-16 A | 2002-09-17 |  | 75% | 0.25d? | 210d |  | start no earlier than 2002-09-16 | Darren Esau | 8h | 6h |
| 1089 | 3.6.12 | Engine sounds working correctly - 1st pass | 1d? | 2002-09-17 A | 2002-09-18 A | 1088 | 100% |  |  |  |  | Darren Esau | 8h | 8h |
| 1090 | 3.6.13 | Dialog system: eye blinking and mouth flapping | 1d? | 2002-09-18 | 2002-09-19 | 1089 |  |  | 208d |  |  | Darren Esau | 8h |  |
| 1091 | 3.6.14 | Interior sound effects - 1st pass | 1d? | 2002-09-19 A | 2002-09-20 A | 1090 | 100% |  |  |  |  | Darren Esau | 8h | 8h |
| 1092 | 3.6.15 | PS2 mipmap tuning | 1d? | 2002-09-20 | 2002-09-23 | 1091 |  |  | 206d |  |  | Darren Esau | 8h |  |
| 1093 | 3.6.16 | Interactive music integrated into the game | 1d? | 2002-09-23 A | 2002-09-24 A | 1092 | 100% |  |  |  |  | Darren Esau | 8h | 8h |
| 1094 | 3.6.17 | Addition of some final sound effects - 1st pass | 1d? | 2002-09-24 A | 2002-09-25 A | 1093 | 100% |  |  |  |  | Darren Esau | 8h | 8h |
| 1095 | 3.6.18 | Addition of placeholder audio (dialog, sound effects, engine sounds, music, etc) | 1d? | 2002-09-25 A | 2002-09-26 | 1094 | 90% | 0.1d? | 203d |  |  | Darren Esau | 8h | 7.2h |
| 1096 | 3.6.19 | Dialog system: eye blinking and mouth flapping | 1d? | 2002-09-16 | 2002-09-17 |  |  |  | 208d | 0d | start no earlier than 2002-09-16 | Darryl Long | 8h |  |
| 1097 | 3.6.20 | Mission system improvements | 1d? | 2002-09-17 | 2002-09-18 | 1096 |  |  | 208d | 0d |  | Darryl Long | 8h |  |
| 1098 | 3.6.21 | Vehicle AI system improvements | 1d? | 2002-09-18 | 2002-09-19 | 1097 |  |  | 208d |  |  | Darryl Long | 8h |  |
| 1099 | 3.6.22 | More granularity in memory tracking system | 1d? | 2002-09-16 | 2002-09-17 |  |  |  | 206d | 0d | start no earlier than 2002-09-16 | Darwin Chau | 8h |  |
| 1100 | 3.6.23 | Interior gag audio | 1d? | 2002-09-17 | 2002-09-18 | 1099 |  |  | 206d | 0d |  | Darwin Chau | 8h |  |
| 1101 | 3.6.24 | Enter/Exit interior presentation with iris transition | 1d? | 2002-09-18 | 2002-09-19 | 1100 |  |  | 206d | 0d |  | Darwin Chau | 8h |  |
| 1102 | 3.6.25 | General memory management ongoing tasks | 1d? | 2002-09-19 | 2002-09-20 | 1101 |  |  | 206d | 0d |  | Darwin Chau | 8h |  |
| 1103 | 3.6.26 | Level start into NIS (e.g. get up off the couch in level 1) | 1d? | 2002-09-20 | 2002-09-23 | 1102 |  |  | 206d |  |  | Darwin Chau | 8h |  |
| 1104 | 3.6.27 | Local world spheres triggering and rendering correctly | 1d? | 2002-09-16 | 2002-09-17 |  |  |  | 203d | 0d | start no earlier than 2002-09-16 | Devin Murname | 8h |  |
| 1105 | 3.6.28 | Z Sorting | 1d? | 2002-09-17 | 2002-09-18 | 1104 |  |  | 203d | 0d |  | Devin Murname | 8h |  |
| 1106 | 3.6.29 | Texture randomization (e.g. for church sign) | 1d? | 2002-09-18 | 2002-09-19 | 1105 |  |  | 203d | 0d |  | Devin Murname | 8h |  |
| 1107 | 3.6.30 | Billboard objects | 1d? | 2002-09-19 | 2002-09-20 | 1106 |  |  | 203d | 0d |  | Devin Murname | 8h |  |
| 1108 | 3.6.31 | Toon lines on 3D icons | 1d? | 2002-09-20 | 2002-09-23 | 1107 |  |  | 203d | 0d |  | Devin Murname | 8h |  |
| 1109 | 3.6.32 | DSG cleanup / abstract base class for DSG objects | 1d? | 2002-09-23 | 2002-09-24 | 1108 |  |  | 203d | 0d |  | Devin Murname | 8h |  |
| 1110 | 3.6.33 | General dynamic loading ongoing tasks | 1d? | 2002-09-24 | 2002-09-25 | 1109 |  |  | 203d | 0d |  | Devin Murname | 8h |  |
| 1111 | 3.6.34 | Load cancels working (dependent on P3D providing this) | 1d? | 2002-09-25 | 2002-09-26 | 1110 |  |  | 203d |  |  | Devin Murname | 8h |  |
| 1112 | 3.6.35 | AI Traffic system: intelligent behaviour | 1d? | 2002-09-16 | 2002-09-17 |  |  |  | 205d | 0d | start no earlier than 2002-09-16 | Dusit Eakkachaichanvet | 8h |  |
| 1113 | 3.6.36 | Chase AI | 1d? | 2002-09-17 | 2002-09-18 | 1112 |  |  | 205d | 0d |  | Dusit Eakkachaichanvet | 8h |  |
| 1114 | 3.6.37 | Mission vehicle AI improvements | 1d? | 2002-09-18 | 2002-09-19 | 1113 |  |  | 205d | 0d |  | Dusit Eakkachaichanvet | 8h |  |
| 1115 | 3.6.38 | Pedestrian data pipeline | 1d? | 2002-09-19 | 2002-09-20 | 1114 |  |  | 205d | 0d |  | Dusit Eakkachaichanvet | 8h |  |
| 1116 | 3.6.39 | Pedestrian AI | 1d? | 2002-09-20 | 2002-09-23 | 1115 |  |  | 205d | 0d |  | Dusit Eakkachaichanvet | 8h |  |
| 1117 | 3.6.40 | Pedestrian rendering | 1d? | 2002-09-23 | 2002-09-24 | 1116 |  |  | 205d |  |  | Dusit Eakkachaichanvet | 8h |  |
| 1118 | 3.6.41 | Mission based vehicle parameters | 1d? | 2002-09-16 | 2002-09-17 |  |  |  | 192d | 0d | start no earlier than 2002-09-16 | Greg Mayer | 8h |  |
| 1119 | 3.6.42 | damage states on vehicles | 1d? | 2002-09-17 | 2002-09-18 | 1118 |  |  | 192d | 0d |  | Greg Mayer | 8h |  |
| 1120 | 3.6.43 | ongoing collision optimizations | 1d? | 2002-09-18 | 2002-09-19 | 1119 |  |  | 192d | 0d |  | Greg Mayer | 8h |  |
| 1121 | 3.6.44 | rest test for dynamic objects | 1d? | 2002-09-19 | 2002-09-20 | 1120 |  |  | 192d | 0d |  | Greg Mayer | 8h |  |
| 1122 | 3.6.45 | dynamic objects using art database properties | 1d? | 2002-09-20 | 2002-09-23 | 1121 |  |  | 192d | 0d |  | Greg Mayer | 8h |  |
| 1123 | 3.6.46 | dynamic objects rest tests | 1d? | 2002-09-23 | 2002-09-24 | 1122 |  |  | 192d | 0d |  | Greg Mayer | 8h |  |
| 1124 | 3.6.47 | driving engine: brake stands, burnouts, donuts | 1d? | 2002-09-24 | 2002-09-25 | 1123 |  |  | 192d | 0d |  | Greg Mayer | 8h |  |

Notes:
- 1055: Milestone 10 Build Features / Art Cutoff: August 8 / CD delivery date: August 15 / ·Suburb level / oGeometry and terrain complete with 1st pass textures / oGeometry optimization partially complete / oPartially populated with moveable and breakable objects / oBounding volumes complete / oTrack data completely laid down / oSample world object animation / oBaked lighting and shadow maps complete / oA single interior completely modelled and textured / oSingle NIS gag animated / ·Seaside level / oGeometry and terrain complete with 1st pass textures / oGeometry optimization partially complete / oSome bounding volumes complete / oSome moveable objects / oSome track data laid down / oBaked lighting and shadow maps complete / ·8 cars built and tuned and driveable in the world / ·5 walker characters available for play / ·Can play the first few missions of Level 1 / ·Game demonstrates all mission types (chase, evade, collect, go to, destroy) / ·Game demonstrates ability to initiate, succeed, and fail at missions / ·Vehicle AI for missions completed (chase and evade) / ·Missions unload and load into memory correctly / ·Mission begin/end presentation complete: fades, loading screen, B&W freeze frame (time permitting) / ·Mission restart works correctly (all moveable objects and mission elements reset) / ·Front end NIS (the living room) with camera animations completed / ·Front end 2D screens and functionality partially completed / oMain menu / oMultiplayer setup / oMultiplayer choose character / oOptions / oOptions: Controller config / oOptions: Sound / oPause menu (single player and multiplayer) / oGame Over (single player and multiplayer) / ·Final fonts for front end and HUD completed / ·HUD final art completed / ·HUD map auto-generating in the pipeline / ·HUD map displaying correctly, with relevant game objects / ·Loading screen displaying for both F/E to game and game to F/E / ·Music system complete with 1st pass music / ·Music changes for: player in car, player out of car, player in an interior / ·Sound effects working with some placeholder sound effects / ·Locator based directional sounds working with 1st pass sound effects / ·Moveable and breakable objects working in game / ·Placeholder AI traffic driving in world / ·Animated bounding volumes working / ·Billboarded alpha quads working / ·Instanced objects are loaded and represented in memory correctly / ·Collectible cards displaying / ·Can pick up a collectible card and have the pause menu reflect the inventory of cards / ·Character behaves correctly on moving platforms / ·All out-of-car functionality for jumping puzzles complete: character collisions, push buttons, etc. / ·Car hailing system demonstrated (without NIS or presentation elements) / ·Can enter and exit one interior / ·Interior door entry/exit presentation works / ·Rendering of outside world turned on/off correctly when inside interior / ·Interior gag NIS plays correctly / ·Pipeline for all world data except SFX (missions, collectibles, sounds, H2H data, etc) complete / ·All loading happening asynchronously / ·All memory allocations being captured and directed to an appropriate heap / ·Can quit a level and restart from the front end without crashing / ·Death volumes pipeline complete
- 1072: Milestone 11 Build Features / Art Cutoff: September 6 / CD delivery date: September 13 / ·Level Art / oSuburbs / §All geometry, tracks, and final textures completed / §All collision volumes in place / §All moveable objects in place / §All breakable object in place / §Geometry optimization step complete (all geometry at final poly count) / §3 interiors in the level: / ·Final geometry, collisions, and character animations / ·Final textures / §All hailing points (phone booths and bus stops) modelled and placed / §All local world spheres completed / §All collectible cards placed in the level / §All food icons placed in the level / §All destructible cameras placed in the level / §All death volumes placed in the level / §Light maps and shadow maps complete / oDowntown / §Initial track layout complete / §Dynamic loading load triggers placed / §Terrain modelled / §Key exterior landmarks placed in level / §Few textures / §Some fine geometry (e.g. awnings on buildings) not complete / oSeaside track finalized / ·Dynamic loading / oLocal world spheres draw at correct times / oLoad cancels caused by quick turnarounds working / ·Environmental mapping on cars complete / ·Main car shadow in game / ·Main player character shadow in game / ·Billboarded alpha quads working / ·Boulevard heaps integrated into dynamic loading system / ·Shared level-wide textures correctly sorted into a statically loaded P3D file / ·Skid marks drawing on the terrain / ·Particle effects for skids on different terrain / ·Particle effects for character dashes / ·Collectable system completed / oCards, food, and all other collectibles are rendered correctly in the world / oFront end correctly reflects current inventory of cards / ·All action button functionality working with animations playing / oTelephones: Can activate them and the HUD presents a menu of cars to hail / oDoors to interiors: Enter and exit NIS character animations playing / oCameras / power couplings: Can destroy them and have this reflected in HUD, mission data, etc. / oSwitches in jumping puzzles for moving platforms, etc. / ·3 interiors in the game and working (Simpsons House, Kwik-E-Mart, School) / ·Interior gags playing correctly, with randomization / ·All frontend screens complete / oOptions / oMemory card screens / oCollector card screens / ·Can select levels 1 through 7 in front end (may need to duplicate Suburbs in pipeline for now) / ·All mission data and scripts for Levels 1, 4 and 7 (Suburbs) complete / ·All mission presentation features in place and working with actual missions / ·Character gets in correct side of car (driver or passenger) / ·Dialog system working / oDialog system pipeline complete / oSample dialog incorporated from Road Rage and Skate and used in-game / oAbility to approach characters in the world and talk to them. / ·Memory card loading/saving completely working / ·Pedestrians in game and walking around the world / ·Environmental / ambient sounds playing for suburb level / ·Environmental / ambient sounds playing in one interiors / ·Interior sound effects for at least two interiors / ·Some final sound effects in game / ·At least one car with final engine sounds (final source samples and tuning) / ·Fence run-time completion / ·All mission presentation aspects complete / ·Mission flow functionality adjusted / oStart level in sunday drive mode / oUpon failing a mission, reset the mission to the starting position and go to mission instruction screen / ·Mission restart (with object reset) completely working / ·All presentation aspects of car hailing system complete / ·Final AI traffic driving around in world / oDesigner-specified density control / oIntelligent driving on road networks (at intersections, etc) / oAI traffic goes into physics simulation mode correctly when hit / Special effect pipelines all established and implemented
- 1077: Milestone 12 Build Features / Art Cutoff: October 8 / CD delivery date: October 15 / ·Level Art / oDowntown and Suburbs / §All geometry, tracks, and final textures completed / §All collision volumes in place / §All moveable objects in place / §All breakable object in place / §Geometry optimization step complete (all geometry at final poly count) / §3 interiors in the level: / ·Final geometry, collisions, and character animations / ·Final textures / §All hailing points (phone booths and bus stops) modelled and placed / §All local world spheres completed / §All collectible cards placed in the level / §All food icons placed in the level / §All destructible cameras placed in the level / §All death volumes placed in the level / ·Pipeline for all special effects complete / ·Shadows for all cars in game / ·Shadows for all characters in game / ·Billboards working / ·Skid marks drawing on the terrain / ·All particle effects in the game / ·Environmental mapping on cars complete / ·Pedestrians in game and walking around the world / ·All collectible effects working correctly / ·Local world spheres rendering correctly / ·Z sorting working correctly and efficiently in the rendering engine / ·Load cancels caused by quick turnarounds working / ·All mipmap levels tuned / ·Texture tile optimizations being performed in the pipeline (new P3D tool) / ·Water rendering effects complete / ·Traffic and prop fading rendering effects complete / ·All special effects associated with collectibles complete / ·All particle effects complete / oCar / oOn-foot character / oOther particle effects (?) / ·Audio incorporated into interior gags / ·Mouth flapping and eye blinking working for conversations / ·Mission restart (with object reset) completely working / ·Car reset resets car to closest reset point / ·All mission data laid down for levels ??, ?? and ??/ ·Skinned collectibles working (e.g. monkeys) / ·Weeble effect on cars complete / ·Traffic density controllable by the Watcher (?) / ·Car door opens and closes for character entry/exit / ·Car behaves correctly on animated bounding volumes / ·Car brake stands and burnouts working correctly / ·Car encounter with steep terrain handled correctly / ·Toon line rendering on landmarks complete / ·Mouth flapping implemented in all cases where it is to be used / ·Eye blinking implemented and working on all characters / ·Boss missions functioning, except final boss mission / ·Damage states fully working on all player cars and AI cars, complete with textures, damage levels, and particle effects. / ·Player getting hit by a car handled and presented correctly / ·Death volumes with reset working for both in and out of car / ·Ability to go to any level, any mission from pause menu / oLoads other level if necessary / oStarts selected mission in post-presentation state (i.e.at the mission load instruction presentation screen) / ·Cheat input system completed / ·Ability to save and load a game to a memory card complete / ·All TRC related handling of memory cards completed (corrupt, missing, yanked cards, etc) / ·Some first pass engine sounds in game / ·Text-to-speech content integrated into dialogue system / ·Some first pass collision sounds in game / ·Logo movies final for both PAL and NTSC / ·Randomization of some dynamically loaded textures (for changing sign gags, e.g. church) / ·Improvements to vehicle AI (chase and evade) functionality as requested by the designers / ·Can play FMVs in game / ·Ability to jump to any mission from the front end / ·Ability to jump to any mission from the pause menu / ·Final AI traffic behaviour implemented / ·Abstract base class for DSG-contained objects (?) / ·Physics properties from art database being used / ·All breakable effects incorporated into the game / ·Camera collisions handled correctly (on foot, in car, and in interiors)
- 1088: code written but not tested / next ms: many small tasks ie. gear shifting, dialogue, traffic sounds (doppler), reverb (power plant), etc.
- 1090: push to next ms
- 1091: what is playing in the interiors
- 1092: next ms
- 1094: footsteps, need to know the surface
- 1115: (Must be completed by October 1 for art iteration)
- 1118: must be done by Sept 17th for designer iteration
- 1119: depot/users/greg/tasks.txt / damage states on vehicles - artist dependencies / must be done by sept 24 for art iteration

| ID | WBS | Task | Duration | Start | Finish | Predecessors | Total slack | Free slack | Constraint | Resources | Work |
| --- | --- | --- | --- | --- | --- | --- | --- | --- | --- | --- | --- |
| 1125 | 3.6.48 | driving engine: steep terrain handling - | 1d? | 2002-09-25 | 2002-09-26 | 1124 | 192d | 0d |  | Greg Mayer | 8h |
| 1126 | 3.6.49 | death volume handling for car | 1d? | 2002-09-26 | 2002-09-27 | 1125 | 192d | 0d |  | Greg Mayer | 8h |
| 1127 | 3.6.50 | car auto reset | 1d? | 2002-09-27 | 2002-09-30 | 1126 | 192d | 0d |  | Greg Mayer | 8h |
| 1128 | 3.6.51 | car reset to nearest reset point | 1d? | 2002-09-30 | 2002-10-01 | 1127 | 192d | 0d |  | Greg Mayer | 8h |
| 1129 | 3.6.52 | car moves correctly on moving platforms | 1d? | 2002-10-01 | 2002-10-02 | 1128 | 192d | 0d |  | Greg Mayer | 8h |
| 1130 | 3.6.53 | vehicle handling improvements | 1d? | 2002-10-02 | 2002-10-03 | 1129 | 192d | 0d |  | Greg Mayer | 8h |
| 1131 | 3.6.54 | Environmental mapping on cars | 1d? | 2002-10-03 | 2002-10-04 | 1130 | 192d | 0d | start no earlier than 2002-09-16 | Joel DeYoung | 8h |
| 1132 | 3.6.55 | Particle tranlusency | 1d? | 2002-10-04 | 2002-10-07 | 1131 | 192d | 0d |  | Joel DeYoung | 8h |
| 1133 | 3.6.56 | Better FMVs for Xbox and GC | 1d? | 2002-10-07 | 2002-10-08 | 1132 | 192d | 0d |  | Joel DeYoung | 8h |
| 1134 | 3.6.57 | Create final logo FMVs for all 6 platforms | 1d? | 2002-10-08 | 2002-10-09 | 1133 | 192d | 0d |  | Joel DeYoung | 8h |
| 1135 | 3.6.58 | FMVs playing in game (in between missions) | 1d? | 2002-10-09 | 2002-10-10 | 1134 | 192d | 0d |  | Joel DeYoung | 8h |
| 1136 | 3.6.59 | Xbox ripping | 1d? | 2002-10-10 | 2002-10-11 | 1135 | 192d |  |  | Joel DeYoung | 8h |
| 1137 | 3.6.60 | All breakable objects added to the game | 1d? | 2002-09-16 | 2002-09-17 |  | 205d | 0d | start no earlier than 2002-09-16 | Michael Riegger | 8h |
| 1138 | 3.6.61 | All particle effects added to the game | 1d? | 2002-09-17 | 2002-09-18 | 1137 | 205d | 0d |  | Michael Riegger | 8h |
| 1139 | 3.6.62 | All collectible effects added to the game | 1d? | 2002-09-18 | 2002-09-19 | 1138 | 205d | 0d |  | Michael Riegger | 8h |
| 1140 | 3.6.63 | Shadows added for all characters and cars | 1d? | 2002-09-19 | 2002-09-20 | 1139 | 205d | 0d |  | Michael Riegger | 8h |
| 1141 | 3.6.64 | Water effects working in game | 1d? | 2002-09-20 | 2002-09-23 | 1140 | 205d | 0d |  | Michael Riegger | 8h |
| 1142 | 3.6.65 | Skid marks on terrain | 1d? | 2002-09-23 | 2002-09-24 | 1141 | 205d |  |  | Michael Riegger | 8h |
| 1143 | 3.6.66 | Screen for selecting a mission from F/E | 1d? | 2002-09-16 | 2002-09-17 |  | 205d | 0d | start no earlier than 2002-09-16 | Tony Chu | 8h |
| 1144 | 3.6.67 | Screen for selecting a mission from pause menu | 1d? | 2002-09-17 | 2002-09-18 | 1143 | 205d | 0d |  | Tony Chu | 8h |
| 1145 | 3.6.68 | Mission presentation HUD art iteration ongoing task | 1d? | 2002-09-18 | 2002-09-19 | 1144 | 205d | 0d |  | Tony Chu | 8h |
| 1146 | 3.6.69 | Can load/save games on memory card | 1d? | 2002-09-19 | 2002-09-20 | 1145 | 205d | 0d |  | Tony Chu | 8h |
| 1147 | 3.6.70 | Memory card screens | 1d? | 2002-09-20 | 2002-09-23 | 1146 | 205d | 0d |  | Tony Chu | 8h |
| 1148 | 3.6.71 | Cheat input system | 1d? | 2002-09-23 | 2002-09-24 | 1147 | 205d |  |  | Tony Chu | 8h |
| 1149 | 3.6.72 | Hailing system: presentation | 1d? | 2002-09-16 | 2002-09-17 |  | 200d | 0d | start no earlier than 2002-09-16 | Travis Brown-John | 8h |
| 1150 | 3.6.73 | Proper car disappearance handling when hailing a car | 1d? | 2002-09-17 | 2002-09-18 | 1149 | 200d | 0d |  | Travis Brown-John | 8h |
| 1151 | 3.6.74 | Handling of player hit by car | 1d? | 2002-09-18 | 2002-09-19 | 1150 | 200d | 0d |  | Travis Brown-John | 8h |
| 1152 | 3.6.75 | Car door opens and closes properly on character entry/exit | 1d | 2002-09-19 | 2002-09-20 | 1151 | 200d | 0d |  | Travis Brown-John | 8h |
| 1153 | 3.6.76 | All collectible objects rendering correctly | 1d? | 2002-09-20 | 2002-09-23 | 1152 | 200d | 0d |  | Travis Brown-John | 8h |
| 1154 | 3.6.77 | All collectible functionality working (food boosts, cards reflected in F/E, etc) | 1d? | 2002-09-23 | 2002-09-24 | 1153 | 200d | 0d |  | Travis Brown-John | 8h |
| 1155 | 3.6.78 | Death volume handling for on foot | 1d? | 2002-09-24 | 2002-09-25 | 1154 | 200d | 0d |  | Travis Brown-John | 8h |
| 1156 | 3.6.79 | Boss missions implemented | 1d? | 2002-09-25 | 2002-09-26 | 1155 | 200d | 0d |  | Travis Brown-John | 8h |
| 1157 | 3.6.80 | In car character animations | 1d? | 2002-09-26 | 2002-09-27 | 1156 | 200d | 0d |  | Travis Brown-John | 8h |
| 1158 | 3.6.81 | Skinned collectibles working (i.e. monkeys) | 1d? | 2002-09-27 | 2002-09-30 | 1157 | 200d | 0d |  | Travis Brown-John | 8h |
| 1159 | 3.6.82 | On foot gameplay ongoing task | 1d? | 2002-09-30 | 2002-10-01 | 1158 | 200d |  |  | Travis Brown-John | 8h |

Notes:
- 1131: (Must be compelted by September 17 for art iteration)

| ID | WBS | Task | Type | Duration | Start | Finish | Predecessors | Complete | Remaining | Total slack | Free slack | Constraint | Resources | Work | Actual work |
| --- | --- | --- | --- | --- | --- | --- | --- | --- | --- | --- | --- | --- | --- | --- | --- |
| 1160 | 3.7 | **Milestone 13 (Nov 15th)** |  | 166.75d? | 2002-04-16 A | 2002-12-05 |  | 58% | 69.96d? | 152.25d |  |  |  | 572.32h | 264.44h |
| 1161 | 3.7.1 | Use pause and unpause function. (when resuming the game after pausing it, the music gets re-started as opposed to resume, those function work fine iwhen I test them in Radmusic) | milestone | 0d | 2002-10-16 A | 2002-10-16 A |  | 100% |  |  |  | start no earlier than 2002-10-16 | Darren Esau [13%] |  |  |
| 1162 | 3.7.2 | Engine sfx keeps playing when game is paused |  | 1d? | 2002-10-16 A | 2002-10-16 A | 1161 | 100% |  |  |  |  | Darren Esau [80%] | 6.4h | 6.4h |
| 1163 | 3.7.3 | Mission 1 should use Main part of song ( not the Chase segment of song eventhough it is a chase) |  | 1d? | 2002-10-17 | 2002-10-17 | 1162 |  |  | 185.12d | 0d |  | Darren Esau [80%] | 6.4h |  |
| 1164 | 3.7.4 | Getting out of Simpsons House trigger win mission song (happend in Mission 2) |  | 1d? | 2002-10-18 | 2002-10-18 | 1163 |  |  | 185.12d | 0d |  | Darren Esau [80%] | 6.4h |  |
| 1165 | 3.7.5 | Pause music during dialog mission sequences ( letter box sequence) |  | 1d? | 2002-10-21 | 2002-10-21 | 1164 |  |  | 185.12d |  |  | Darren Esau [80%] | 6.4h |  |
| 1166 | 3.7.6 | find the bug with collision sfx not playing (too low intensities get sent out maybe?) |  | 1d? | 2002-10-25 A | 2002-10-25 A | 1165 | 100% |  |  |  |  | Darren Esau [80%] | 6.4h | 6.4h |
| 1167 | 3.7.7 | Fix footsteps volume (can't adjust volume, control don't respond) |  | 1d? | 2002-10-21 A | 2002-10-21 A | 1166 | 100% |  |  |  |  | Darren Esau [80%] | 6.4h | 6.4h |
| 1168 | 3.7.8 | add 10 seconds to go event for Power Plant |  | 1d? | 2002-10-22 | 2002-10-22 | 1167 |  |  | 183.12d | 0d |  | Darren Esau [80%] | 6.4h |  |
| 1169 | 3.7.9 | add Sunday Drive game state for in between mission |  | 1d? | 2002-10-23 | 2002-10-23 | 1168 |  |  | 183.12d |  |  | Darren Esau [80%] | 6.4h |  |
| 1170 | 3.7.10 | add switch sfx call for Power Plant |  | 2d | 2002-10-31 A | 2002-11-01 A | 1169 | 100% |  |  |  |  | Darren Esau [40%] | 6.4h | 6.4h |
| 1171 | 3.7.11 | add Power Plant platform sfx (as positional sound) |  | 1d? | 2002-11-04 A | 2002-11-04 | 1170 | 25% | 0.75d? | 175.12d |  |  | Darren Esau [80%] | 6.4h | 1.6h |
| 1172 | 3.7.12 | add a separate Ambience volume knob control (should also be routed thru the master volume) |  | 1.88d? | 2002-10-31 A | 2002-11-01 A | 1171 | 100% |  |  |  |  | Darren Esau [42.7%] | 6.4h | 6.4h |
| 1173 | 3.7.13 | add reverb support ( turn on reverb in power plant) |  | 7.03d? | 2002-10-28 A | 2002-11-06 | 1172 | 12% | 6.17d? | 174.1d |  |  | Darren Esau [80%] | 6.4h | 5.44h |
| 1174 | 3.7.14 | Complete debug feature where the object names are displayed |  | 4.88d? | 2002-11-04 A | 2002-11-08 A | 1173 | 100% |  |  |  |  | Darren Esau [16.4%] | 6.4h | 6.4h |
| 1175 | 3.7.18 | Audio for gag NISes |  | 10.28d? | 2002-11-04 A | 2002-11-18 | 1174 | 6% | 9.68d? | 164.85d | 0d | start no earlier than 2002-10-16 | Darren Esau [80%] | 6.4h | 3.84h |
| 1176 | 3.7.20 | Dialog system: eye blinking and mouth flapping |  | 1d? | 2002-11-18 | 2002-11-19 | 1175 |  |  | 164.85d |  |  | Darren Esau [80%] | 6.4h |  |
| 1177 | 3.7.21 | Interior sound effects - Final pass |  | 6d? | 2002-11-04 A | 2002-11-11 A | 1176 | 100% |  |  |  |  | Darren Esau [40%] | 6.4h | 6.4h |
| 1178 | 3.7.23 | ATG integration |  | 1d? | 2002-10-16 A | 2002-10-17 A |  | 100% |  |  |  | start no earlier than 2002-10-16 | Cary Brisebois [80%] | 6.4h | 6.4h |
| 1179 | 3.7.1 | Death volume support in the world builder tool (complete by October 25) |  | 6.88d | 2002-10-17 A | 2002-10-25 A | 1178 | 100% |  |  |  | start no earlier than 2002-10-16 | Cary Brisebois [80%] |  |  |
| 1180 | 3.7.3 | Camera collisions: on foot |  | 6.85d? | 2002-10-29 A | 2002-11-06 | 1179 | 90% | 0.69d? | 172.6d | 0d |  | Cary Brisebois [16.7%] | 6.4h | 6.12h |
| 1181 | 3.7.4 | Camera collisions: driving |  | 1d? | 2002-11-06 A | 2002-11-07 | 1180 | 45% | 0.55d? | 172.15d |  |  | Cary Brisebois [44%] | 3.52h | 1.58h |
| 1182 | 3.7.6 | Camera shake |  | 1d? | 2002-10-31 A | 2002-11-01 A | 1181 | 100% |  |  |  |  | Cary Brisebois [80%] | 6.4h | 6.4h |
| 1183 | 3.7.7 | Interior rail camera improvements |  | 1d? | 2002-11-01 A | 2002-11-04 A | 1182 | 100% |  |  |  |  | Cary Brisebois [80%] | 6.4h | 6.4h |
| 1184 | 3.7.8 | Improved camera setup for mission conversations |  | 4.88d? | 2002-11-04 A | 2002-11-08 A | 1183 | 100% |  |  |  |  | Cary Brisebois [16.4%] | 6.4h | 6.4h |
| 1185 | 3.7.9 | Help getting new level art in the game |  | 1d? | 2002-11-11 A | 2002-11-11 A | 1184 | 100% |  |  |  |  | Cary Brisebois [80%] | 6.4h | 6.4h |
| 1186 | 3.7.10 | Help getting new missions in the game |  | 1d? | 2002-11-12 A | 2002-11-12 A | 1185 | 100% |  |  |  |  | Cary Brisebois [80%] | 6.4h | 6.4h |
| 1187 | 3.7.11 | Improved command line parameters for artists to start in various world locations |  | 6.88d? | 2002-11-07 A | 2002-11-15 A | 1186 | 100% |  |  |  |  | Cary Brisebois [21.3%] | 6.4h | 6.4h |
| 1188 | 3.7.12 | Mission icon scaling based on distance |  | 1d? | 2002-10-16 | 2002-10-17 |  |  |  | 188d |  | start no earlier than 2002-10-16 | Chuck Chow [80%] | 6.4h |  |
| 1189 | 3.7.13 | Help getting new level art in the game |  | 1d? | 2002-10-17 A | 2002-10-18 A | 1188 | 100% |  |  |  |  | Chuck Chow [80%] | 6.4h | 6.4h |
| 1190 | 3.7.15 | Missions: Work with mission team to make sure they work |  | 1d? | 2002-10-18 A | 2002-10-21 | 1189 | 50% | 0.5d? | 185.5d | 0d |  | Chuck Chow [80%] | 6.4h | 3.2h |
| 1191 | 3.7.16 | Artist pipeline support |  | 1d? | 2002-10-21 A | 2002-10-22 | 1190 | 50% | 0.5d? | 185d |  |  | Chuck Chow [80%] | 6.4h | 3.2h |
| 1192 | 3.7.17 | Artist memory budget enforcement |  | 1d? | 2002-10-22 A | 2002-10-23 A | 1191 | 100% |  |  |  |  | Chuck Chow [80%] | 6.4h | 6.4h |
| 1193 | 3.7.39 | Sound properties database adjustment for Marc |  | 1d? | 2002-10-23 | 2002-10-24 | 1192 |  |  | 183d |  |  | Chuck Chow [80%] | 6.4h |  |
| 1194 | 3.7.31 | Dynamic loading speed improvements |  | 1d? | 2002-04-16 A | 2002-04-17 A |  | 100% |  |  |  |  | Devin Murname [80%] | 6.4h | 6.4h |
| 1195 | 3.7.32 | General dynamic loading ongoing tasks |  | 1d? | 2002-04-17 | 2002-04-18 | 1194 |  |  | 317d |  |  | Devin Murname [80%] | 6.4h |  |
| 1196 | 3.7.33 | Z Order |  | 1d? | 2002-04-18 A | 2002-04-19 A | 1195 | 100% |  |  |  |  | Devin Murname [80%] | 6.4h | 6.4h |
| 1197 | 3.7.36 | General performance optimizations |  | 1d? | 2002-04-19 | 2002-04-22 | 1196 |  |  | 315d |  |  | Devin Murname [80%] | 6.4h |  |
| 1198 | 3.7.53 | ATG 1.6 integration |  | 1d? | 2002-11-18 | 2002-11-18 | 1187 |  |  | 165.12d |  |  | Cary Brisebois [80%] | 6.4h |  |
| 1199 | 3.7.37 | Mission vehicle AI improvements |  | 1d? | 2002-10-16 | 2002-10-17 |  |  |  | 184.12d | 0d | start no earlier than 2002-10-16 | Dusit Eakkachaichanvet [80%] | 6.4h |  |
| 1200 | 3.7.38 | Pedestrians diving out of the way |  | 1.88d? | 2002-10-17 | 2002-10-18 | 1199 |  |  | 184.12d | 0d |  | Dusit Eakkachaichanvet [42.7%] | 6.4h |  |
| 1201 | 3.7.39 | Pedestrians hit by car response |  | 1d? | 2002-10-21 | 2002-10-21 | 1200 |  |  | 184.12d | 0d |  | Dusit Eakkachaichanvet [80%] | 6.4h |  |
| 1202 | 3.7.42 | Randomize loading of generic pedestrians from pedestrian library being developed by Slava |  | 1d? | 2002-10-22 | 2002-10-22 | 1201 |  |  | 184.12d |  |  | Dusit Eakkachaichanvet [80%] | 6.4h |  |
| 1203 | 3.7.40 | Support for camera collisions |  | 2.88d? | 2002-10-16 A | 2002-10-18 |  | 80% | 0.57d? | 182.19d | 0d | start no earlier than 2002-10-16 | Greg Mayer [27.8%] | 6.4h | 5.12h |
| 1204 | 3.7.41 | Car reset |  | 1d? | 2002-10-21 A | 2002-10-21 | 1203 | 50% | 0.5d? | 181.69d | 0d |  | Greg Mayer [80%] | 6.4h | 3.2h |
| 1205 | 3.7.43 | Skid support |  | 9.75d? | 2002-10-21 A | 2002-11-01 | 1204 | 75% | 2.44d? | 175.25d | 0d |  | Greg Mayer [13.1%] | 6.4h | 5.76h |
| 1206 | 3.7.44 | Death volume handling for car |  | 1d? | 2002-11-01 | 2002-11-04 | 1205 |  |  | 175.25d |  |  | Greg Mayer [80%] | 6.4h |  |
| 1207 | 3.7.45 | Dynamic object removal from DSG |  | 2.88d? | 2002-10-23 A | 2002-10-25 A | 1206 | 100% |  |  |  |  | Greg Mayer [27.8%] | 6.4h | 6.4h |
| 1208 | 3.7.46 | Disable character collision while character in the car |  | 1d? | 2002-10-28 | 2002-10-28 | 1207 |  |  | 174.62d | 0d |  | Greg Mayer [80%] | 6.4h |  |
| 1209 | 3.7.47 | Rockfords |  | 1d? | 2002-10-29 A | 2002-10-29 | 1208 | 90% | 0.1d? | 173.72d | 0d |  | Greg Mayer [80%] | 6.4h | 5.76h |
| 1210 | 3.7.48 | Speed bursts |  | 1d? | 2002-10-30 A | 2002-10-30 | 1209 | 40% | 0.6d? | 173.32d | 1d |  | Greg Mayer [80%] | 6.4h | 2.56h |
| 1211 | 3.7.50 | Tunable tipping tendancy |  | 1d? | 2002-11-01 A | 2002-11-01 | 1210 | 20% | 0.8d? | 172.12d | 0d |  | Greg Mayer [80%] | 6.4h | 1.28h |
| 1212 | 3.7.51 | All vehicles using GroundPlanePool |  | 1d? | 2002-11-04 | 2002-11-04 | 1211 |  |  | 172.12d | 1d |  | Greg Mayer [80%] | 6.4h |  |
| 1213 | 3.7.69 | Vehicle brake lights |  | 1d? | 2002-11-06 A | 2002-11-06 | 1212 | 20% | 0.8d? | 170.93d | 0d |  | Greg Mayer [80%] | 6.4h | 1.28h |
| 1214 | 3.7.71 | Steep terrain handling |  | 1d? | 2002-11-07 | 2002-11-07 | 1213 |  |  | 170.93d | 0d |  | Greg Mayer [80%] | 6.4h |  |
| 1215 | 3.7.72 | Assist Dusit as necessary |  | 1d? | 2002-11-08 | 2002-11-08 | 1214 |  |  | 170.93d | 1d |  | Greg Mayer [80%] | 6.4h |  |
| 1216 | 3.7.73 | Driving engine ongoing task (all driving engine code changes complete by Nov 8) |  | 1d? | 2002-11-12 A | 2002-11-12 | 1215 | 80% | 0.2d? | 169.12d |  |  | Greg Mayer [80%] | 6.4h | 5.12h |
| 1217 | 3.7.53 | Terrain type tags in the pipeline, with an interface to access them at runtime |  | 1d? | 2002-10-16 | 2002-10-17 |  |  |  | 184d | 0d | start no earlier than 2002-10-16 | James Harrison [80%] | 6.4h |  |
| 1218 | 3.7.54 | Lens flare / corona working |  | 1d? | 2002-10-17 | 2002-10-18 | 1217 |  |  | 184d | 0d |  | James Harrison [80%] | 6.4h |  |
| 1219 | 3.7.55 | Blobby shadows added for NPCs, pedestrians, non-player cars |  | 1d? | 2002-10-18 | 2002-10-21 | 1218 |  |  | 184d | 0d |  | James Harrison [80%] | 6.4h |  |
| 1220 | 3.7.56 | Memory savings pass |  | 1d? | 2002-10-21 | 2002-10-22 | 1219 |  |  | 184d | 0d |  | James Harrison [80%] | 6.4h |  |
| 1221 | 3.7.57 | Ongoing rendering effects task |  | 1d? | 2002-10-22 | 2002-10-23 | 1220 |  |  | 184d |  |  | James Harrison [80%] | 6.4h |  |
| 1222 | 3.7.83 | Code complete for playing movies correctly between missions in a level |  | 1d? | 2002-04-16 | 2002-04-17 |  |  |  | 316d | 0d |  | Joel DeYoung [50%] | 4h |  |
| 1223 | 3.7.84 | Firewire build ongoing task |  | 1d? | 2002-04-17 | 2002-04-18 | 1222 |  |  | 316d | 0d |  | Joel DeYoung [50%] | 4h |  |
| 1224 | 3.7.85 | General debugging ongoing task |  | 1d? | 2002-04-18 | 2002-04-19 | 1223 |  |  | 316d |  |  | Joel DeYoung [50%] | 4h |  |
| 1225 | 3.7.62 | Different skid mark types working (using terrain tags from James) |  | 1d? | 2002-04-16 | 2002-04-17 |  |  |  | 317.9d | 0d |  | Michael Riegger [80%] | 6.4h |  |
| 1226 | 3.7.63 | Button press flash effect |  | 1d? | 2002-04-17 A | 2002-04-18 | 1225 | 90% | 0.1d? | 317d |  |  | Michael Riegger [80%] | 6.4h | 5.76h |
| 1227 | 3.7.64 | Electricity effect on Frink’s car |  | 1d? | 2002-04-18 A | 2002-04-19 A | 1226 | 100% |  |  |  |  | Michael Riegger [80%] | 6.4h | 6.4h |
| 1228 | 3.7.66 | Nuclear glow bubbles effects |  | 1d? | 2002-04-19 A | 2002-04-22 | 1227 | 90% | 0.1d? | 311.9d | 0d |  | Michael Riegger [80%] | 6.4h | 5.76h |
| 1229 | 3.7.67 | Power coupling electrical effects |  | 1d? | 2002-04-22 A | 2002-04-23 | 1228 | 80% | 0.2d? | 311.1d | 0d |  | Michael Riegger [80%] | 6.4h | 5.12h |

Notes:
- 1160: Milestone 13 Build Features / Art Cutoff: November 8 / CD delivery date: November 15 / ·Level Art / oDowntown and Seaside complete with new track layouts / §All geometry, tracks, and final textures completed / §All collision volumes in place / §All moveable objects in place / §All breakable objects in place / §2 interiors complete for Downtown / §2 placeholder interiors for Seaside / §All interior gags complete for Suburbs and Downtown / §All hailing points (phone booths and bus stops) modeled and placed / §All local world spheres completed / §All collectible cards placed in the level / §All destructible cameras placed in the level / §All death volumes placed in the level / §All lighting and shadow decals complete / oSpecial effects for Suburbs and Downtown complete / ·FMV #2 40% complete / ·FMV #3, #4, #5 animatics complete / ·Damage states for all driver vehicles complete / ·Environmental mapping complete on all vehicles / ·All AI mission vehicles complete / ·All in-game character animations complete / ·All missions for levels 2, 3, 5 and 6 complete and running in game / ·Final rendering of visible collision volumes / ·Camera shake working / ·Camera collisions working / ·Special camera setup for conversations working / ·Death volume reset working, both in car and on foot / ·In car character animations triggering correctly / ·Occlusion volume runtime incorporated into rendering system / ·Pedestrians and NPCs jump out of the way of players car / ·Players car hitting other characters being handled correctly / ·Car door opens and closes correctly for car entry/exit / ·Car reset working / ·Car auto-reset working / ·All driving engine code changes complete / oSpecial code for rockfords / oSpecial code for speed bursts / oOther code changes required by designers / ·Camera collisions implemented for both in and out of car / ·Brake lights on vehicle / ·Sun with glare effects in the game / ·Loading compression working / ·Drivers appearing correctly in all vehicles / ·Object / traffic fade effects implemented / ·Eye blinking and mouth flapping for conversations synchronized with dialog events / ·All Z order problems resolved / ·All performance optimizations to do in anticipation of Performance Analyzer run complete / ·Can play a movie in the middle of a level / ·Code support for in-car character animations complete / ·Blobby shadows implemented and working / ·Code support for water effects completed / ·Electricity effects on Frinks car working correctly / ·Able to save and load games to memory card and Xbox hard drive / ·All sound pipelines in place / ·Audio for generic traffic working / ·Some final interactive music in the game / ·First-pass collision sounds / Placeholder audio for gag NISes working
- 1161: Nov 12: / Here is the recap of what we talked about at the coder meeting. / First and foremost, we must address stability and memory error issues in / the build. / 1. Cary is working to get memory under control on GameCube. / 2. We also need to be looking at the ability to jump to different / missions, abort missions, restart missions, quit to the front end, jump / to missions in different levels, etc, reliably and stably. Nigel and / Devin will look at this area. Help from everyone is welcome on this, as / always. / We are also attempting to get as many planned features into the build as / possible, but these are secondary to both solving the above problems and / to shipping on time without people being here all night on Thursday. / Here is a list of things that are being worked on: / 1. Piping all latest car art / 2. Driving engine code changes / 3. Death volumes / 4. Character dynamic loading / 5. More varied pedestrian models / 6. Dynamic object rest tests / 7. Audio synchronization in conversations / 8. HUD map revisions / 9. Generic harassment vehicles / 10. More and more optimizations / DO NOT check in any work on these if they will put the milestone build / at risk. At the end of the day, these will be nice to get in but can / wait until MS 14 if they will end up sacrificing stability. / The designers are pushing to get all missions from levels 2, 3, 5 and 6 / in the game. They are still on track to have all those scripts / completed and tested by the end of the week. However, in the interest / of the extra work that is often required in debugging these and making / sure they work reliably, we are establishing a cut-off of ***1:00 / Wednesday*** for mission scripts to go in for MS 13. I spoke with Carey / and Joe about this. Each designer is working on a separate level, so / the most likely scenario is that some missions will be working in each / of those 4 levels. / The remainder of the week should be to hone in on making the 6 MS CDs / work with the current art and design content. / Any questions or concerns, please let me know. / Joel
- 1171: week of Nov 11
- 1173: Darren Esau (Tue 12/11/02): Rob Sparks is helping with this, he's currently investigating the missing Xbox reverb
- 1175: Single shots work. / Do they need to loop? Marc to check / code written but not tested / ms 13: many small tasks ie. gear shifting, dialogue, traffic sounds (doppler), reverb (power plant), etc. / Darren Esau (Wed 23/10/02): ==== Published to Microsoft Project server by Wolfgang Hamann on 23/10/02 12:23 PM ===== / code written but not tested / ms 13: many small tasks ie. gear shifting, dialogue, traffic sounds (doppler), reverb (power plant), etc. / Darren Esau (Wed 06/11/02): ==== Published to Microsoft Project server by Wolfgang Hamann on 06/11/02 10:57 AM ===== / code written but not tested / ms 13: many small tasks ie. gear shifting, dialogue, traffic sounds (doppler), reverb (power plant), etc. / Darren Esau (Wed 23/10/02): ==== Published to Microsoft Project server by Wolfgang Hamann on 23/10/02 12:23 PM ===== / code written but not tested / ms 13: many small tasks ie. gear shifting, dialogue, traffic sounds (doppler), reverb (power plant), etc. / Darren Esau (Tue 12/11/02): ==== Published to Microsoft Project server by Wolfgang Hamann on 11/11/02 1:27 PM ===== / Single shots work. / Do they need to loop? Marc to check / code written but not tested / ms 13: many small tasks ie. gear shifting, dialogue, traffic sounds (doppler), reverb (power plant), etc. / Darren Esau (Wed 23/10/02): ==== Published to Microsoft Project server by Wolfgang Hamann on 23/10/02 12:23 PM ===== / code written but not tested / ms 13: many small tasks ie. gear shifting, dialogue, traffic sounds (doppler), reverb (power plant), etc. / Darren Esau (Wed 06/11/02): ==== Published to Microsoft Project server by Wolfgang Hamann on 06/11/02 10:57 AM ===== / code written but not tested / ms 13: many small tasks ie. gear shifting, dialogue, traffic sounds (doppler), reverb (power plant), etc. / Darren Esau (Wed 23/10/02): ==== Published to Microsoft Project server by Wolfgang Hamann on 23/10/02 12:23 PM ===== / code written but not tested / ms 13: many small tasks ie. gear shifting, dialogue
- 1177: what is playing in the interiors? / Darren Esau (Wed 23/10/02): ==== Published to Microsoft Project server by Wolfgang Hamann on 23/10/02 12:23 PM ===== / Darren Esau (Tue 12/11/02): ==== Published to Microsoft Project server by Wolfgang Hamann on 11/11/02 1:27 PM ===== / what is playing in the interiors? / Darren Esau (Wed 23/10/02): ==== Published to Microsoft Project server by Wolfgang Hamann on 23/10/02 12:23 PM =====
- 1188: Chuck Chow (Thu 07/11/02): Which Icon are you talking about?? / Chuck Chow (Tue 12/11/02): ==== Published to Microsoft Project server by Wolfgang Hamann on 12/11/02 11:24 AM ===== / Chuck Chow (Thu 07/11/02): Which Icon are you talking about??
- 1189: Chuck Chow (Thu 07/11/02): On Going N/A / Chuck Chow (Tue 12/11/02): ==== Published to Microsoft Project server by Wolfgang Hamann on 12/11/02 11:24 AM ===== / Chuck Chow (Thu 07/11/02): On Going N/A
- 1190: Chuck Chow (Thu 07/11/02): On Going N/A / Chuck Chow (Tue 12/11/02): ==== Published to Microsoft Project server by Wolfgang Hamann on 12/11/02 11:24 AM ===== / Chuck Chow (Thu 07/11/02): On Going N/A
- 1191: Chuck Chow (Thu 07/11/02): On Going N/A / Chuck Chow (Tue 12/11/02): ==== Published to Microsoft Project server by Wolfgang Hamann on 12/11/02 11:24 AM ===== / Chuck Chow (Thu 07/11/02): On Going N/A
- 1194: Devin Murname (Tue 12/11/02): done
- 1195: Devin Murname (Thu 07/11/02): o/g / Devin Murname (Tue 12/11/02): o/g
- 1196: Devin Murname (Tue 12/11/02): done
- 1197: Devin Murname (Thu 07/11/02): o/g / Devin Murname (Tue 12/11/02): o/g
- 1198: Devin Murname (Thu 07/11/02): Cary / Cary Brisebois (Tue 12/11/02): ==== Published to Microsoft Project server by Wolfgang Hamann on 11/11/02 1:27 PM ===== / Devin Murname (Thu 07/11/02): Cary
- 1202: task added Nov 6th. / Dusit Eakkachaichanvet (Wed 06/11/02): ==== Published to Microsoft Project server by Wolfgang Hamann on 06/11/02 10:14 AM ===== / task added Nov 6th.
- 1203: must be done by Sept 17th for designer iteration / Greg Mayer (Tue 29/10/02): ==== Published to Microsoft Project server by Wolfgang Hamann on 29/10/02 10:20 AM ===== / must be done by Sept 17th for designer iteration
- 1204: depot/users/greg/tasks.txt / damage states on vehicles - artist dependencies / must be done by sept 24 for art iteration / Greg Mayer (Tue 29/10/02): ==== Published to Microsoft Project server by Wolfgang Hamann on 29/10/02 10:20 AM ===== / //depot/users/greg/tasks.txt / damage states on vehicles - artist dependencies / must be done by sept 24 for art iteration
- 1217: he is on vacation for 2 weeks first of November / James Harrison (Tue 29/10/02): ==== Published to Microsoft Project server by Wolfgang Hamann on 29/10/02 10:20 AM ===== / he is on vacation for 2 weeks first of November
- 1225: Michael Riegger (Tue 12/11/02): Terrain typing not available at present
- 1226: Michael Riegger (Tue 12/11/02): Should just be a matter of an artist creating them
- 1227: Michael Riegger (Tue 12/11/02): Done
- 1228: Michael Riegger (Tue 12/11/02): Glow working perfectly on xbox. Rotated 90 degrees on PS2. Kevin Voon is looking into it. Aryan is still planning to redo effect
- 1229: Michael Riegger (Tue 12/11/02): Tied to world animation effects. Code should be done by milestone. Art may not be ready

| ID | WBS | Task | Duration | Start | Finish | Predecessors | Complete | Remaining | Total slack | Free slack | Constraint | Resources | Work | Actual work |
| --- | --- | --- | --- | --- | --- | --- | --- | --- | --- | --- | --- | --- | --- | --- |
| 1230 | 3.7.68 | Power coupling destroy effects | 1d? | 2002-04-23 A | 2002-04-24 | 1229 | 80% | 0.2d? | 310.3d | 0d |  | Michael Riegger [80%] | 6.4h | 5.12h |
| 1231 | 3.7.69 | World animation effects | 1d? | 2002-04-24 A | 2002-04-25 | 1230 | 80% | 0.2d? | 309.5d | 0d |  | Michael Riegger [80%] | 6.4h | 5.12h |
| 1232 | 3.7.95 | Effects iteration ongoing task | 1d? | 2002-04-25 A | 2002-04-26 | 1231 | 60% | 0.4d? | 308.9d | 0d |  | Michael Riegger [80%] | 6.4h | 3.84h |
| 1233 | 3.7.96 | Presentation manager changes required for new presentation elements | 1d? | 2002-04-26 | 2002-04-29 | 1232 |  |  | 308.9d | 0d |  | Michael Riegger [80%] | 6.4h |  |
| 1234 | 3.7.92 | Code support for all water effects complete | 1d? | 2002-04-29 A | 2002-04-30 | 1233 | 40% | 0.6d? | 308.5d | 0d |  | Michael Riegger [80%] | 6.4h | 2.56h |
| 1235 | 3.7.93 | Breaking camera effects | 1d? | 2002-04-30 A | 2002-05-01 | 1234 | 50% | 0.5d? | 308d |  |  | Michael Riegger [80%] | 6.4h | 3.2h |
| 1236 | 3.7.70 | Car door opens and closes properly on character entry/exit | 1d? | 2002-10-16 A | 2002-10-17 |  | 80% | 0.2d? | 188d |  | start no earlier than 2002-10-16 | Nigel Brooke [80%] | 6.4h | 5.12h |
| 1237 | 3.7.71 | Support for leaving the car door open if running on exit (request from Joe M.) | 1.88d? | 2002-10-17 A | 2002-10-18 A | 1236 | 100% |  |  |  |  | Nigel Brooke [42.7%] | 6.4h | 6.4h |
| 1238 | 3.7.72 | Death volume handling for on foot | 1d? | 2002-10-21 | 2002-10-21 | 1237 |  |  | 185.12d |  |  | Nigel Brooke [80%] | 6.4h |  |
| 1239 | 3.7.73 | In car character animations | 4.88d? | 2002-10-21 A | 2002-10-25 A | 1238 | 100% |  |  |  |  | Nigel Brooke [16.4%] | 6.4h | 6.4h |
| 1240 | 3.7.74 | Character collision optimizations | 1d? | 2002-10-28 | 2002-10-28 | 1239 |  |  | 173.93d | 0d |  | Nigel Brooke [80%] | 6.4h |  |
| 1241 | 3.7.75 | Dynamic object rest tests (includes vehicles) | 1d? | 2002-10-29 | 2002-10-29 | 1240 |  |  | 173.93d | 0d |  | Nigel Brooke [80%] | 6.4h |  |
| 1242 | 3.7.76 | Fix bugs related to too many fence pieces being submitted | 1d? | 2002-10-30 | 2002-10-30 | 1241 |  |  | 173.93d | 0d |  | Nigel Brooke [80%] | 6.4h |  |
| 1243 | 3.7.104 | World physics and collisions ongoing task | 1d? | 2002-10-31 | 2002-10-31 | 1242 |  |  | 173.93d | 0d |  | Nigel Brooke [80%] | 6.4h |  |
| 1244 | 3.7.105 | On foot gameplay ongoing task | 1d? | 2002-11-01 | 2002-11-01 | 1243 |  |  | 173.93d | 0d |  | Nigel Brooke [80%] | 6.4h |  |
| 1245 | 3.7.103 | Drivers appearing correctly in all vehicles | 1d? | 2002-11-04 A | 2002-11-04 | 1244 | 80% | 0.2d? | 173.12d | 0d |  | Nigel Brooke [80%] | 6.4h | 5.12h |
| 1246 | 3.7.86 | Dynamic loading of characters | 2d | 2002-11-05 | 2002-11-06 | 1245 |  |  | 173.12d |  |  | Nigel Brooke [80%] | 12.8h |  |
| 1247 | 3.7.87 | Double jump | 1d | 2002-11-07 A | 2002-11-07 A | 1246 | 100% |  |  |  |  | Nigel Brooke [80%] | 6.4h | 6.4h |
| 1248 | 3.7.77 | Can load/save games on memory card | 1d? | 2002-10-16 A | 2002-10-17 |  | 50% | 0.5d? | 181.28d | 0d | start no earlier than 2002-10-16 | Tony Chu [80%] | 6.4h | 3.2h |
| 1249 | 3.7.78 | Memory card screens | 1d? | 2002-10-17 A | 2002-10-18 | 1248 | 50% | 0.5d? | 180.78d | 0d |  | Tony Chu [80%] | 6.4h | 3.2h |
| 1250 | 3.7.81 | HUD changes required for bonus missions and secondary mission objectives | 1d? | 2002-10-18 | 2002-10-21 | 1249 |  |  | 180.78d | 0d |  | Tony Chu [80%] | 6.4h |  |
| 1251 | 3.7.82 | All Scrooby work required by designers for presentation iteration | 1d? | 2002-10-21 A | 2002-10-22 | 1250 | 50% | 0.5d? | 180.28d | 13.88d |  | Tony Chu [80%] | 6.4h | 3.2h |
| 1252 | 3.7.83 | Integration of stylized HUD map | 18.88d? | 2002-11-11 A | 2002-12-05 | 1251 | 75% | 4.72d? | 152.25d |  |  | Tony Chu [12%] | 6.4h | 5.86h |
| 1253 | 3.8 | **Milestone 14 (Dec 15th)** | 18d? | 2002-11-18 A | 2002-12-11 |  | 26% | 13.35d? | 148.12d |  |  |  | 907.6h | 169.36h |
| 1254 | 3.8.1 | Mission manager support for secondary mission objectives (bonus objectives) | 1d | 2002-11-18 | 2002-11-19 |  |  |  | 165d |  | start no earlier than 2002-11-18 | Cary Brisebois | 8h |  |
| 1255 | 3.8.2 | Mission manager support for bonus missions | 4.88d? | 2002-11-18 A | 2002-11-22 A | 1254 | 100% |  |  |  | start no earlier than 2002-11-18 | Cary Brisebois [20.5%] | 8h | 8h |
| 1256 | 3.8.3 | GameCube accessories work (steering wheels, wireless controller) | 9.75d? | 2002-11-18 A | 2002-11-29 | 1255 | 70% | 2.92d? | 139.9d | 0d | start no earlier than 2002-11-18 | Cary Brisebois [10.3%] | 8h | 5.6h |
| 1257 | 3.8.4 | PS2 steering wheel works | 10.05d? | 2002-11-18 A | 2002-12-02 | 1256 | 7% | 9.35d? | 148.95d | 0d | start no earlier than 2002-11-18 | Cary Brisebois | 8h | 5.6h |
| 1258 | 3.8.5 | Controller rumble | 1d? | 2002-12-02 | 2002-12-03 | 1257 |  |  | 148.95d | 0d | start no earlier than 2002-11-18 | Cary Brisebois | 8h |  |
| 1259 | 3.8.6 | Terrain specific controller rumble | 1d? | 2002-12-03 | 2002-12-04 | 1258 |  |  | 148.95d | 0d | start no earlier than 2002-11-18 | Cary Brisebois | 8h |  |
| 1260 | 3.8.7 | Address problematic camera areas in the world | 1d? | 2002-12-04 | 2002-12-05 | 1259 |  |  | 148.95d | 0d | start no earlier than 2002-11-18 | Cary Brisebois | 8h |  |
| 1261 | 3.8.8 | Speed burst cam | 1d? | 2002-12-05 | 2002-12-06 | 1260 |  |  | 148.95d | 0.82d | start no earlier than 2002-11-27 | Cary Brisebois | 8h |  |
| 1262 | 3.8.9 | Task 1 | 1d? | 2002-12-09 | 2002-12-09 | 1261 |  |  | 148.12d | 0d | start no earlier than 2002-12-09 | Cary Brisebois [80%] | 6.4h |  |
| 1263 | 3.8.10 | Task 2 | 1d? | 2002-12-10 | 2002-12-10 | 1262 |  |  | 148.12d | 0d | start no earlier than 2002-11-27 | Cary Brisebois [80%] | 6.4h |  |
| 1264 | 3.8.11 | Task 3 | 1d? | 2002-12-11 | 2002-12-11 | 1263 |  |  | 148.12d |  | start no earlier than 2002-11-27 | Cary Brisebois [80%] | 6.4h |  |
| 1265 | 3.8.12 | Artist pipeline support | 1d? | 2002-11-18 | 2002-11-19 |  |  |  | 160d | 0d | start no earlier than 2002-11-18 | Chuck Chow | 8h |  |
| 1266 | 3.8.13 | Artist memory budget enforcement | 1d? | 2002-11-19 | 2002-11-20 | 1265 |  |  | 160d | 0d | start no earlier than 2002-11-18 | Chuck Chow | 8h |  |
| 1267 | 3.8.14 | Help getting new level art in the game | 1d? | 2002-11-20 | 2002-11-21 | 1266 |  |  | 160d | 0d | start no earlier than 2002-11-18 | Chuck Chow | 8h |  |
| 1268 | 3.8.15 | Help getting new missions in the game | 1d? | 2002-11-21 | 2002-11-22 | 1267 |  |  | 160d | 2.88d | start no earlier than 2002-11-18 | Chuck Chow | 8h |  |
| 1269 | 3.8.16 | Ensure all reward assets are in the game (character skins, bonus vehicles, etc.) | 1d? | 2002-11-27 | 2002-11-27 | 1268 |  |  | 157.12d | 0d | start no earlier than 2002-11-27 | Chuck Chow [80%] | 6.4h |  |
| 1270 | 3.8.17 | Ensure all Halloween specific functionality gets in the game | 1d? | 2002-11-28 | 2002-11-28 | 1269 |  |  | 157.12d |  | start no earlier than 2002-11-27 | Chuck Chow [80%] | 6.4h |  |
| 1271 | 3.8.18 | Task 1 | 1d? | 2002-11-27 | 2002-11-27 |  |  |  | 158.12d |  | start no earlier than 2002-11-27 | Chuck Chow [80%] | 6.4h |  |
| 1272 | 3.8.19 | Task 2 | 1d? | 2002-12-09 | 2002-12-09 |  |  |  | 150.12d |  | start no earlier than 2002-12-09 | Chuck Chow [80%] | 6.4h |  |
| 1273 | 3.8.20 | Task 3 | 1d? | 2002-12-09 | 2002-12-09 |  |  |  | 150.12d |  | start no earlier than 2002-12-09 | Chuck Chow [80%] | 6.4h |  |
| 1274 | 3.8.18 | Terrain specific sound effects working | 1d? | 2002-11-18 | 2002-11-19 |  |  |  | 164d | 0d | start no earlier than 2002-11-18 | Darren Esau | 8h |  |
| 1275 | 3.8.20 | PS2 mipmap tuning | 1d? | 2002-11-19 | 2002-11-20 | 1274 |  |  | 164d |  | start no earlier than 2002-11-18 | Darren Esau | 8h |  |
| 1276 | 3.8.21 | PS2 performance analysis and optimization (including Sony PA run) | 1d? | 2002-11-20 A | 2002-11-21 A | 1275 | 100% |  |  |  | start no earlier than 2002-11-18 | Darren Esau | 8h | 8h |
| 1277 | 3.8.22 | Positional sounds | 1d? | 2002-11-21 | 2002-11-22 | 1276 |  |  | 161d | 0d | start no earlier than 2002-11-18 | Darren Esau | 8h |  |
| 1278 | 3.8.25 | Sounds attached to moving objects | 1d? | 2002-11-22 | 2002-11-25 | 1277 |  |  | 161d |  | start no earlier than 2002-11-18 | Darren Esau | 8h |  |
| 1279 | 3.8.24 | Ambient sound triggers | 1d? | 2002-11-18 A | 2002-11-19 A | 1278 | 100% |  |  |  | start no earlier than 2002-11-18 | Darren Esau | 8h | 8h |
| 1280 | 3.8.25 | Finalize car engine sound code | 3d | 2002-11-18 A | 2002-11-21 | 1279 |  | 3d | 149.2d | 0d | start no earlier than 2002-11-20 | Darren Esau [300%] |  |  |
| 1281 | 3.8.28 | Reverb on all platforms - Gamecube | 3.2d? | 2002-11-18 A | 2002-11-21 | 1280 | 31% | 2.2d? | 151.2d | 0d | start no earlier than 2002-11-18 | Darren Esau | 8h | 8h |
| 1282 | 3.8.29 | Switch to different music in interiors | 1d? | 2002-11-21 A | 2002-11-22 | 1281 | 90% | 0.1d? | 150.3d | 0d | start no earlier than 2002-11-18 | Darren Esau | 8h | 7.2h |
| 1283 | 3.8.30 | Audio ongoing tasks | 1d? | 2002-11-22 | 2002-11-25 | 1282 |  |  | 150.3d | 0d | start no earlier than 2002-11-18 | Darren Esau | 8h |  |
| 1284 | 3.8.31 | New vehicle based audio events - Dialogue | 7d | 2002-11-18 A | 2002-11-27 | 1283 | 10% | 6.3d | 154.8d | 0d | start no earlier than 2002-11-25 | Darren Esau | 16h | 5.6h |
| 1285 | 3.8.32 | Generic Traffic Audio | 1d? | 2002-11-27 | 2002-11-28 | 1284 |  |  | 154.8d | 0d | start no earlier than 2002-11-18 | Darren Esau | 8h |  |
| 1286 | 3.8.33 | Loading issues - sound | 9.6d | 2002-11-18 A | 2002-11-29 | 1285 | 67% | 3.2d | 156.4d |  | start no earlier than 2002-11-20 | Darren Esau [80%] | 51.2h | 40.96h |
| 1287 | 3.8.34 | Task 1 | 1d? | 2002-11-27 | 2002-11-27 |  |  |  | 158.12d |  | start no earlier than 2002-11-27 | Darren Esau [80%] | 6.4h |  |
| 1288 | 3.8.35 | Task 2 | 1d? | 2002-11-27 | 2002-11-27 |  |  |  | 158.12d |  | start no earlier than 2002-11-27 | Darren Esau [80%] | 6.4h |  |
| 1289 | 3.8.36 | Task 3 | 1d? | 2002-11-27 | 2002-11-27 |  |  |  | 158.12d |  | start no earlier than 2002-11-27 | Darren Esau [80%] | 6.4h |  |
| 1290 | 3.8.30 | Incorporation of P3D tool to auto-optimize meshes | 1d? | 2002-11-18 | 2002-11-19 |  |  |  | 165d |  | start no earlier than 2002-11-18 | Devin Murname | 8h |  |
| 1291 | 3.8.38 | Offline DSG setup for all object types | 1d? | 2002-11-18 | 2002-11-19 |  |  |  | 165d |  | start no earlier than 2002-11-18 | Devin Murname | 8h |  |
| 1292 | 3.8.33 | General dynamic loading ongoing tasks | 1d? | 2002-11-18 | 2002-11-19 |  |  |  | 165d |  | start no earlier than 2002-11-18 | Devin Murname | 8h |  |
| 1293 | 3.8.34 | Load cancels working (dependent on P3D providing this) | 1d? | 2002-11-18 | 2002-11-19 |  |  |  | 165d |  | start no earlier than 2002-11-18 | Devin Murname | 8h |  |
| 1294 | 3.8.35 | Boulevard heap integration | 1d? | 2002-11-18 | 2002-11-19 |  |  |  | 165d |  | start no earlier than 2002-11-18 | Devin Murname | 8h |  |
| 1295 | 3.8.36 | PS2 mipmap tuning | 1d? | 2002-11-18 | 2002-11-19 |  |  |  | 165d |  | start no earlier than 2002-11-18 | Devin Murname | 8h |  |
| 1296 | 3.8.43 | Task 1 | 1d? | 2002-11-27 | 2002-11-27 |  |  |  | 158.12d |  | start no earlier than 2002-11-27 | Devin Murname [80%] | 6.4h |  |
| 1297 | 3.8.44 | Task 2 | 1d? | 2002-11-27 | 2002-11-27 |  |  |  | 158.12d |  | start no earlier than 2002-11-27 | Devin Murname [80%] | 6.4h |  |
| 1298 | 3.8.45 | Task 3 | 1d? | 2002-11-27 | 2002-11-27 |  |  |  | 158.12d |  | start no earlier than 2002-11-27 | Devin Murname [80%] | 6.4h |  |
| 1299 | 3.8.37 | Mission vehicle AI improvements | 1d? | 2002-11-18 A | 2002-11-19 |  | 50% | 0.5d? | 165d |  | start no earlier than 2002-11-18 | Dusit Eakkachaichanvet | 8h | 4h |

Notes:
- 1230: Michael Riegger (Tue 12/11/02): Will be done by milestone, nearly complete
- 1231: Michael Riegger (Tue 12/11/02): Instancing of animated objects in testing phase. (Includes powerbox effects)
- 1232: Michael Riegger (Tue 12/11/02): World animation effects overhaul is major time consumer
- 1233: Michael Riegger (Tue 12/11/02): No specific tasks assigned
- 1234: Michael Riegger (Tue 12/11/02): Most water effects should be doable with existing code, P3D features have been requested due to heavy memory requirements
- 1235: Michael Riegger (Tue 12/11/02): Code is shared with powerboxes, should be complete by milestone. Aryan probably won't have time though
- 1253: Milestone 14 Build Features / Art Cutoff: December 6 / CD delivery date: December 13 / Sony Performance Analyzer run: early December (tentative) / ·Level Art / oSpecial effects for Seaside complete / oOcean effect for Seaside complete / oAll interiors complete / §3 for Suburbs / §2 for Downtown / §2 for Seaside / oSuburbs level completed with all level re-design changes made / oPolishing on Downtown and Seaside levels / ·FMV pipeline for all 6 SKUs complete / ·Final logo FMVs for all 6 SKUs in the game / ·FMV #6, #7 animatic complete / ·Terrain tagging in and all art complete / ·All effects that use terrain tagging complete / oSound effects / oSkid marks / oParticle effects / oTerrain specific friction / oTerrain specific controller rumble / ·Can play the game with accessories: / oGameCube steering wheel / oGameCube Wavebird / oGameboy Advance as a controller / oLogitech PS2 steering wheel / ·Continuation of work on FMV #1 through #5 / ·Iris transition for interiors complete and in all interiors / ·Can have conversations in interiors / ·Can trigger interactive gags in interiors / ·Can get collectibles in interiors / ·Secondary mission objectives working in the game / ·Bonus missions working in the game / ·Can select and play unlocked movies from the front end / ·HUD re-design complete / ·All 2D collector card art complete / ·All collector cards placed in the all levels / ·Mission presentation flow re-design complete / ·Level load newspaper screens complete / ·Generic load screen (game to front end) complete / ·One pass of tuning complete on all missions / ·All bonus vehicles complete and in the game / ·All bonus character skins complete / ·All generic pedestrian models and animations complete / ·All Halloween specific characters complete / ·All areas causing problematic camera collisions identified and replaced with rail cameras as appropriate / ·Rumble on controllers implemented and tuned according to ground surface, collision strength, etc. / ·Load cancels working correctly / ·Support for turning off environmental maps (or changing to an alternate map) in interiors, tunnels, etc. / ·Shadow volumes for tunnels, interiors, etc. / ·Object fade-in effect incorporated into the game where needed / ·Shadow volume and environmental mapping switches working for covered areas in the world / ·All interactive gags working in the game with animations and placeholder audio / ·All memory card screens complete / ·Mini driving game missions working / ·All reward systems designed, implemented and integrated with gameplay / ·World geometry auto-optimize step integrated into art pipeline / ·Mipmap levels tuned on PS2 / ·Boulevard heaps integrated into dynamic loading system / ·Language auto-select / language select working in PAL build on all 3 platforms / ·Positional sounds working in the game / ·Sounds attached to moving objects working / ·Triggers for ambient sounds working / ·Car engine sound code finalized / ·First-pass mission music in the game / ·First-pass location based sounds in the game / ·Some final ambient sounds in the game / ·Switch to different music when in interiors working
- 1265: halloween isnt going in this milestone according to jeff p. plz confirm with yayoi and joel , also i think i will be taking over the rewards manager that was assigned to dusit.
- 1274: may move to next milestone / bottleneck taken care of / James has written an interface
- 1279: may be done
- 1282: was working at one point / more of a script issue ie. wrt licensed music
- 1284: Chris?
- 1299: Dusit Eakkachaichanvet (Wed 27/11/02): Ongoing

| ID | WBS | Task | Duration | Start | Finish | Complete | Remaining | Total slack | Constraint | Resources | Work | Actual work |
| --- | --- | --- | --- | --- | --- | --- | --- | --- | --- | --- | --- | --- |
| 1300 | 3.8.38 | Race vehicle AI | 1d? | 2002-11-18 A | 2002-11-19 | 50% | 0.5d? | 165d | start no earlier than 2002-11-18 | Dusit Eakkachaichanvet | 8h | 4h |
| 1301 | 3.8.39 | Ensure logic of all reward systems work as designed (coordinate UI with Tony) | 1d? | 2002-11-18 | 2002-11-19 |  |  | 165d | start no earlier than 2002-11-18 | Dusit Eakkachaichanvet | 8h |  |
| 1302 | 3.8.49 | Ensure all reward assets are in the game (character skins, bonus vehicles, etc) | 1d? | 2002-11-18 | 2002-11-19 |  |  | 165d | start no earlier than 2002-11-18 | Dusit Eakkachaichanvet | 8h |  |
| 1303 | 3.8.50 | Pedestrians path auto adjust to terrain in pipeline | 4.88d? | 2002-11-18 A | 2002-11-22 A | 100% |  |  | start no earlier than 2002-11-18 | Dusit Eakkachaichanvet [20.5%] | 8h | 8h |
| 1304 | 3.8.51 | Randomize loading of generic pedestrians from pedestrian library being developed by Slava | 5d? | 2002-11-18 A | 2002-11-22 | 80% | 1d? | 161.12d | start no earlier than 2002-11-18 | Dusit Eakkachaichanvet [20%] | 8h | 6.4h |
| 1305 | 3.8.52 | Task 1 | 1d? | 2002-11-27 | 2002-11-27 |  |  | 158.12d | start no earlier than 2002-11-27 | Dusit Eakkachaichanvet [80%] | 6.4h |  |
| 1306 | 3.8.53 | Task 2 | 1d? | 2002-11-27 | 2002-11-27 |  |  | 158.12d | start no earlier than 2002-11-27 | Dusit Eakkachaichanvet [80%] | 6.4h |  |
| 1307 | 3.8.54 | Task 3 | 1d? | 2002-11-27 | 2002-11-27 |  |  | 158.12d | start no earlier than 2002-11-27 | Dusit Eakkachaichanvet [80%] | 6.4h |  |
| 1308 | 3.8.40 | Street racing game manager | 1d? | 2002-11-18 | 2002-11-19 |  |  | 165d | start no earlier than 2002-11-18 | Greg Mayer | 8h |  |
| 1309 | 3.8.41 | Terrain specific friction working | 1d? | 2002-11-18 | 2002-11-19 |  |  | 165d | start no earlier than 2002-11-18 | Greg Mayer | 8h |  |
| 1310 | 3.8.42 | Work with Dusit and Tony to ensure all aspects of Street racing games are complete | 1d? | 2002-11-18 | 2002-11-19 |  |  | 165d | start no earlier than 2002-11-18 | Greg Mayer | 8h |  |
| 1311 | 3.8.43 | Assist Dusit with vehicle and race AI as necessary | 1d? | 2002-11-18 | 2002-11-19 |  |  | 165d | start no earlier than 2002-11-18 | Greg Mayer | 8h |  |
| 1312 | 3.8.59 | Task 1 | 1d? | 2002-11-27 | 2002-11-27 |  |  | 158.12d | start no earlier than 2002-11-27 | Greg Mayer [80%] | 6.4h |  |
| 1313 | 3.8.60 | Task 2 | 1d? | 2002-11-27 | 2002-11-27 |  |  | 158.12d | start no earlier than 2002-11-27 | Greg Mayer [80%] | 6.4h |  |
| 1314 | 3.8.61 | Task 3 | 1d? | 2002-11-27 | 2002-11-27 |  |  | 158.12d | start no earlier than 2002-11-27 | Greg Mayer [80%] | 6.4h |  |
| 1315 | 3.8.53 | 1 week of vacation | 1d? | 2002-11-18 A | 2002-11-19 |  | 1d? | 165d | start no earlier than 2002-11-18 | James Harrison |  |  |
| 1316 | 3.8.54 | Ensure all icons (collector cards, couplings, etc) are appearing in the game and working | 1d? | 2002-11-18 | 2002-11-19 |  |  | 165d | start no earlier than 2002-11-18 | James Harrison | 8h |  |
| 1317 | 3.8.64 | Support for terrain types | 1d? | 2002-12-09 | 2002-12-09 |  |  | 150.12d | start no earlier than 2002-12-09 | James Harrison [80%] | 6.4h |  |
| 1318 | 3.8.65 | Ensure all interactive gags get into the game and can be triggered correctly (support for Aryan) | 1d? | 2002-12-09 | 2002-12-09 |  |  | 150.12d | start no earlier than 2002-12-09 | James Harrison [80%] | 6.4h |  |
| 1319 | 3.8.56 | Object fade in (traffic, props, dynamically loaded world art) | 1d? | 2002-11-18 | 2002-11-19 |  |  | 165d | start no earlier than 2002-11-18 | James Harrison | 8h |  |
| 1320 | 3.8.57 | Shadow volumes & environmental mapping switch for interior driveable areas (SNPP, tunnels, etc) | 1d? | 2002-11-18 | 2002-11-19 |  |  | 165d | start no earlier than 2002-11-18 | James Harrison [25%] | 2h |  |
| 1321 | 3.8.68 | Rendering debugging and enhancements ongoing task | 1d? | 2002-11-18 | 2002-11-19 |  |  | 165d | start no earlier than 2002-11-18 | James Harrison [80%] | 6.4h |  |
| 1322 | 3.8.69 | Task 1 | 1d? | 2002-11-27 | 2002-11-27 |  |  | 158.12d | start no earlier than 2002-11-27 | James Harrison [80%] | 6.4h |  |
| 1323 | 3.8.70 | Task 2 | 1d? | 2002-11-27 | 2002-11-27 |  |  | 158.12d | start no earlier than 2002-11-27 | James Harrison [80%] | 6.4h |  |
| 1324 | 3.8.71 | Task 3 | 1d? | 2002-11-27 | 2002-11-27 |  |  | 158.12d | start no earlier than 2002-11-27 | James Harrison [80%] | 6.4h |  |
| 1325 | 3.8.58 | Firewire build ongoing task | 1d? | 2002-11-18 | 2002-11-19 |  |  | 165d | start no earlier than 2002-11-18 | Joel DeYoung | 8h |  |
| 1326 | 3.8.59 | General debugging ongoing task | 1d? | 2002-11-18 | 2002-11-19 |  |  | 165d | start no earlier than 2002-11-18 | Joel DeYoung | 8h |  |
| 1327 | 3.8.60 | FMV pipeline complete for all 3 platforms and for NTSC and PAL | 1d? | 2002-11-18 | 2002-11-19 |  |  | 165d | start no earlier than 2002-11-18 | Joel DeYoung | 8h |  |
| 1328 | 3.8.75 | Final logo FMVs for all 6 SKUs in the game | 1d? | 2002-11-18 | 2002-11-19 |  |  | 165d | start no earlier than 2002-11-18 | Joel DeYoung [50%] | 4h |  |
| 1329 | 3.8.76 | Placeholder FMVs playing in middle of level | 1d? | 2002-11-18 | 2002-11-19 |  |  | 165d | start no earlier than 2002-11-18 | Joel DeYoung [50%] | 4h |  |
| 1330 | 3.8.77 | Support for playing movies selected from F/E | 1d? | 2002-11-18 | 2002-11-19 |  |  | 165d | start no earlier than 2002-11-18 | Joel DeYoung [50%] | 4h |  |
| 1331 | 3.8.78 | Task 1 | 1d? | 2002-11-27 | 2002-11-27 |  |  | 158.12d | start no earlier than 2002-11-27 | Joel DeYoung [50%] | 4h |  |
| 1332 | 3.8.79 | Task 2 | 1d? | 2002-11-27 | 2002-11-27 |  |  | 158.12d | start no earlier than 2002-11-27 | Joel DeYoung [50%] | 4h |  |
| 1333 | 3.8.80 | Task 3 | 1d? | 2002-11-27 | 2002-11-27 |  |  | 158.12d | start no earlier than 2002-11-27 | Joel DeYoung [50%] | 4h |  |
| 1334 | 3.8.81 | Water Effects | 1d? | 2002-12-09 | 2002-12-09 |  |  | 150.12d | start no earlier than 2002-12-09 | Michael Riegger | 8h |  |
| 1335 | 3.8.82 | Breakables disable rendering of all relevant objects | 1d? | 2002-12-09 | 2002-12-09 |  |  | 150.12d | start no earlier than 2002-12-09 | Michael Riegger | 8h |  |
| 1336 | 3.8.61 | Terrain specific skid marks working | 1d? | 2002-11-18 | 2002-11-19 |  |  | 165d | start no earlier than 2002-11-18 | Michael Riegger | 8h |  |
| 1337 | 3.8.62 | Terrain specific particle effects working | 1d? | 2002-11-18 | 2002-11-19 |  |  | 165d | start no earlier than 2002-11-18 | Michael Riegger | 8h |  |
| 1338 | 3.8.63 | Final special effects in the game (completed by November 29) | 1d? | 2002-11-18 | 2002-11-19 |  |  | 165d | start no earlier than 2002-11-18 | Michael Riegger | 8h |  |
| 1339 | 3.8.64 | Final world rendering effects in the game (completed by November 29) | 1d? | 2002-11-18 | 2002-11-19 |  |  | 165d | start no earlier than 2002-11-18 | Michael Riegger | 8h |  |
| 1340 | 3.8.66 | Platform specific gamma correction in the pipeline | 1d? | 2002-11-18 | 2002-11-19 |  |  | 165d | start no earlier than 2002-11-18 | Michael Riegger | 8h |  |
| 1341 | 3.8.88 | Task 1 | 1d? | 2002-11-27 | 2002-11-27 |  |  | 158.12d | start no earlier than 2002-11-27 | Michael Riegger [80%] | 6.4h |  |
| 1342 | 3.8.89 | Task 2 | 1d? | 2002-11-27 | 2002-11-27 |  |  | 158.12d | start no earlier than 2002-11-27 | Michael Riegger [80%] | 6.4h |  |
| 1343 | 3.8.90 | Task 3 | 1d? | 2002-11-27 | 2002-11-27 |  |  | 158.12d | start no earlier than 2002-11-27 | Michael Riegger [80%] | 6.4h |  |
| 1344 | 3.8.70 | Ensure all 7 interiors get into the game correctly | 1d? | 2002-11-18 | 2002-11-19 |  |  | 165d | start no earlier than 2002-11-18 | Nigel Brooke | 8h |  |
| 1345 | 3.8.71 | Disable character collision while character in the car | 1d? | 2002-11-18 A | 2002-11-19 A | 100% |  |  | start no earlier than 2002-11-18 | Nigel Brooke | 8h | 8h |
| 1346 | 3.8.72 | Iris transition working correctly for interiors | 1d? | 2002-11-18 A | 2002-11-19 A | 100% |  |  | start no earlier than 2002-11-18 | Nigel Brooke | 8h | 8h |
| 1347 | 3.8.94 | Gag Demonstration special camera when entering interiors | 1d? | 2002-12-09 | 2002-12-09 |  |  | 150.12d | start no earlier than 2002-12-09 | Nigel Brooke [80%] | 6.4h |  |
| 1348 | 3.8.73 | Support for collectibles in interiors | 1d? | 2002-11-18 A | 2002-11-19 A | 100% |  |  | start no earlier than 2002-11-18 | Nigel Brooke | 8h | 8h |
| 1349 | 3.8.74 | Support for interactive gags in interiors | 1d? | 2002-11-18 | 2002-11-19 |  |  | 165d | start no earlier than 2002-11-18 | Nigel Brooke | 8h |  |
| 1350 | 3.8.75 | Support for conversations in interiors | 1d? | 2002-11-18 | 2002-11-19 |  |  | 165d | start no earlier than 2002-11-18 | Nigel Brooke | 8h |  |
| 1351 | 3.8.98 | Memory cleanliness audits for all three platforms | 1d? | 2002-11-18 | 2002-11-19 |  |  | 165d | start no earlier than 2002-11-18 | Nigel Brooke | 8h |  |
| 1352 | 3.8.99 | Memory savings pass | 1d? | 2002-11-18 | 2002-11-19 |  |  | 165d | start no earlier than 2002-11-18 | Nigel Brooke | 8h |  |
| 1353 | 3.8.100 | Frame rate optimization pass | 1d? | 2002-11-18 | 2002-11-19 |  |  | 165d | start no earlier than 2002-11-18 | Nigel Brooke | 8h |  |
| 1354 | 3.8.101 | Character management ongoing task | 1d? | 2002-11-18 | 2002-11-19 |  |  | 165d | start no earlier than 2002-11-18 | Nigel Brooke | 8h |  |
| 1355 | 3.8.102 | World physics and collisions ongoing task | 5d? | 2002-11-18 | 2002-11-22 |  |  | 161.12d | start no earlier than 2002-11-18 | Nigel Brooke [20%] | 8h |  |
| 1356 | 3.8.103 | Task 1 | 1d? | 2002-11-27 | 2002-11-27 |  |  | 158.12d | start no earlier than 2002-11-27 | Nigel Brooke [80%] | 6.4h |  |
| 1357 | 3.8.104 | Task 2 | 1d? | 2002-11-27 | 2002-11-27 |  |  | 158.12d | start no earlier than 2002-11-27 | Nigel Brooke [80%] | 6.4h |  |
| 1358 | 3.8.105 | Task 3 | 1d? | 2002-11-27 | 2002-11-27 |  |  | 158.12d | start no earlier than 2002-11-27 | Nigel Brooke [80%] | 6.4h |  |
| 1359 | 3.8.77 | Language select screens | 1d? | 2002-11-18 | 2002-11-19 |  |  | 165d | start no earlier than 2002-11-18 | Tony Chu | 8h |  |
| 1360 | 3.8.78 | Generic load screen for game to F/E added | 1d? | 2002-11-18 | 2002-11-19 |  |  | 165d | start no earlier than 2002-11-18 | Tony Chu | 8h |  |
| 1361 | 3.8.79 | Screen for playing unlocked movies from F/E | 1d? | 2002-11-18 A | 2002-11-19 A | 100% |  |  | start no earlier than 2002-11-18 | Tony Chu | 8h | 8h |
| 1362 | 3.8.80 | Memory card/TRC compliance ongoing task | 1d? | 2002-11-18 A | 2002-11-19 | 25% | 0.75d? | 165d | start no earlier than 2002-11-18 | Tony Chu | 8h | 2h |
| 1363 | 3.8.81 | Changes required for HUD re-design | 1d? | 2002-11-18 | 2002-11-19 |  |  | 165d | start no earlier than 2002-11-18 | Tony Chu | 8h |  |
| 1364 | 3.8.82 | Screens required for reward presentation | 1d? | 2002-11-18 | 2002-11-19 |  |  | 165d | start no earlier than 2002-11-18 | Tony Chu | 8h |  |
| 1365 | 3.8.83 | Screens required for Street racing games | 1d? | 2002-11-18 | 2002-11-19 |  |  | 165d | start no earlier than 2002-11-18 | Tony Chu | 8h |  |
| 1366 | 3.8.113 | Presentation iteration ongoing task | 1d? | 2002-11-18 | 2002-11-19 |  |  | 165d | start no earlier than 2002-11-18 | Tony Chu | 8h |  |
| 1367 | 3.8.114 | Task 1 | 1d? | 2002-11-27 | 2002-11-27 |  |  | 158.12d | start no earlier than 2002-11-27 | Tony Chu [80%] | 6.4h |  |
| 1368 | 3.8.115 | Task 2 | 1d? | 2002-11-27 | 2002-11-27 |  |  | 158.12d | start no earlier than 2002-11-27 | Tony Chu [80%] | 6.4h |  |
| 1369 | 3.8.116 | Task 3 | 1d? | 2002-11-27 | 2002-11-27 |  |  | 158.12d | start no earlier than 2002-11-27 | Tony Chu [80%] | 6.4h |  |

Notes:
- 1300: Dusit Eakkachaichanvet (Wed 27/11/02): Ongoing
- 1301: Dusit Eakkachaichanvet (Wed 27/11/02): Awaiting design
- 1302: Dusit Eakkachaichanvet (Wed 27/11/02): Awaiting design
- 1303: Dusit Eakkachaichanvet (Wed 27/11/02): Done. Need sheik to reduce number of paths as needed
- 1304: Dusit Eakkachaichanvet (Wed 27/11/02): There. But runs a bit slow and leaks a bit of memory.

| ID | WBS | Task | Duration | Start | Finish | Predecessors | Complete | Total slack | Free slack | Constraint | Resources | Work | Actual work |
| --- | --- | --- | --- | --- | --- | --- | --- | --- | --- | --- | --- | --- | --- |
| 1370 | 3.8.117 | 2 weeks on another team (if internal) or training (if external) | 4.88d? | 2002-11-18 A | 2002-11-22 A |  | 100% |  |  | start no earlier than 2002-11-18 | Iain Gipson [20.5%] | 8h | 8h |
| 1371 | 3.8.118 | Language select / language auto-select system | 4.88d? | 2002-11-18 A | 2002-11-22 A |  | 100% |  |  | start no earlier than 2002-11-18 | Iain Gipson [20.5%] | 8h | 8h |
| 1372 | 3.8.119 | Presentation changes required by designers | 1d? | 2002-11-27 | 2002-11-27 |  |  | 158.12d |  | start no earlier than 2002-11-27 | Iain Gipson | 8h |  |
| 1373 | 3.8.120 | Enhancements to NIS conversations | 1d? | 2002-11-27 | 2002-11-27 |  |  | 158.12d |  | start no earlier than 2002-11-27 | Iain Gipson | 8h |  |
| 1374 | 3.8.121 | Task 1 | 1d? | 2002-12-09 | 2002-12-09 |  |  | 149.12d |  | start no earlier than 2002-12-09 |  |  |  |
| 1375 | 3.8.122 | Task 2 | 1d? | 2002-12-09 | 2002-12-09 |  |  | 149.12d |  | start no earlier than 2002-12-09 |  |  |  |
| 1376 | 3.8.123 | Task 3 | 1d? | 2002-12-09 | 2002-12-09 |  |  | 149.12d |  | start no earlier than 2002-12-09 |  |  |  |
| 1377 | 3.9 | **Milestone 15 - Alpha (Jan 16th) (Temp)** | 95d? | 2002-12-16 | 2003-04-24 |  |  | 51d |  |  |  | 752h |  |
| 1378 | 3.9.1 | Death volume support in the world builder tool (complete by October 25) | 8d | 2002-12-16 | 2002-12-26 |  |  | 51d | 0d | start no earlier than 2002-12-16 | Cary Brisebois | 64h |  |
| 1379 | 3.9.2 | Missions: Work with mission team to make sure they work | 1d? | 2002-12-26 | 2002-12-27 | 1378 |  | 51d | 0d |  | Cary Brisebois | 8h |  |
| 1380 | 3.9.3 | Camera collisions: on foot | 1d? | 2002-12-27 | 2002-12-30 | 1379 |  | 51d | 0d |  | Cary Brisebois | 8h |  |
| 1381 | 3.9.4 | Camera collisions: driving | 1d? | 2002-12-30 | 2002-12-31 | 1380 |  | 51d | 0d |  | Cary Brisebois | 8h |  |
| 1382 | 3.9.5 | Camera collisions: interiors | 1d? | 2002-12-31 | 2003-01-01 | 1381 |  | 51d | 0d |  | Cary Brisebois | 8h |  |
| 1383 | 3.9.6 | Camera shake | 1d? | 2003-01-01 | 2003-01-02 | 1382 |  | 51d | 0d |  | Cary Brisebois | 8h |  |
| 1384 | 3.9.7 | Interior rail camera improvements | 1d? | 2003-01-02 | 2003-01-03 | 1383 |  | 51d | 0d |  | Cary Brisebois | 8h |  |
| 1385 | 3.9.8 | Improved camera setup for mission conversations | 1d? | 2003-01-03 | 2003-01-06 | 1384 |  | 51d | 0d |  | Cary Brisebois | 8h |  |
| 1386 | 3.9.9 | Help getting new level art in the game | 1d? | 2003-01-06 | 2003-01-07 | 1385 |  | 51d | 0d |  | Cary Brisebois | 8h |  |
| 1387 | 3.9.10 | Help getting new missions in the game | 1d? | 2003-01-07 | 2003-01-08 | 1386 |  | 51d | 0d |  | Cary Brisebois | 8h |  |
| 1388 | 3.9.11 | Improved command line parameters for artists to start in various world locations | 1d? | 2003-01-08 | 2003-01-09 | 1387 |  | 51d | 0d |  | Cary Brisebois | 8h |  |
| 1389 | 3.9.12 | Mission icon scaling based on distance | 1d? | 2003-01-09 | 2003-01-10 | 1388 |  | 51d | 0d | start no earlier than 2002-10-15 | Chuck Chow | 8h |  |
| 1390 | 3.9.13 | Help getting new level art in the game | 1d? | 2003-01-10 | 2003-01-13 | 1389 |  | 51d | 0d |  | Chuck Chow | 8h |  |
| 1391 | 3.9.14 | Mission restart correctly resets the players position, mission elements, and returns to mission instruction screen | 1d? | 2003-01-13 | 2003-01-14 | 1390 |  | 51d | 0d | start no earlier than 2002-09-16 | Chuck Chow | 8h |  |
| 1392 | 3.9.15 | Missions: Work with mission team to make sure they work | 1d? | 2003-01-14 | 2003-01-15 | 1391 |  | 51d | 0d |  | Chuck Chow | 8h |  |
| 1393 | 3.9.16 | Artist pipeline support | 1d? | 2003-01-15 | 2003-01-16 | 1392 |  | 51d | 0d |  | Chuck Chow | 8h |  |
| 1394 | 3.9.17 | Artist memory budget enforcement | 1d? | 2003-01-16 | 2003-01-17 | 1393 |  | 51d | 0d |  | Chuck Chow | 8h |  |
| 1395 | 3.9.18 | Engine sounds working correctly - Final pass | 1d? | 2003-01-17 | 2003-01-20 | 1394 |  | 51d | 0d | start no earlier than 2002-12-18 | Darren Esau [80%] | 6.4h |  |
| 1396 | 3.9.19 | Reverb | 1d? | 2003-01-20 | 2003-01-21 | 1395 |  | 51d | 0d | start no earlier than 2002-12-18 | Darren Esau [80%] | 6.4h |  |
| 1397 | 3.9.20 | Dialog system: eye blinking and mouth flapping | 1d? | 2003-01-21 | 2003-01-22 | 1396 |  | 51d | 0d | start no earlier than 2002-12-18 | Darren Esau [80%] | 6.4h |  |
| 1398 | 3.9.21 | Music Events - on foot, street racing, etc. | 1d? | 2003-01-22 | 2003-01-23 | 1397 |  | 51d | 0d | start no earlier than 2002-12-18 | Darren Esau [80%] | 6.4h |  |
| 1399 | 3.9.22 | Positional Sound | 1d? | 2003-01-23 | 2003-01-24 | 1398 |  | 51d | 0d | start no earlier than 2002-12-18 | Darren Esau [80%] | 6.4h |  |
| 1401 | 3.9.18 | Audio for gag NISes | 1d? | 2003-01-24 | 2003-01-27 | 1399 |  | 51d | 0d | start no earlier than 2002-10-15 | Darren Esau | 8h |  |
| 1403 | 3.9.20 | Dialog system: eye blinking and mouth flapping | 1d? | 2003-01-28 | 2003-01-29 |  |  | 51d | 0d |  | Darren Esau | 8h |  |
| 1404 | 3.9.21 | Interior sound effects - Final pass | 1d? | 2003-01-29 | 2003-01-30 | 1403 |  | 51d | 0d |  | Darren Esau | 8h |  |
| 1405 | 3.9.22 | PS2 mipmap tuning | 1d? | 2003-01-30 | 2003-01-31 | 1404 |  | 51d | 0d |  | Darren Esau | 8h |  |
| 1406 | 3.9.23 | Addition of some final sound effects - Final pass | 1d? | 2003-01-31 | 2003-02-03 | 1405 |  | 51d | 0d |  | Darren Esau | 8h |  |
| 1408 | 3.9.25 | Generic traffic audio | 1d? | 2003-02-04 | 2003-02-05 |  |  | 51d | 0d |  | Darren Esau | 8h |  |
| 1409 | 3.9.26 | Interior gag audio | 1d? | 2003-02-05 | 2003-02-06 | 1408 |  | 51d | 0d | start no earlier than 2002-10-15 | Darwin Chau | 8h |  |
| 1410 | 3.9.27 | Mini driving games working | 1d? | 2003-02-06 | 2003-02-07 | 1409 |  | 51d | 0d |  | Darwin Chau | 8h |  |
| 1411 | 3.9.28 | FMVs playing in game (in between missions) | 1d? | 2003-02-07 | 2003-02-10 | 1410 |  | 51d | 0d |  | Darwin Chau | 8h |  |
| 1412 | 3.9.29 | General memory management ongoing tasks | 1d? | 2003-02-10 | 2003-02-11 | 1411 |  | 51d | 0d |  | Darwin Chau | 8h |  |
| 1413 | 3.9.30 | DSG cleanup / abstract base class for DSG objects | 1d? | 2003-02-11 | 2003-02-12 | 1412 |  | 51d | 0d | start no earlier than 2002-10-15 | Devin Murname | 8h |  |
| 1414 | 3.9.31 | General dynamic loading ongoing tasks | 1d? | 2003-02-12 | 2003-02-13 | 1413 |  | 51d | 0d |  | Devin Murname | 8h |  |
| 1415 | 3.9.32 | Dymamic loading compression incorporated | 1d? | 2003-02-13 | 2003-02-14 | 1414 |  | 51d | 0d |  | Devin Murname | 8h |  |
| 1416 | 3.9.33 | Load cancels working (dependent on P3D providing this) | 1d? | 2003-02-14 | 2003-02-15 | 1415 |  | 51d | 0d |  | Devin Murname | 8h |  |
| 1417 | 3.9.34 | Final rendered trigger volumes | 1d? | 2003-02-15 | 2003-02-17 | 1416 |  | 51d | 0d |  | Devin Murname | 8h |  |
| 1418 | 3.9.35 | Incorporation of P3D tool to auto-optimize meshes | 1d? | 2003-02-17 | 2003-02-18 | 1417 |  | 51d | 0d |  | Devin Murname | 8h |  |
| 1419 | 3.9.36 | Boulevard heap integration | 1d? | 2003-02-18 | 2003-02-19 | 1418 |  | 51d | 0d |  | Devin Murname | 8h |  |
| 1420 | 3.9.37 | Mission vehicle AI improvements | 1d? | 2003-02-19 | 2003-02-20 | 1419 |  | 51d | 0d | start no earlier than 2002-10-15 | Dusit Eakkachaichanvet | 8h |  |
| 1421 | 3.9.38 | Pedestrians diving out of the way | 1d? | 2003-02-20 | 2003-02-21 | 1420 |  | 51d | 0d |  | Dusit Eakkachaichanvet | 8h |  |
| 1422 | 3.9.39 | Pedestrians hit by car response | 1d? | 2003-02-21 | 2003-02-24 | 1421 |  | 51d | 0d |  | Dusit Eakkachaichanvet | 8h |  |
| 1423 | 3.9.40 | Car reset | 1d? | 2003-02-24 | 2003-02-25 | 1422 |  | 51d | 0d | start no earlier than 2002-10-15 | Greg Mayer | 8h |  |
| 1424 | 3.9.41 | Car moves correctly on moveable platforms | 1d? | 2003-02-25 | 2003-02-26 | 1423 |  | 51d | 0d |  | Greg Mayer | 8h |  |
| 1425 | 3.9.42 | Dynamic object rest tests | 1d? | 2003-02-26 | 2003-02-27 | 1424 |  | 51d | 0d |  | Greg Mayer | 8h |  |
| 1426 | 3.9.43 | Full use of physics properties from the database | 1d? | 2003-02-27 | 2003-02-28 | 1425 |  | 51d | 0d |  | Greg Mayer | 8h |  |
| 1427 | 3.9.44 | Car door opens and closes properly on character entry/exit | 1d? | 2003-02-28 | 2003-03-03 | 1426 |  | 51d | 0d |  | Greg Mayer | 8h |  |
| 1428 | 3.9.45 | Improved collision response | 1d? | 2003-03-03 | 2003-03-04 | 1427 |  | 51d | 0d |  | Greg Mayer | 8h |  |
| 1429 | 3.9.46 | Death volume handling for car | 1d? | 2003-03-04 | 2003-03-05 | 1428 |  | 51d | 0d |  | Greg Mayer | 8h |  |
| 1430 | 3.9.47 | Simple car reset | 1d? | 2003-03-05 | 2003-03-06 | 1429 |  | 51d | 0d |  | Greg Mayer | 8h |  |
| 1431 | 3.9.48 | Dynamic object removal from DSG | 1d? | 2003-03-06 | 2003-03-07 | 1430 |  | 51d | 0d |  | Greg Mayer | 8h |  |
| 1432 | 3.9.49 | Disable character collision while character in the car | 1d? | 2003-03-07 | 2003-03-10 | 1431 |  | 51d | 0d |  | Greg Mayer | 8h |  |
| 1433 | 3.9.50 | Vehicle brake lights | 1d? | 2003-03-10 | 2003-03-11 | 1432 |  | 51d | 0d |  | Greg Mayer | 8h |  |
| 1434 | 3.9.51 | In car character animations | 1d? | 2003-03-11 | 2003-03-12 | 1433 |  | 51d | 0d |  | Greg Mayer | 8h |  |
| 1435 | 3.9.52 | Steep terrain handling | 1d? | 2003-03-12 | 2003-03-13 | 1434 |  | 51d | 0d |  | Greg Mayer | 8h |  |
| 1436 | 3.9.53 | Terrain type tags in the pipeline, with an interface to access them at runtime | 1d? | 2003-03-13 | 2003-03-14 | 1435 |  | 51d | 0d | start no earlier than 2002-10-15 | James Harrison | 8h |  |
| 1437 | 3.9.54 | Lens flare / corona working | 1d? | 2003-03-14 | 2003-03-15 | 1436 |  | 51d | 0d |  | James Harrison | 8h |  |
| 1438 | 3.9.55 | Blobby shadows added for NPCs, pedestrians, non-player cars | 1d? | 2003-03-15 | 2003-03-17 | 1437 |  | 51d | 0d |  | James Harrison | 8h |  |
| 1439 | 3.9.56 | 2 weeks vacation | 1d? | 2003-03-17 | 2003-03-18 | 1438 |  | 51d | 0d |  | James Harrison | 8h |  |
| 1440 | 3.9.57 | Ongoing rendering effects task | 1d? | 2003-03-18 | 2003-03-19 | 1439 |  | 51d | 0d |  | James Harrison | 8h |  |
| 1441 | 3.9.58 | Better FMVs for Xbox and GC | 1d? | 2003-03-19 | 2003-03-20 | 1440 |  | 51d | 0d | start no earlier than 2002-10-15 | Joel DeYoung | 8h |  |
| 1442 | 3.9.59 | Create final logo FMVs for all 6 platforms | 1d? | 2003-03-20 | 2003-03-21 | 1441 |  | 51d | 0d |  | Joel DeYoung | 8h |  |

Notes:
- 1377: Important Dates and Milestones after January 15: / January 15: / ·Game 100% complete / ·No changes to game code or content, except as needed to fix bugs or resolve TRC issues / ·Game is ALPHA / Milestone 15 Build Features / Art Cutoff: January 8 / CD Delivery Date: January 15 / ·Level Art / oTurn Suburbs, Downtown and Seaside into Levels 1 through 7 / §Add specific geometry and textures related to story progression (e.g. crop circles) / §Change textures to reflect new time of day / §Move collector cards / §Move destructible cameras / §Creation of Halloween level / §Re-placement of dynamic loading load triggers as needed / oPolishing on Suburbs level / ·Incorporate final dialog audio into game / ·Continuation of work on FMV #1 through #7 (FMV finalization will continue until Feb 28) / ·All FMVs complete and in game, for both PAL and NTSC / ·All missions tuned / ·Finalize all special effects for all levels / ·Platform-specific colour corrections being performed in the pipeline / ·All NTSC illegal colours eliminated from the world / ·All mission events needed for interactive music changes are triggered in code / ·Reverb working on all platforms / ·Audio ducking working, with independent parameters for each sound effect / ·Dolby surround sound integrated into game / ·All final sound effects in the game / ·Placeholder interactive music complete for all missions / Placeholder audio for all gags and FMVs in the game
- 1401: code written but not tested / ms 13: many small tasks ie. gear shifting, dialogue, traffic sounds (doppler), reverb (power plant), etc.
- 1404: what is playing in the interiors?
- 1406: footsteps, need to know the surface
- 1423: must be done by Sept 17th for designer iteration
- 1424: depot/users/greg/tasks.txt / damage states on vehicles - artist dependencies / must be done by sept 24 for art iteration
- 1441: (Must be compelted by September 17 for art iteration)

| ID | WBS | Task | Duration | Start | Finish | Predecessors | Total slack | Free slack | Constraint | Resources | Work |
| --- | --- | --- | --- | --- | --- | --- | --- | --- | --- | --- | --- |
| 1443 | 3.9.60 | Xbox ripping | 1d? | 2003-03-21 | 2003-03-24 | 1442 | 51d | 0d |  | Joel DeYoung | 8h |
| 1444 | 3.9.61 | All water effects complete | 1d? | 2003-03-24 | 2003-03-25 | 1443 | 51d | 0d | start no earlier than 2002-10-15 | Michael Riegger | 8h |
| 1445 | 3.9.62 | Different skid mark types working | 1d? | 2003-03-25 | 2003-03-26 | 1444 | 51d | 0d |  | Michael Riegger | 8h |
| 1446 | 3.9.63 | Button press flash effect | 1d? | 2003-03-26 | 2003-03-27 | 1445 | 51d | 0d |  | Michael Riegger | 8h |
| 1447 | 3.9.64 | Food icon effects | 1d? | 2003-03-27 | 2003-03-28 | 1446 | 51d | 0d |  | Michael Riegger | 8h |
| 1448 | 3.9.65 | Nuclear glow bubbles effects | 1d? | 2003-03-28 | 2003-03-31 | 1447 | 51d | 0d | start no earlier than 2002-09-16 | Michael Riegger | 8h |
| 1449 | 3.9.66 | Power coupling electrical effects | 1d? | 2003-03-31 | 2003-04-01 | 1448 | 51d | 0d |  | Michael Riegger | 8h |
| 1450 | 3.9.67 | Power coupling destroy effects | 1d? | 2003-04-01 | 2003-04-02 | 1449 | 51d | 0d |  | Michael Riegger | 8h |
| 1451 | 3.9.68 | World animation effects | 1d? | 2003-04-02 | 2003-04-03 | 1450 | 51d | 0d |  | Michael Riegger | 8h |
| 1452 | 3.9.69 | Effects iteration ongoing task | 1d? | 2003-04-03 | 2003-04-04 | 1451 | 51d | 0d |  | Michael Riegger | 8h |
| 1453 | 3.9.70 | Drivers in the taxi vehicles | 1d? | 2003-04-04 | 2003-04-07 | 1452 | 51d | 0d | start no earlier than 2002-10-15 | Nigel Brooke | 8h |
| 1454 | 3.9.71 | Car door opens and closes properly on character entry/exit | 1d? | 2003-04-07 | 2003-04-08 | 1453 | 51d | 0d |  | Nigel Brooke | 8h |
| 1455 | 3.9.72 | Support for leaving the car door open if running on exit | 1d? | 2003-04-08 | 2003-04-09 | 1454 | 51d | 0d |  | Nigel Brooke | 8h |
| 1456 | 3.9.73 | Death volume handling for on foot | 1d? | 2003-04-09 | 2003-04-10 | 1455 | 51d | 0d |  | Nigel Brooke | 8h |
| 1457 | 3.9.74 | In car character animations | 1d? | 2003-04-10 | 2003-04-11 | 1456 | 51d | 0d |  | Nigel Brooke | 8h |
| 1458 | 3.9.75 | Currency system incorporated into game | 1d? | 2003-04-11 | 2003-04-14 | 1457 | 51d | 0d |  | Nigel Brooke | 8h |
| 1459 | 3.9.76 | On foot gameplay ongoing task | 1d? | 2003-04-14 | 2003-04-15 | 1458 | 51d | 0d |  | Nigel Brooke | 8h |
| 1460 | 3.9.77 | 2D mini games investigation (spend 3-4 days determining what is possible) | 1d? | 2003-04-15 | 2003-04-16 | 1459 | 51d | 0d | start no earlier than 2002-10-15 | Tony Chu | 8h |
| 1461 | 3.9.78 | Integration of stylized HUD map | 1d? | 2003-04-16 | 2003-04-17 | 1460 | 51d | 0d |  | Tony Chu | 8h |
| 1462 | 3.9.79 | Front end and HUD work for currency | 1d? | 2003-04-17 | 2003-04-18 | 1461 | 51d | 0d |  | Tony Chu | 8h |
| 1463 | 3.9.80 | Mini driving games presentation and HUD screens | 1d? | 2003-04-18 | 2003-04-21 | 1462 | 51d | 0d | start no earlier than 2002-09-16 | Tony Chu | 8h |
| 1464 | 3.9.81 | Mission presentation HUD art iteration ongoing task | 1d? | 2003-04-21 | 2003-04-22 | 1463 | 51d | 0d |  | Tony Chu | 8h |
| 1465 | 3.9.82 | Can load/save games on memory card | 1d? | 2003-04-22 | 2003-04-23 | 1464 | 51d | 0d |  | Tony Chu | 8h |
| 1466 | 3.9.83 | Memory card screens | 1d? | 2003-04-23 | 2003-04-24 | 1465 | 51d |  |  | Tony Chu | 8h |
| 1467 | 3.10 | Radmusic integration | 1d? | 2003-01-20 | 2003-01-21 |  | 85.38d | 0d | start no earlier than 2003-01-20 | Darren Esau | 8h |
| 1468 | 3.11 | Memory optimization | 4d | 2003-01-21 | 2003-01-27 | 1467 | 85.38d | 0d |  | Darren Esau | 32h |
| 1469 | 3.12 | Develop Dialogue test program/set up Roman | 1h | 2003-01-27 | 2003-01-27 | 1468 | 85.38d | 0d | start no earlier than 2003-01-22 | Darren Esau | 1h |
| 1470 | 3.13 | Assist Cory wrt positional sounds not playing | 1d? | 2003-01-27 | 2003-01-28 | 1469 | 85.38d | 0d | start no earlier than 2003-01-24 | Darren Esau | 8h |
| 1471 | 3.14 | Add events/code for additional Sound FX | 2d | 2003-01-28 | 2003-01-30 | 1470 | 85.38d | 0d | start no earlier than 2003-01-22 | Darren Esau | 16h |
| 1472 | 3.15 | Ducking | 3d | 2003-01-30 | 2003-02-04 | 1471 | 85.38d | 0d | start no earlier than 2003-01-22 | Darren Esau | 24h |

Notes:
- 1467: needs another pass / what does marc need for addional mission control? / needs a few more radmusic events ie. music event for collect all the cards, winning, etc.. / more for coins,
- 1468: Memory: / 128 k - reverb / 4 streamers for radmusic - 32 k x 4 / 3 streamers for game code - 120k total / 2 for conversations + third for something else ie. positional / rest is for clips / Corey should be able to see what is going into sound memory from the debug window / Next MS: / Zone loading needs to be done - last step / will gain positional sounds but not collision sounds / fragmentation issues may be a problem since only one sound loaded at a time / will only gain about 14% of memory vs 66% with level by level loading into memory
- 1469: testing outside the game / wrt dialoge / dos

| ID | WBS | Task | Duration | Start | Finish | Predecessors | Total slack | Free slack | Constraint | Resources | Work |
| --- | --- | --- | --- | --- | --- | --- | --- | --- | --- | --- | --- |
| 1473 | 3.16 | **Car Engine:** | 3.5d | 2003-02-04 | 2003-02-07 | 1472 | 85.38d | 0d |  |  | 28h |
| 1474 | 3.16.1 | Car engine level controls | 1d | 2003-02-04 | 2003-02-05 |  | 85.38d | 0d | start no earlier than 2003-01-22 | Darren Esau | 8h |
| 1475 | 3.16.2 | Car ignition startup & engine reving | 1d | 2003-02-05 | 2003-02-06 | 1474 | 85.38d | 0d | start no earlier than 2003-01-24 | Darren Esau | 8h |
| 1476 | 3.16.3 | Car engine spin out | 1d | 2003-02-06 | 2003-02-07 | 1475 | 85.38d | 0d | start no earlier than 2003-01-24 | Darren Esau | 8h |
| 1477 | 3.16.4 | Damage clip volume control | 4h | 2003-02-07 | 2003-02-07 | 1476 | 85.38d |  | start no earlier than 2003-01-24 | Darren Esau | 4h |
| 1478 | 3.17 | Loading optimization | 1d | 2003-02-07 | 2003-02-10 | 1473 | 85.38d | 0d | start no earlier than 2003-01-24 | Darren Esau | 8h |
| 1479 | 3.18 | **Additional dialogue - events & triggers** | 1.5d | 2003-02-10 | 2003-02-12 | 1478 | 85.38d |  |  |  | 12h |
| 1480 | 3.18.1 | Events & Triggers | 1d | 2003-02-10 | 2003-02-11 |  | 84.38d | 0d | start no earlier than 2003-01-24 |  | 8h |
| 1481 | 3.18.2 | Cleanup debug display | 4h | 2003-02-11 | 2003-02-12 | 1480 | 85.38d | 0d | start no earlier than 2003-01-24 | Darren Esau | 4h |
| 1482 | 3.19 | Ambience Event Cleanup | 4h | 2003-02-12 | 2003-02-12 | 1481 | 85.38d | 0d | start no earlier than 2003-01-24 | Darren Esau | 4h |
| 1483 | 3.20 | Interactive Gags - events & triggers | 2d | 2003-02-12 | 2003-02-14 | 1482 | 85.38d | 0d | start no earlier than 2003-01-24 | Darren Esau | 16h |
| 1484 | 3.21 | Positional collisions - events & triggers | 1d? | 2003-02-14 | 2003-02-15 | 1483 | 85.38d | 0d | start no earlier than 2003-01-24 | Darren Esau | 8h |
| 1485 | 3.22 | Integration week | 5d | 2003-02-15 | 2003-02-21 | 1484 | 85.38d | 0d | start no earlier than 2003-01-24 | Darren Esau | 40h |
| 1486 | 3.23 | Xbox ripping | 5d | 2003-02-21 | 2003-02-28 | 1485 | 85.38d | 0d | start no earlier than 2003-01-24 | Darren Esau | 40h |
| 1487 | 3.24 | Dialogue Localization - pipeline | 5d | 2003-02-28 | 2003-03-07 | 1486 | 85.38d |  | start no earlier than 2003-01-24 | Darren Esau | 40h |
| 1490 | 3.10 | **Milestone 16 - Beta (Feb 28th) (Temp)** | 90d? | 2003-01-16 | 2003-05-20 |  | 33d |  |  |  | 720h |
| 1491 | 3.10.1 | Death volume support in the world builder tool (complete by October 25) | 8d | 2003-01-16 | 2003-01-28 |  | 33d | 0d | start no earlier than 2003-01-16 | Cary Brisebois | 64h |
| 1492 | 3.10.2 | Missions: Work with mission team to make sure they work | 1d? | 2003-01-28 | 2003-01-29 | 1491 | 33d | 0d |  | Cary Brisebois | 8h |
| 1493 | 3.10.3 | Camera collisions: on foot | 1d? | 2003-01-29 | 2003-01-30 | 1492 | 33d | 0d |  | Cary Brisebois | 8h |
| 1494 | 3.10.4 | Camera collisions: driving | 1d? | 2003-01-30 | 2003-01-31 | 1493 | 33d | 0d |  | Cary Brisebois | 8h |
| 1495 | 3.10.5 | Camera collisions: interiors | 1d? | 2003-01-31 | 2003-02-03 | 1494 | 33d | 0d |  | Cary Brisebois | 8h |
| 1496 | 3.10.6 | Camera shake | 1d? | 2003-02-03 | 2003-02-04 | 1495 | 33d | 0d |  | Cary Brisebois | 8h |
| 1497 | 3.10.7 | Interior rail camera improvements | 1d? | 2003-02-04 | 2003-02-05 | 1496 | 33d | 0d |  | Cary Brisebois | 8h |
| 1498 | 3.10.8 | Improved camera setup for mission conversations | 1d? | 2003-02-05 | 2003-02-06 | 1497 | 33d | 0d |  | Cary Brisebois | 8h |
| 1499 | 3.10.9 | Help getting new level art in the game | 1d? | 2003-02-06 | 2003-02-07 | 1498 | 33d | 0d |  | Cary Brisebois | 8h |
| 1500 | 3.10.10 | Help getting new missions in the game | 1d? | 2003-02-07 | 2003-02-10 | 1499 | 33d | 0d |  | Cary Brisebois | 8h |
| 1501 | 3.10.11 | Improved command line parameters for artists to start in various world locations | 1d? | 2003-02-10 | 2003-02-11 | 1500 | 33d | 0d |  | Cary Brisebois | 8h |
| 1502 | 3.10.12 | Mission icon scaling based on distance | 1d? | 2003-02-11 | 2003-02-12 | 1501 | 33d | 0d | start no earlier than 2002-10-15 | Chuck Chow | 8h |
| 1503 | 3.10.13 | Help getting new level art in the game | 1d? | 2003-02-12 | 2003-02-13 | 1502 | 33d | 0d |  | Chuck Chow | 8h |
| 1504 | 3.10.14 | Mission restart correctly resets the players position, mission elements, and returns to mission instruction screen | 1d? | 2003-02-13 | 2003-02-14 | 1503 | 33d | 0d | start no earlier than 2002-09-16 | Chuck Chow | 8h |
| 1505 | 3.10.15 | Missions: Work with mission team to make sure they work | 1d? | 2003-02-14 | 2003-02-15 | 1504 | 33d | 0d |  | Chuck Chow | 8h |
| 1506 | 3.10.16 | Artist pipeline support | 1d? | 2003-02-15 | 2003-02-17 | 1505 | 33d | 0d |  | Chuck Chow | 8h |
| 1507 | 3.10.17 | Artist memory budget enforcement | 1d? | 2003-02-17 | 2003-02-18 | 1506 | 33d | 0d |  | Chuck Chow | 8h |
| 1508 | 3.10.18 | Audio for gag NISes | 1d? | 2003-02-18 | 2003-02-19 | 1507 | 33d | 0d | start no earlier than 2002-10-15 | Darren Esau | 8h |
| 1509 | 3.10.19 | Engine sounds working correctly - Final pass | 1d? | 2003-02-19 | 2003-02-20 | 1508 | 33d | 0d |  | Darren Esau | 8h |
| 1510 | 3.10.20 | Dialog system: eye blinking and mouth flapping | 1d? | 2003-02-20 | 2003-02-21 | 1509 | 33d | 0d |  | Darren Esau | 8h |
| 1511 | 3.10.21 | Interior sound effects - Final pass | 1d? | 2003-02-21 | 2003-02-24 | 1510 | 33d | 0d |  | Darren Esau | 8h |
| 1512 | 3.10.22 | PS2 mipmap tuning | 1d? | 2003-02-24 | 2003-02-25 | 1511 | 33d | 0d |  | Darren Esau | 8h |
| 1513 | 3.10.23 | Addition of some final sound effects - Final pass | 1d? | 2003-02-25 | 2003-02-26 | 1512 | 33d | 0d |  | Darren Esau | 8h |
| 1514 | 3.10.24 | Reverb | 1d? | 2003-02-26 | 2003-02-27 | 1513 | 33d | 0d |  | Darren Esau | 8h |
| 1515 | 3.10.25 | Generic traffic audio | 1d? | 2003-02-27 | 2003-02-28 | 1514 | 33d | 0d |  | Darren Esau | 8h |
| 1516 | 3.10.26 | Interior gag audio | 1d? | 2003-02-28 | 2003-03-03 | 1515 | 33d | 0d | start no earlier than 2002-10-15 | Darwin Chau | 8h |
| 1517 | 3.10.27 | Mini driving games working | 1d? | 2003-03-03 | 2003-03-04 | 1516 | 33d | 0d |  | Darwin Chau | 8h |
| 1518 | 3.10.28 | FMVs playing in game (in between missions) | 1d? | 2003-03-04 | 2003-03-05 | 1517 | 33d | 0d |  | Darwin Chau | 8h |
| 1519 | 3.10.29 | General memory management ongoing tasks | 1d? | 2003-03-05 | 2003-03-06 | 1518 | 33d | 0d |  | Darwin Chau | 8h |
| 1520 | 3.10.30 | DSG cleanup / abstract base class for DSG objects | 1d? | 2003-03-06 | 2003-03-07 | 1519 | 33d | 0d | start no earlier than 2002-10-15 | Devin Murname | 8h |
| 1521 | 3.10.31 | General dynamic loading ongoing tasks | 1d? | 2003-03-07 | 2003-03-10 | 1520 | 33d | 0d |  | Devin Murname | 8h |
| 1522 | 3.10.32 | Dymamic loading compression incorporated | 1d? | 2003-03-10 | 2003-03-11 | 1521 | 33d | 0d |  | Devin Murname | 8h |
| 1523 | 3.10.33 | Load cancels working (dependent on P3D providing this) | 1d? | 2003-03-11 | 2003-03-12 | 1522 | 33d | 0d |  | Devin Murname | 8h |
| 1524 | 3.10.34 | Final rendered trigger volumes | 1d? | 2003-03-12 | 2003-03-13 | 1523 | 33d | 0d |  | Devin Murname | 8h |
| 1525 | 3.10.35 | Incorporation of P3D tool to auto-optimize meshes | 1d? | 2003-03-13 | 2003-03-14 | 1524 | 33d | 0d |  | Devin Murname | 8h |
| 1526 | 3.10.36 | Boulevard heap integration | 1d? | 2003-03-14 | 2003-03-15 | 1525 | 33d | 0d |  | Devin Murname | 8h |
| 1527 | 3.10.37 | Mission vehicle AI improvements | 1d? | 2003-03-15 | 2003-03-17 | 1526 | 33d | 0d | start no earlier than 2002-10-15 | Dusit Eakkachaichanvet | 8h |
| 1528 | 3.10.38 | Pedestrians diving out of the way | 1d? | 2003-03-17 | 2003-03-18 | 1527 | 33d | 0d |  | Dusit Eakkachaichanvet | 8h |
| 1529 | 3.10.39 | Pedestrians hit by car response | 1d? | 2003-03-18 | 2003-03-19 | 1528 | 33d | 0d |  | Dusit Eakkachaichanvet | 8h |
| 1530 | 3.10.40 | Car reset | 1d? | 2003-03-19 | 2003-03-20 | 1529 | 33d | 0d | start no earlier than 2002-10-15 | Greg Mayer | 8h |
| 1531 | 3.10.41 | Car moves correctly on moveable platforms | 1d? | 2003-03-20 | 2003-03-21 | 1530 | 33d | 0d |  | Greg Mayer | 8h |
| 1532 | 3.10.42 | Dynamic object rest tests | 1d? | 2003-03-21 | 2003-03-24 | 1531 | 33d | 0d |  | Greg Mayer | 8h |
| 1533 | 3.10.43 | Full use of physics properties from the database | 1d? | 2003-03-24 | 2003-03-25 | 1532 | 33d | 0d |  | Greg Mayer | 8h |
| 1534 | 3.10.44 | Car door opens and closes properly on character entry/exit | 1d? | 2003-03-25 | 2003-03-26 | 1533 | 33d | 0d |  | Greg Mayer | 8h |
| 1535 | 3.10.45 | Improved collision response | 1d? | 2003-03-26 | 2003-03-27 | 1534 | 33d | 0d |  | Greg Mayer | 8h |
| 1536 | 3.10.46 | Death volume handling for car | 1d? | 2003-03-27 | 2003-03-28 | 1535 | 33d | 0d |  | Greg Mayer | 8h |
| 1537 | 3.10.47 | Simple car reset | 1d? | 2003-03-28 | 2003-03-31 | 1536 | 33d | 0d |  | Greg Mayer | 8h |
| 1538 | 3.10.48 | Dynamic object removal from DSG | 1d? | 2003-03-31 | 2003-04-01 | 1537 | 33d | 0d |  | Greg Mayer | 8h |
| 1539 | 3.10.49 | Disable character collision while character in the car | 1d? | 2003-04-01 | 2003-04-02 | 1538 | 33d | 0d |  | Greg Mayer | 8h |
| 1540 | 3.10.50 | Vehicle brake lights | 1d? | 2003-04-02 | 2003-04-03 | 1539 | 33d | 0d |  | Greg Mayer | 8h |
| 1541 | 3.10.51 | In car character animations | 1d? | 2003-04-03 | 2003-04-04 | 1540 | 33d | 0d |  | Greg Mayer | 8h |
| 1542 | 3.10.52 | Steep terrain handling | 1d? | 2003-04-04 | 2003-04-07 | 1541 | 33d | 0d |  | Greg Mayer | 8h |
| 1543 | 3.10.53 | Terrain type tags in the pipeline, with an interface to access them at runtime | 1d? | 2003-04-07 | 2003-04-08 | 1542 | 33d | 0d | start no earlier than 2002-10-15 | James Harrison | 8h |
| 1544 | 3.10.54 | Lens flare / corona working | 1d? | 2003-04-08 | 2003-04-09 | 1543 | 33d | 0d |  | James Harrison | 8h |

Notes:
- 1474: controls separate from sound fx levels
- 1478: dynamic loading to be done later. needs to be tied into the system's dynamic loading system / this will take some time to do
- 1479: one liners ie. "big air" / dependency - Greg / Kick pedestrians sound & event / mission conversation & one liners / need to trigger in mid mission - need mission scripting command (should be able to play any mission in the script)
- 1482: some of the sounds don't play
- 1508: code written but not tested / ms 13: many small tasks ie. gear shifting, dialogue, traffic sounds (doppler), reverb (power plant), etc.
- 1511: what is playing in the interiors?
- 1513: footsteps, need to know the surface
- 1530: must be done by Sept 17th for designer iteration
- 1531: depot/users/greg/tasks.txt / damage states on vehicles - artist dependencies / must be done by sept 24 for art iteration

| ID | WBS | Task | Type | Duration | Start | Finish | Predecessors | Total slack | Free slack | Constraint | Resources | Work |
| --- | --- | --- | --- | --- | --- | --- | --- | --- | --- | --- | --- | --- |
| 1545 | 3.10.55 | Blobby shadows added for NPCs, pedestrians, non-player cars |  | 1d? | 2003-04-09 | 2003-04-10 | 1544 | 33d | 0d |  | James Harrison | 8h |
| 1546 | 3.10.56 | 2 weeks vacation |  | 1d? | 2003-04-10 | 2003-04-11 | 1545 | 33d | 0d |  | James Harrison | 8h |
| 1547 | 3.10.57 | Ongoing rendering effects task |  | 1d? | 2003-04-11 | 2003-04-14 | 1546 | 33d | 0d |  | James Harrison | 8h |
| 1548 | 3.10.58 | Better FMVs for Xbox and GC |  | 1d? | 2003-04-14 | 2003-04-15 | 1547 | 33d | 0d | start no earlier than 2002-10-15 | Joel DeYoung | 8h |
| 1549 | 3.10.59 | Create final logo FMVs for all 6 platforms |  | 1d? | 2003-04-15 | 2003-04-16 | 1548 | 33d | 0d |  | Joel DeYoung | 8h |
| 1550 | 3.10.60 | Xbox ripping |  | 1d? | 2003-04-16 | 2003-04-17 | 1549 | 33d | 0d |  | Joel DeYoung | 8h |
| 1551 | 3.10.61 | All water effects complete |  | 1d? | 2003-04-17 | 2003-04-18 | 1550 | 33d | 0d | start no earlier than 2002-10-15 | Michael Riegger | 8h |
| 1552 | 3.10.62 | Different skid mark types working |  | 1d? | 2003-04-18 | 2003-04-21 | 1551 | 33d | 0d |  | Michael Riegger | 8h |
| 1553 | 3.10.63 | Button press flash effect |  | 1d? | 2003-04-21 | 2003-04-22 | 1552 | 33d | 0d |  | Michael Riegger | 8h |
| 1554 | 3.10.64 | Food icon effects |  | 1d? | 2003-04-22 | 2003-04-23 | 1553 | 33d | 0d |  | Michael Riegger | 8h |
| 1555 | 3.10.65 | Nuclear glow bubbles effects |  | 1d? | 2003-04-23 | 2003-04-24 | 1554 | 33d | 0d | start no earlier than 2002-09-16 | Michael Riegger | 8h |
| 1556 | 3.10.66 | Power coupling electrical effects |  | 1d? | 2003-04-24 | 2003-04-25 | 1555 | 33d | 0d |  | Michael Riegger | 8h |
| 1557 | 3.10.67 | Power coupling destroy effects |  | 1d? | 2003-04-25 | 2003-04-28 | 1556 | 33d | 0d |  | Michael Riegger | 8h |
| 1558 | 3.10.68 | World animation effects |  | 1d? | 2003-04-28 | 2003-04-29 | 1557 | 33d | 0d |  | Michael Riegger | 8h |
| 1559 | 3.10.69 | Effects iteration ongoing task |  | 1d? | 2003-04-29 | 2003-04-30 | 1558 | 33d | 0d |  | Michael Riegger | 8h |
| 1560 | 3.10.70 | Drivers in the taxi vehicles |  | 1d? | 2003-04-30 | 2003-05-01 | 1559 | 33d | 0d | start no earlier than 2002-10-15 | Nigel Brooke | 8h |
| 1561 | 3.10.71 | Car door opens and closes properly on character entry/exit |  | 1d? | 2003-05-01 | 2003-05-02 | 1560 | 33d | 0d |  | Nigel Brooke | 8h |
| 1562 | 3.10.72 | Support for leaving the car door open if running on exit |  | 1d? | 2003-05-02 | 2003-05-05 | 1561 | 33d | 0d |  | Nigel Brooke | 8h |
| 1563 | 3.10.73 | Death volume handling for on foot |  | 1d? | 2003-05-05 | 2003-05-06 | 1562 | 33d | 0d |  | Nigel Brooke | 8h |
| 1564 | 3.10.74 | In car character animations |  | 1d? | 2003-05-06 | 2003-05-07 | 1563 | 33d | 0d |  | Nigel Brooke | 8h |
| 1565 | 3.10.75 | Currency system incorporated into game |  | 1d? | 2003-05-07 | 2003-05-08 | 1564 | 33d | 0d |  | Nigel Brooke | 8h |
| 1566 | 3.10.76 | On foot gameplay ongoing task |  | 1d? | 2003-05-08 | 2003-05-09 | 1565 | 33d | 0d |  | Nigel Brooke | 8h |
| 1567 | 3.10.77 | 2D mini games investigation (spend 3-4 days determining what is possible) |  | 1d? | 2003-05-09 | 2003-05-12 | 1566 | 33d | 0d | start no earlier than 2002-10-15 | Tony Chu | 8h |
| 1568 | 3.10.78 | Integration of stylized HUD map |  | 1d? | 2003-05-12 | 2003-05-13 | 1567 | 33d | 0d |  | Tony Chu | 8h |
| 1569 | 3.10.79 | Front end and HUD work for currency |  | 1d? | 2003-05-13 | 2003-05-14 | 1568 | 33d | 0d |  | Tony Chu | 8h |
| 1570 | 3.10.80 | Mini driving games presentation and HUD screens |  | 1d? | 2003-05-14 | 2003-05-15 | 1569 | 33d | 0d | start no earlier than 2002-09-16 | Tony Chu | 8h |
| 1571 | 3.10.81 | Mission presentation HUD art iteration ongoing task |  | 1d? | 2003-05-15 | 2003-05-16 | 1570 | 33d | 0d |  | Tony Chu | 8h |
| 1572 | 3.10.82 | Can load/save games on memory card |  | 1d? | 2003-05-16 | 2003-05-19 | 1571 | 33d | 0d |  | Tony Chu | 8h |
| 1573 | 3.10.83 | Memory card screens |  | 1d? | 2003-05-19 | 2003-05-20 | 1572 | 33d |  |  | Tony Chu | 8h |
| 1574 | 3.11 | Submit build to EA CQC process (PAL) | milestone | 1d? | 2003-03-14 | 2003-03-15 |  | 80d |  | start no earlier than 2003-03-14 |  |  |

Notes:
- 1548: (Must be compelted by September 17 for art iteration)
- 1574: March 14: / ·Submit build to EA CQC process (PAL)

| ID | WBS | Task | Duration | Start | Finish | Predecessors | Total slack | Constraint | Resources | Work |
| --- | --- | --- | --- | --- | --- | --- | --- | --- | --- | --- |
| 1575 | 3.11 | **Milestone 17 - Final (March 30th) (Temp)** | 90d? | 2003-03-03 | 2003-07-04 |  | 0d |  |  | 720h |
| 1576 | 3.11.1 | Death volume support in the world builder tool (complete by October 25) | 8d | 2003-03-03 | 2003-03-13 |  | 0d | start no earlier than 2003-03-03 | Cary Brisebois | 64h |
| 1577 | 3.11.2 | Missions: Work with mission team to make sure they work | 1d? | 2003-03-13 | 2003-03-14 | 1576 | 0d |  | Cary Brisebois | 8h |
| 1578 | 3.11.3 | Camera collisions: on foot | 1d? | 2003-03-14 | 2003-03-15 | 1577 | 0d |  | Cary Brisebois | 8h |
| 1579 | 3.11.4 | Camera collisions: driving | 1d? | 2003-03-15 | 2003-03-17 | 1578 | 0d |  | Cary Brisebois | 8h |
| 1580 | 3.11.5 | Camera collisions: interiors | 1d? | 2003-03-17 | 2003-03-18 | 1579 | 0d |  | Cary Brisebois | 8h |
| 1581 | 3.11.6 | Camera shake | 1d? | 2003-03-18 | 2003-03-19 | 1580 | 0d |  | Cary Brisebois | 8h |
| 1582 | 3.11.7 | Interior rail camera improvements | 1d? | 2003-03-19 | 2003-03-20 | 1581 | 0d |  | Cary Brisebois | 8h |
| 1583 | 3.11.8 | Improved camera setup for mission conversations | 1d? | 2003-03-20 | 2003-03-21 | 1582 | 0d |  | Cary Brisebois | 8h |
| 1584 | 3.11.9 | Help getting new level art in the game | 1d? | 2003-03-21 | 2003-03-24 | 1583 | 0d |  | Cary Brisebois | 8h |
| 1585 | 3.11.10 | Help getting new missions in the game | 1d? | 2003-03-24 | 2003-03-25 | 1584 | 0d |  | Cary Brisebois | 8h |
| 1586 | 3.11.11 | Improved command line parameters for artists to start in various world locations | 1d? | 2003-03-25 | 2003-03-26 | 1585 | 0d |  | Cary Brisebois | 8h |
| 1587 | 3.11.12 | Mission icon scaling based on distance | 1d? | 2003-03-26 | 2003-03-27 | 1586 | 0d | start no earlier than 2002-10-15 | Chuck Chow | 8h |
| 1588 | 3.11.13 | Help getting new level art in the game | 1d? | 2003-03-27 | 2003-03-28 | 1587 | 0d |  | Chuck Chow | 8h |
| 1589 | 3.11.14 | Mission restart correctly resets the players position, mission elements, and returns to mission instruction screen | 1d? | 2003-03-28 | 2003-03-31 | 1588 | 0d | start no earlier than 2002-09-16 | Chuck Chow | 8h |
| 1590 | 3.11.15 | Missions: Work with mission team to make sure they work | 1d? | 2003-03-31 | 2003-04-01 | 1589 | 0d |  | Chuck Chow | 8h |
| 1591 | 3.11.16 | Artist pipeline support | 1d? | 2003-04-01 | 2003-04-02 | 1590 | 0d |  | Chuck Chow | 8h |
| 1592 | 3.11.17 | Artist memory budget enforcement | 1d? | 2003-04-02 | 2003-04-03 | 1591 | 0d |  | Chuck Chow | 8h |
| 1593 | 3.11.18 | Audio for gag NISes | 1d? | 2003-04-03 | 2003-04-04 | 1592 | 0d | start no earlier than 2002-10-15 | Darren Esau | 8h |
| 1594 | 3.11.19 | Engine sounds working correctly - Final pass | 1d? | 2003-04-04 | 2003-04-07 | 1593 | 0d |  | Darren Esau | 8h |
| 1595 | 3.11.20 | Dialog system: eye blinking and mouth flapping | 1d? | 2003-04-07 | 2003-04-08 | 1594 | 0d |  | Darren Esau | 8h |
| 1596 | 3.11.21 | Interior sound effects - Final pass | 1d? | 2003-04-08 | 2003-04-09 | 1595 | 0d |  | Darren Esau | 8h |
| 1597 | 3.11.22 | PS2 mipmap tuning | 1d? | 2003-04-09 | 2003-04-10 | 1596 | 0d |  | Darren Esau | 8h |
| 1598 | 3.11.23 | Addition of some final sound effects - Final pass | 1d? | 2003-04-10 | 2003-04-11 | 1597 | 0d |  | Darren Esau | 8h |
| 1599 | 3.11.24 | Reverb | 1d? | 2003-04-11 | 2003-04-14 | 1598 | 0d |  | Darren Esau | 8h |
| 1600 | 3.11.25 | Generic traffic audio | 1d? | 2003-04-14 | 2003-04-15 | 1599 | 0d |  | Darren Esau | 8h |
| 1601 | 3.11.26 | Interior gag audio | 1d? | 2003-04-15 | 2003-04-16 | 1600 | 0d | start no earlier than 2002-10-15 | Darwin Chau | 8h |
| 1602 | 3.11.27 | Mini driving games working | 1d? | 2003-04-16 | 2003-04-17 | 1601 | 0d |  | Darwin Chau | 8h |
| 1603 | 3.11.28 | FMVs playing in game (in between missions) | 1d? | 2003-04-17 | 2003-04-18 | 1602 | 0d |  | Darwin Chau | 8h |
| 1604 | 3.11.29 | General memory management ongoing tasks | 1d? | 2003-04-18 | 2003-04-21 | 1603 | 0d |  | Darwin Chau | 8h |
| 1605 | 3.11.30 | DSG cleanup / abstract base class for DSG objects | 1d? | 2003-04-21 | 2003-04-22 | 1604 | 0d | start no earlier than 2002-10-15 | Devin Murname | 8h |
| 1606 | 3.11.31 | General dynamic loading ongoing tasks | 1d? | 2003-04-22 | 2003-04-23 | 1605 | 0d |  | Devin Murname | 8h |
| 1607 | 3.11.32 | Dymamic loading compression incorporated | 1d? | 2003-04-23 | 2003-04-24 | 1606 | 0d |  | Devin Murname | 8h |
| 1608 | 3.11.33 | Load cancels working (dependent on P3D providing this) | 1d? | 2003-04-24 | 2003-04-25 | 1607 | 0d |  | Devin Murname | 8h |
| 1609 | 3.11.34 | Final rendered trigger volumes | 1d? | 2003-04-25 | 2003-04-28 | 1608 | 0d |  | Devin Murname | 8h |
| 1610 | 3.11.35 | Incorporation of P3D tool to auto-optimize meshes | 1d? | 2003-04-28 | 2003-04-29 | 1609 | 0d |  | Devin Murname | 8h |
| 1611 | 3.11.36 | Boulevard heap integration | 1d? | 2003-04-29 | 2003-04-30 | 1610 | 0d |  | Devin Murname | 8h |
| 1612 | 3.11.37 | Mission vehicle AI improvements | 1d? | 2003-04-30 | 2003-05-01 | 1611 | 0d | start no earlier than 2002-10-15 | Dusit Eakkachaichanvet | 8h |
| 1613 | 3.11.38 | Pedestrians diving out of the way | 1d? | 2003-05-01 | 2003-05-02 | 1612 | 0d |  | Dusit Eakkachaichanvet | 8h |
| 1614 | 3.11.39 | Pedestrians hit by car response | 1d? | 2003-05-02 | 2003-05-05 | 1613 | 0d |  | Dusit Eakkachaichanvet | 8h |
| 1615 | 3.11.40 | Car reset | 1d? | 2003-05-05 | 2003-05-06 | 1614 | 0d | start no earlier than 2002-10-15 | Greg Mayer | 8h |
| 1616 | 3.11.41 | Car moves correctly on moveable platforms | 1d? | 2003-05-06 | 2003-05-07 | 1615 | 0d |  | Greg Mayer | 8h |
| 1617 | 3.11.42 | Dynamic object rest tests | 1d? | 2003-05-07 | 2003-05-08 | 1616 | 0d |  | Greg Mayer | 8h |
| 1618 | 3.11.43 | Full use of physics properties from the database | 1d? | 2003-05-08 | 2003-05-09 | 1617 | 0d |  | Greg Mayer | 8h |
| 1619 | 3.11.44 | Car door opens and closes properly on character entry/exit | 1d? | 2003-05-09 | 2003-05-12 | 1618 | 0d |  | Greg Mayer | 8h |
| 1620 | 3.11.45 | Improved collision response | 1d? | 2003-05-12 | 2003-05-13 | 1619 | 0d |  | Greg Mayer | 8h |
| 1621 | 3.11.46 | Death volume handling for car | 1d? | 2003-05-13 | 2003-05-14 | 1620 | 0d |  | Greg Mayer | 8h |
| 1622 | 3.11.47 | Simple car reset | 1d? | 2003-05-14 | 2003-05-15 | 1621 | 0d |  | Greg Mayer | 8h |
| 1623 | 3.11.48 | Dynamic object removal from DSG | 1d? | 2003-05-15 | 2003-05-16 | 1622 | 0d |  | Greg Mayer | 8h |
| 1624 | 3.11.49 | Disable character collision while character in the car | 1d? | 2003-05-16 | 2003-05-19 | 1623 | 0d |  | Greg Mayer | 8h |
| 1625 | 3.11.50 | Vehicle brake lights | 1d? | 2003-05-19 | 2003-05-20 | 1624 | 0d |  | Greg Mayer | 8h |
| 1626 | 3.11.51 | In car character animations | 1d? | 2003-05-20 | 2003-05-21 | 1625 | 0d |  | Greg Mayer | 8h |
| 1627 | 3.11.52 | Steep terrain handling | 1d? | 2003-05-21 | 2003-05-22 | 1626 | 0d |  | Greg Mayer | 8h |
| 1628 | 3.11.53 | Terrain type tags in the pipeline, with an interface to access them at runtime | 1d? | 2003-05-22 | 2003-05-23 | 1627 | 0d | start no earlier than 2002-10-15 | James Harrison | 8h |
| 1629 | 3.11.54 | Lens flare / corona working | 1d? | 2003-05-23 | 2003-05-26 | 1628 | 0d |  | James Harrison | 8h |
| 1630 | 3.11.55 | Blobby shadows added for NPCs, pedestrians, non-player cars | 1d? | 2003-05-26 | 2003-05-27 | 1629 | 0d |  | James Harrison | 8h |
| 1631 | 3.11.56 | 2 weeks vacation | 1d? | 2003-05-27 | 2003-05-28 | 1630 | 0d |  | James Harrison | 8h |
| 1632 | 3.11.57 | Ongoing rendering effects task | 1d? | 2003-05-28 | 2003-05-29 | 1631 | 0d |  | James Harrison | 8h |
| 1633 | 3.11.58 | Better FMVs for Xbox and GC | 1d? | 2003-05-29 | 2003-05-30 | 1632 | 0d | start no earlier than 2002-10-15 | Joel DeYoung | 8h |
| 1634 | 3.11.59 | Create final logo FMVs for all 6 platforms | 1d? | 2003-05-30 | 2003-06-02 | 1633 | 0d |  | Joel DeYoung | 8h |
| 1635 | 3.11.60 | Xbox ripping | 1d? | 2003-06-02 | 2003-06-03 | 1634 | 0d |  | Joel DeYoung | 8h |
| 1636 | 3.11.61 | All water effects complete | 1d? | 2003-06-03 | 2003-06-04 | 1635 | 0d | start no earlier than 2002-10-15 | Michael Riegger | 8h |
| 1637 | 3.11.62 | Different skid mark types working | 1d? | 2003-06-04 | 2003-06-05 | 1636 | 0d |  | Michael Riegger | 8h |
| 1638 | 3.11.63 | Button press flash effect | 1d? | 2003-06-05 | 2003-06-06 | 1637 | 0d |  | Michael Riegger | 8h |
| 1639 | 3.11.64 | Food icon effects | 1d? | 2003-06-06 | 2003-06-09 | 1638 | 0d |  | Michael Riegger | 8h |
| 1640 | 3.11.65 | Nuclear glow bubbles effects | 1d? | 2003-06-09 | 2003-06-10 | 1639 | 0d | start no earlier than 2002-09-16 | Michael Riegger | 8h |
| 1641 | 3.11.66 | Power coupling electrical effects | 1d? | 2003-06-10 | 2003-06-11 | 1640 | 0d |  | Michael Riegger | 8h |
| 1642 | 3.11.67 | Power coupling destroy effects | 1d? | 2003-06-11 | 2003-06-12 | 1641 | 0d |  | Michael Riegger | 8h |
| 1643 | 3.11.68 | World animation effects | 1d? | 2003-06-12 | 2003-06-13 | 1642 | 0d |  | Michael Riegger | 8h |
| 1644 | 3.11.69 | Effects iteration ongoing task | 1d? | 2003-06-13 | 2003-06-16 | 1643 | 0d |  | Michael Riegger | 8h |

Notes:
- 1575: March 31: / ·All known bugs addressed / ·All CQC-reported TRC problems addressed / ·EA CQC approval received (NTSC) / ·Game is FINAL / ·Submit to Sony, Microsoft and Nintendo (NTSC)
- 1593: code written but not tested / ms 13: many small tasks ie. gear shifting, dialogue, traffic sounds (doppler), reverb (power plant), etc.
- 1596: what is playing in the interiors?
- 1598: footsteps, need to know the surface
- 1615: must be done by Sept 17th for designer iteration
- 1616: depot/users/greg/tasks.txt / damage states on vehicles - artist dependencies / must be done by sept 24 for art iteration
- 1633: (Must be compelted by September 17 for art iteration)

| ID | WBS | Task | Type | Duration | Start | Finish | Predecessors | Complete | Remaining | Total slack | Free slack | Constraint | Resources | Work | Actual work |
| --- | --- | --- | --- | --- | --- | --- | --- | --- | --- | --- | --- | --- | --- | --- | --- |
| 1645 | 3.11.70 | Drivers in the taxi vehicles |  | 1d? | 2003-06-16 | 2003-06-17 | 1644 |  |  | 0d |  | start no earlier than 2002-10-15 | Nigel Brooke | 8h |  |
| 1646 | 3.11.71 | Car door opens and closes properly on character entry/exit |  | 1d? | 2003-06-17 | 2003-06-18 | 1645 |  |  | 0d |  |  | Nigel Brooke | 8h |  |
| 1647 | 3.11.72 | Support for leaving the car door open if running on exit |  | 1d? | 2003-06-18 | 2003-06-19 | 1646 |  |  | 0d |  |  | Nigel Brooke | 8h |  |
| 1648 | 3.11.73 | Death volume handling for on foot |  | 1d? | 2003-06-19 | 2003-06-20 | 1647 |  |  | 0d |  |  | Nigel Brooke | 8h |  |
| 1649 | 3.11.74 | In car character animations |  | 1d? | 2003-06-20 | 2003-06-23 | 1648 |  |  | 0d |  |  | Nigel Brooke | 8h |  |
| 1650 | 3.11.75 | Currency system incorporated into game |  | 1d? | 2003-06-23 | 2003-06-24 | 1649 |  |  | 0d |  |  | Nigel Brooke | 8h |  |
| 1651 | 3.11.76 | On foot gameplay ongoing task |  | 1d? | 2003-06-24 | 2003-06-25 | 1650 |  |  | 0d |  |  | Nigel Brooke | 8h |  |
| 1652 | 3.11.77 | 2D mini games investigation (spend 3-4 days determining what is possible) |  | 1d? | 2003-06-25 | 2003-06-26 | 1651 |  |  | 0d |  | start no earlier than 2002-10-15 | Tony Chu | 8h |  |
| 1653 | 3.11.78 | Integration of stylized HUD map |  | 1d? | 2003-06-26 | 2003-06-27 | 1652 |  |  | 0d |  |  | Tony Chu | 8h |  |
| 1654 | 3.11.79 | Front end and HUD work for currency |  | 1d? | 2003-06-27 | 2003-06-30 | 1653 |  |  | 0d |  |  | Tony Chu | 8h |  |
| 1655 | 3.11.80 | Mini driving games presentation and HUD screens |  | 1d? | 2003-06-30 | 2003-07-01 | 1654 |  |  | 0d |  | start no earlier than 2002-09-16 | Tony Chu | 8h |  |
| 1656 | 3.11.81 | Mission presentation HUD art iteration ongoing task |  | 1d? | 2003-07-01 | 2003-07-02 | 1655 |  |  | 0d |  |  | Tony Chu | 8h |  |
| 1657 | 3.11.82 | Can load/save games on memory card |  | 1d? | 2003-07-02 | 2003-07-03 | 1656 |  |  | 0d |  |  | Tony Chu | 8h |  |
| 1658 | 3.11.83 | Memory card screens |  | 1d? | 2003-07-03 | 2003-07-04 | 1657 |  |  | 0d |  |  | Tony Chu | 8h |  |
| 1659 | 3.13 | EA CQC approval received (PAL)/Submit to Sony, Microsoft and Nintendo (PAL) | milestone | 1d? | 2003-04-15 | 2003-04-16 |  |  |  | 56d | 11d | start no earlier than 2003-04-15 |  |  |  |
| 1660 | 3.14 | Sony, Microsoft and Nintendo approval received (NTSC) | milestone | 1d? | 2003-05-01 | 2003-05-02 | 1659 |  |  | 45d | 9d | start no earlier than 2003-05-01 |  |  |  |
| 1661 | 3.15 | Sony, Microsoft and Nintendo approval received (PAL) | milestone | 1d? | 2003-05-15 | 2003-05-16 | 1660 |  |  | 36d |  | start no earlier than 2003-05-15 |  |  |  |
| 1662 | 4 | **Sound Tasks** |  | 262d? | 2002-04-16 A | 2003-04-16 |  | 28% | 187.36d? | 57d |  |  |  | 683.5h | 178.7h |
| 1663 | 4.1 | **Milestone 13** |  | 1d? | 2002-10-30 A | 2002-10-31 A |  | 100% |  |  |  |  |  | 12.8h | 12.8h |
| 1664 | 4.1.1 | First Pass collision sounds |  | 1d? | 2002-10-30 A | 2002-10-31 A |  | 100% |  |  |  | start no earlier than 2002-10-30 | Marc Baril [80%] | 6.4h | 6.4h |
| 1665 | 4.1.2 | NIS gags placeholder for sync test |  | 1d? | 2002-10-30 A | 2002-10-31 A |  | 100% |  |  |  | start no earlier than 2002-10-30 | Marc Baril [80%] | 6.4h | 6.4h |
| 1666 | 4.2 | **Milestone 14** |  | 19.12d? | 2002-11-19 A | 2002-12-16 |  | 50% | 9.56d? | 146d |  |  |  | 338.7h | 141.9h |
| 1667 | 4.2.1 | Design New Car Engine Sound System |  | 2d | 2002-11-19 A | 2002-11-20 |  | 90% | 0.2d | 157.72d | 0d | start no earlier than 2002-11-19 | Marc Baril [40%] | 6.4h | 5.76h |
| 1668 | 4.2.2 | Finish on foot music, generic and Character based ( I will need to do a session with a Baritone Sax player for Lisa) |  | 10d | 2002-11-21 A | 2002-12-04 | 1667 | 50% | 5d | 152.72d | 0d | start no earlier than 2002-11-19 | Marc Baril [80%] | 64h | 32h |
| 1669 | 4.2.3 | Implement On foot music (edit Music script) |  | 2d | 2002-12-05 A | 2002-12-06 | 1668 | 80% | 0.4d | 151.12d |  | start no earlier than 2002-11-19 | Marc Baril [80%] | 12.8h | 10.24h |
| 1670 | 4.2.4 | First Pass of Volume trigger for ambience, reverb and landmark sounds in World Builder |  | 10d | 2002-11-25 A | 2002-12-09 |  | 49% | 5.12d | 141.88d | 0d | start no earlier than 2002-11-25 | Cory Hawthorne [195.1%] | 100.5h | 20.5h |
| 1671 | 4.2.5 | Ambience script update for new ambience regions |  | 11.12d? | 2002-11-25 A | 2002-12-10 | 1670 | 45% | 6.12d? | 147d | 0d | start no earlier than 2002-11-19 | Cory Hawthorne | 11h | 3h |
| 1672 | 4.2.6 | Start adding Postional sounds (if time permits) |  | 3d | 2002-12-10 | 2002-12-13 | 1671 |  |  | 147d |  | start no earlier than 2002-11-19 | Cory Hawthorne | 24h |  |
| 1673 | 4.2.7 | Nis Gags |  | 1d? | 2002-12-13 A | 2002-12-16 A | 1672 | 100% |  |  |  | start no earlier than 2002-11-27 | Cory Hawthorne | 8h | 8h |
| 1674 | 4.2.8 | Meeting with Jeff Plumley re: list of cars, etc. | milestone | 1d | 2002-11-21 | 2002-11-22 |  |  |  | 154.8d | 0d | start no earlier than 2002-11-21 |  |  |  |
| 1675 | 4.2.9 | Collect engine sound for all cars |  | 4d | 2002-11-22 A | 2002-11-28 | 1674 | 70% | 1.2d | 153d | 0d | start no earlier than 2002-11-21 | Marc L'esperance | 32h | 22.4h |
| 1676 | 4.2.10 | First pass implementation of engine sounds (code dependent) |  | 10d | 2002-11-28 A | 2002-12-12 | 1675 | 50% | 5d | 148d |  | start no earlier than 2002-11-19 | Marc L'esperance | 80h | 40h |

Notes:
- 1659: April 15: / ·EA CQC approval received (PAL) / ·Submit to Sony, Microsoft and Nintendo (PAL)
- 1660: May 1: / ·Sony, Microsoft and Nintendo approval received (NTSC)
- 1661: May 15: / Sony, Microsoft and Nintendo approval received (PAL)
- 1670: Trigger ambiences added locally for level 2 in maya and level 3. Waiting for pipeline to be set up for implementation of sounds (see cary brisbois). Will be tested this afternoon and possibly submitted depending on any errors that may occur. / Ambience script is in progress but will be finished this afternoon with new level 2 and 3 additions. / Some postional sounds ready to go in but I haven't learned to do that yet.
- 1673: oh yeah. i'm also working on these little NIS gag movies during the times that i can't add anything to the game, such as right now for instance. i'm about 10 percent into them. the remaining 90 percent should take up about 12 hours on the outside.
- 1675: Jeff Plumley to give Marc L a list of all cars & performance aspects

| ID | WBS | Task | Duration | Start | Finish | Total slack | Constraint | Resources | Work |
| --- | --- | --- | --- | --- | --- | --- | --- | --- | --- |
| 1677 | 4.3 | **Milestone 15** | 42.12d? | 2002-11-19 | 2003-01-16 | 123d |  |  | 36.8h |
| 1678 | 4.3.1 | All sfx in the game | 1d? | 2003-01-15 | 2003-01-16 | 123d | start no earlier than 2003-01-15 | Cory Hawthorne | 8h |
| 1679 | 4.3.2 | Placeholder interactive music for all missions | 1d? | 2003-01-15 | 2003-01-16 | 123d | start no earlier than 2003-01-15 | Marc Baril [80%] | 6.4h |
| 1680 | 4.3.3 | Placeholder audio for all gags and FMVs | 1d? | 2003-01-15 | 2003-01-16 | 123d | start no earlier than 2003-01-15 | Cory Hawthorne | 8h |
| 1681 | 4.3.4 | Level mission Music | 1d? | 2002-11-19 | 2002-11-19 | 164.12d | start no earlier than 2002-11-19 | Marc Baril [80%] | 6.4h |
| 1682 | 4.3.5 | Second Pass Collision Sounds | 1d? | 2002-11-19 | 2002-11-19 | 164.12d | start no earlier than 2002-11-19 | Cory Hawthorne | 8h |
| 1683 | 4.3.6 | Dialogue | 1d? | 2002-12-18 | 2002-12-18 | 143.12d | start no earlier than 2002-12-18 |  |  |
| 1684 | 4.4 | **Milestone 16** | 21.12d? | 2003-01-20 | 2003-02-17 | 100d |  |  | 120h |
| 1685 | 4.4.1 | **Positional Sound:** | 1d? | 2003-01-20 | 2003-01-20 | 120.12d |  |  | 32h |
| 1686 | 4.4.1.1 | Fixed Objects, fountains, etc.. | 1d? | 2003-01-20 | 2003-01-20 | 120.12d | start no earlier than 2003-01-20 | Cory Hawthorne | 8h |
| 1687 | 4.4.1.2 | AI Traffic - engine & car horns | 1d? | 2003-01-20 | 2003-01-20 | 120.12d | start no earlier than 2003-01-20 | Cory Hawthorne | 8h |
| 1688 | 4.4.1.3 | Dialogue ? (selected lines ie. gags) | 1d? | 2003-01-20 | 2003-01-20 | 120.12d | start no earlier than 2003-01-20 | Cory Hawthorne | 8h |
| 1689 | 4.4.1.4 | Interactive props (implement & test) | 1d? | 2003-01-20 | 2003-01-20 | 120.12d | start no earlier than 2003-01-20 | Cory Hawthorne | 8h |
| 1690 | 4.4.2 | **Tuning** | 1d? | 2003-01-20 | 2003-01-20 | 120.12d |  |  | 24h |
| 1691 | 4.4.2.1 | Reverb, ambiences (levels), master volumes (dialogue vs music, etc) | 1d? | 2003-01-20 | 2003-01-20 | 120.12d | start no earlier than 2003-01-20 | Cory Hawthorne | 8h |
| 1692 | 4.4.2.2 | Engine Sounds | 1d? | 2003-01-20 | 2003-01-20 | 120.12d | start no earlier than 2003-01-20 | Marc L'esperance | 8h |
| 1693 | 4.4.2.3 | Code (ducking, separate submaster for car sounds) | 1d? | 2003-01-20 | 2003-01-20 | 120.12d | start no earlier than 2003-01-20 | Darren Esau | 8h |
| 1694 | 4.4.3 | Events - car door, engine start up, | 1d? | 2003-01-20 | 2003-01-20 | 120.12d | start no earlier than 2003-01-20 | Darren Esau [80%] | 6.4h |
| 1695 | 4.4.4 | QA - bug checking | 1d? | 2003-01-20 | 2003-01-20 | 120.12d | start no earlier than 2003-01-20 | Cory Hawthorne | 8h |
| 1696 | 4.4.5 | FMV's | 1d? | 2003-01-20 | 2003-01-20 | 120.12d | start no earlier than 2003-01-20 | Cory Hawthorne | 8h |
| 1697 | 4.4.6 | **Music - Missions** | 1d? | 2003-01-20 | 2003-01-20 | 120.12d |  |  | 25.6h |
| 1698 | 4.4.6.1 | Enhancements to Allan's tracks | 1d? | 2003-01-20 | 2003-01-20 | 120.12d | start no earlier than 2003-01-20 | Marc Baril [80%] | 6.4h |
| 1699 | 4.4.6.2 | Land of Chocolate | 1d? | 2003-01-20 | 2003-01-20 | 120.12d | start no earlier than 2003-01-20 | Marc Baril [80%] | 6.4h |
| 1700 | 4.4.6.3 | StarTreck | 1d? | 2003-01-20 | 2003-01-20 | 120.12d | start no earlier than 2003-01-20 | Marc Baril [80%] | 6.4h |
| 1701 | 4.4.6.4 | Comic Book Guy | 1d? | 2003-01-20 | 2003-01-20 | 120.12d | start no earlier than 2003-01-20 | Marc Baril [80%] | 6.4h |

Notes:
- 1681: moved from ms 13
- 1682: moved from ms 13
- 1684: Wish List: / Alf Clausen - to do some cues for us / Orchestra Recording - / Orchestral Sample collection / sfx for running feature / more variety for each character? / more character specific music - mission & on foot / (banjo, guitar - bart, orchestral) / Conversation music (dependent on final dialogue for timing) / Time Out Music - ie. Apu levitating, Homer looking at his shoes
- 1686: check with Cory
- 1687: only first pass / check with Darren wrt cars stopping. sound is there.
- 1696: Wolfgang to check on FMV schedule / first pass done - only the FE / all passes on all the other fmv's need to be done

| ID | WBS | Task | Duration | Start | Finish | Predecessors | Complete | Remaining | Total slack | Free slack | Constraint | Resources | Work | Actual work |
| --- | --- | --- | --- | --- | --- | --- | --- | --- | --- | --- | --- | --- | --- | --- |
| 1702 | 4.4.7 | **Sound Fx content** | 21.12d? | 2003-01-20 | 2003-02-17 |  |  |  | 100d |  |  |  | 16h |  |
| 1703 | 4.4.7.1 | misc. sounds - coin pu, door bells, platforms moving, etc. | 1d? | 2003-01-20 | 2003-01-20 |  |  |  | 120.12d |  | start no earlier than 2003-01-20 | Cory Hawthorne | 8h |  |
| 1704 | 4.4.7.2 | Halloween level - over the top fx ie. owls, frogs | 1d? | 2003-01-20 | 2003-01-20 |  |  |  | 120.12d |  | start no earlier than 2003-01-20 | Cory Hawthorne | 8h |  |
| 1705 | 4.4.7.3 | Milestone Delivery | 1d? | 2003-02-15 | 2003-02-17 |  |  |  | 100d |  | start no earlier than 2003-02-15 |  |  |  |
| 1706 | 4.5 | **Milestone 17** | 239d? | 2002-04-16 A | 2003-03-15 |  | 17% | 199.17d? | 80d |  |  |  | 134.4h | 24h |
| 1707 | 4.5.1 | **Positional Sound:** | 6d? | 2003-02-17 A | 2003-02-24 |  | 33% | 4d? | 94.12d |  |  |  |  |  |
| 1708 | 4.5.1.1 | Fixed Objects, fountains, etc.. | 1d? | 2003-02-17 | 2003-02-17 |  |  |  | 99.12d |  | start no earlier than 2003-02-17 |  |  |  |
| 1709 | 4.5.1.2 | AI Traffic - engine & car horns | 1d? | 2003-02-17 | 2003-02-17 |  |  |  | 99.12d |  | start no earlier than 2003-02-17 |  |  |  |
| 1710 | 4.5.1.3 | Dialogue ? (selected lines ie. gags) | 1d? | 2003-02-17 | 2003-02-17 |  |  |  | 99.12d |  | start no earlier than 2003-02-17 |  |  |  |
| 1711 | 4.5.1.4 | Interactive props (implement & test) | 6d | 2003-02-17 A | 2003-02-24 |  | 50% | 3d | 94.12d |  | start no earlier than 2003-02-17 |  |  |  |
| 1712 | 4.5.2 | **Tuning** | 1d? | 2003-02-17 | 2003-02-17 |  |  |  | 99.12d |  |  |  |  |  |
| 1713 | 4.5.2.1 | Reverb, ambiences (levels), master volumes (dialogue vs music, etc) | 1d? | 2003-02-17 | 2003-02-17 |  |  |  | 99.12d |  | start no earlier than 2003-02-17 |  |  |  |
| 1714 | 4.5.2.2 | Engine Sounds | 1d? | 2003-02-17 | 2003-02-17 |  |  |  | 99.12d |  | start no earlier than 2003-02-17 |  |  |  |
| 1715 | 4.5.2.3 | Code (ducking, separate submaster for car sounds) | 1d? | 2003-02-17 | 2003-02-17 |  |  |  | 99.12d |  | start no earlier than 2003-02-17 |  |  |  |
| 1716 | 4.5.2.4 | Events - car door, engine start up, | 1d? | 2003-02-17 | 2003-02-17 |  |  |  | 99.12d |  | start no earlier than 2003-02-17 |  |  |  |
| 1717 | 4.5.2.5 | QA - bug checking | 1d? | 2003-02-17 | 2003-02-17 |  |  |  | 99.12d |  | start no earlier than 2003-02-17 |  |  |  |
| 1718 | 4.5.2.6 | FMV's | 1d? | 2003-02-17 | 2003-02-17 |  |  |  | 99.12d |  | start no earlier than 2003-02-17 |  |  |  |
| 1719 | 4.5.3 | **Music - Missions** | 1.12d? | 2003-02-17 | 2003-02-18 |  |  |  | 99d |  |  |  | 8h |  |
| 1720 | 4.5.3.1 | Enhancements to Allan's tracks | 1d? | 2003-02-17 | 2003-02-17 |  |  |  | 99.12d |  | start no earlier than 2003-02-17 |  |  |  |
| 1721 | 4.5.3.2 | Bollywood 1 | 1d? | 2003-02-17 | 2003-02-17 |  |  |  | 99.12d |  | start no earlier than 2003-02-17 |  |  |  |
| 1722 | 4.5.3.3 | Bollywood 2 | 1d? | 2003-02-17 | 2003-02-17 |  |  |  | 99.12d |  | start no earlier than 2003-02-17 |  |  |  |
| 1723 | 4.5.3.4 | Marge Mission 2 | 1d? | 2003-02-17 | 2003-02-18 |  |  |  | 99d |  | start no earlier than 2003-02-17 | Cory Hawthorne [50%]; Marc L'esperance [50%] | 8h |  |
| 1724 | 4.5.4 | **Sound Fx content** | 17d? | 2003-02-20 A | 2003-03-15 |  | 23% | 13.08d? | 80d |  |  |  | 102.4h | 24h |
| 1725 | 4.5.4.1 | misc. sounds - coins, door bells, platforms moving, etc. - 1st pass | 1d? | 2003-02-20 | 2003-02-21 |  |  |  | 96d |  | start no earlier than 2003-02-20 | Roman Tomazin | 8h |  |
| 1726 | 4.5.4.2 | Halloween level - over the top fx ie. owls, frogs - 1st pass | 1d? | 2003-02-27 | 2003-02-28 |  |  |  | 83d | 0d | start no earlier than 2003-02-27 | Cory Hawthorne | 8h |  |
| 1727 | 4.5.4.3 | revisit collision sounds - generic collision sounds | 2d | 2003-02-28 | 2003-03-04 | 1726 |  |  | 83d | 0d | start no earlier than 2003-02-17 | Cory Hawthorne | 16h |  |
| 1728 | 4.5.4.4 | Bee sounds final pass | 2d | 2003-03-04 | 2003-03-06 | 1727 |  |  | 83d | 0d | start no earlier than 2003-02-17 | Cory Hawthorne | 16h |  |
| 1729 | 4.5.4.5 | Car door sounds - generic | 1d? | 2003-03-06 | 2003-03-07 | 1728 |  |  | 83d | 0d | start no earlier than 2003-01-20 | Cory Hawthorne [80%] | 6.4h |  |
| 1730 | 4.5.4.6 | Interactive gags | 6d | 2003-03-07 A | 2003-03-15 | 1729 | 50% | 3d | 80d |  | start no earlier than 2003-02-17 | Cory Hawthorne | 48h | 24h |

Notes:
- 1702: memory contstraints if we are to add more sfx / Jan 20 - we are fairly maxed on memory due to the amount of dialogue
- 1708: won't be a lot of content / most is done / waiting for halloween level
- 1709: car horns - 1st pass only so far / darren - needs more work from darren
- 1711: another 18 coming but cory has not heard as yet / have done 10 so far
- 1713: ongoing
- 1715: check with darren
- 1716: not in the game as yet, content done
- 1718: check on approval / check on scope wrt music, sound fx, etc.
- 1720: needs final pass
- 1725: 2nd pass and beyond
- 1726: depending on fmv schedule
- 1728: needs all of the animations - doesn't have them yet
- 1729: darren coding? / door sounds are final

| ID | WBS | Task | Duration | Start | Finish | Complete | Remaining | Total slack | Constraint | Resources | Work | Actual work |
| --- | --- | --- | --- | --- | --- | --- | --- | --- | --- | --- | --- | --- |
| 1731 | 4.5.5 | **Engine Sounds** | 219.88d? | 2002-04-16 | 2003-02-17 |  |  | 99.12d |  |  | 16h |  |
| 1732 | 4.5.5.1 | Tuning - gear shift, acceleration, etc. | 1d? | 2002-04-16 | 2002-04-17 |  |  | 318d |  | Marc L'esperance | 8h |  |
| 1733 | 4.5.5.2 | New engine sounds | 1d? | 2003-02-17 | 2003-02-17 |  |  | 99.12d | start no earlier than 2003-02-17 | Marc L'esperance | 8h |  |
| 1734 | 4.5.6 | **Dialogue** | 1d? | 2003-02-17 | 2003-02-17 |  |  | 99.12d |  |  | 8h |  |
| 1735 | 4.5.6.1 | Normalize Skate dialogue | 1d? | 2003-02-17 | 2003-02-17 |  |  | 99.12d | start no earlier than 2003-02-17 | Roman Tomazin | 8h |  |
| 1736 | 4.5.6.2 | Milestone Delivery | 1d? | 2003-02-17 | 2003-02-17 |  |  | 99.12d | start no earlier than 2003-02-17 |  |  |  |
| 1737 | 4.6 | **Milestone 18 - Alpha** | 64.12d? | 2003-01-20 | 2003-04-16 |  |  | 57d |  |  | 40.8h |  |
| 1738 | 4.6.1 | Recording | 1d? | 2003-01-20 | 2003-01-20 |  |  | 120.12d | start no earlier than 2003-01-20 | Marc Baril [80%] | 6.4h |  |
| 1739 | 4.6.2 | Music Mix | 1d? | 2003-01-20 | 2003-01-20 |  |  | 120.12d | start no earlier than 2003-01-20 | TBA | 8h |  |
| 1740 | 4.6.3 | Mastering | 1d? | 2003-01-20 | 2003-01-20 |  |  | 120.12d | start no earlier than 2003-01-20 | TBA | 8h |  |
| 1741 | 4.6.4 | Final Tuning | 1d? | 2003-01-20 | 2003-01-20 |  |  | 120.12d | start no earlier than 2003-01-20 | Marc Baril [80%] | 6.4h |  |
| 1742 | 4.6.5 | Milestone Delivery Date | 1d? | 2003-04-15 | 2003-04-16 |  |  | 57d | start no earlier than 2003-04-15 |  |  |  |
| 1745 | 4.6.6 | Localization | 1d? | 2003-01-20 | 2003-01-20 |  |  | 120.12d | start no earlier than 2003-01-20 | Wolfgang Hamann [50%] | 4h |  |
| 1746 | 4.6.7 | Dialogue Mastering | 1d? | 2003-01-20 | 2003-01-20 |  |  | 120.12d | start no earlier than 2003-01-20 | Allan Levy | 8h |  |
| 1747 | 4.6.8 | Milestone Delivery Date | 1d? | 2003-03-15 | 2003-03-17 |  |  | 79d | start no earlier than 2003-03-15 |  |  |  |
| 1774 | 5 | **Dropped or Moved Tasks** | 154.88d? | 2002-04-16 A | 2002-11-19 | 2% | 151.72d? | 164.12d |  |  | 188.8h | 3.52h |
| 1775 | 5.1 | **Milestone 13** | 141.88d? | 2002-04-16 A | 2002-10-31 | 3% | 137d? | 177.12d |  |  | 108.8h | 3.52h |
| 1776 | 3.7.19 | Engine sounds working correctly - Final pass | 1d? | 2002-04-16 | 2002-04-17 |  |  | 318d |  | Darren Esau [80%] | 6.4h |  |
| 1777 | 3.7.22 | PS2 mipmap tuning | 1d? | 2002-04-16 | 2002-04-17 |  |  | 318d |  | Darren Esau [80%] | 6.4h |  |
| 1778 | 3.7.25 | Generic traffic audio | 1d? | 2002-04-16 | 2002-04-17 |  |  | 318d |  | Darren Esau [80%] | 6.4h |  |
| 1779 | 3.7.48 | DSG cleanup / abstract base class for DSG objects | 1d? | 2002-04-16 | 2002-04-17 |  |  | 318d |  | Devin Murname [80%] | 6.4h |  |
| 1780 | 3.7.34 | Final rendering of visible collision volumes | 1d? | 2002-04-16 | 2002-04-17 |  |  | 318d |  | Devin Murname [80%] | 6.4h |  |
| 1781 | 3.7.35 | Occlusion volume runtime | 1d? | 2002-04-16 | 2002-04-17 |  |  | 318d |  | Devin Murname [80%] | 6.4h |  |
| 1782 | 3.7.51 | Investigate dynamic loading of characters | 1d? | 2002-04-16 | 2002-04-17 |  |  | 318d |  | Devin Murname [80%] | 6.4h |  |
| 1783 | 3.7.30 | Dynamic loading compression incorporated | 1d? | 2002-10-16 | 2002-10-17 |  |  | 188d | start no earlier than 2002-10-16 | Devin Murname [80%] | 6.4h |  |
| 1784 | 3.7.26 | Interior gag audio (?who is doing this?) | 1d? | 2002-10-16 | 2002-10-17 |  |  | 188d | start no earlier than 2002-10-16 | Darwin Chau | 8h |  |
| 1785 | 3.7.27 | Mini driving games working (? Who is doing this?) | 1d? | 2002-04-16 | 2002-04-17 |  |  | 318d |  | Darwin Chau | 8h |  |
| 1786 | 3.7.28 | FMVs playing in game (in between missions) (?who is doing this_ | 1d? | 2002-04-16 | 2002-04-17 |  |  | 318d |  | Darwin Chau | 8h |  |
| 1787 | 3.7.29 | General memory management ongoing tasks (?who is doing this?) | 1d? | 2002-04-16 | 2002-04-17 |  |  | 318d |  | Darwin Chau | 8h |  |
| 1788 | 3.7.42 | Full use of physics properties from the database | 1d? | 2002-10-22 A | 2002-10-22 | 30% | 0.7d? | 184.12d |  | Greg Mayer [80%] | 6.4h | 1.92h |
| 1789 | 3.7.49 | Vehicle to vehicle collision improvements | 1d? | 2002-10-31 A | 2002-10-31 | 25% | 0.75d? | 177.12d |  | Greg Mayer [80%] | 6.4h | 1.6h |
| 1790 | 3.7.52 | Cleanup of dynaphys DSG transforms | 1d? | 2002-04-16 | 2002-04-17 |  |  | 318d |  | Greg Mayer [80%] | 6.4h |  |
| 1791 | 3.7.70 | In car character animation triggering | 1d? | 2002-04-16 | 2002-04-17 |  |  | 318d |  | Greg Mayer [80%] | 6.4h |  |

Notes:
- 1776: next milestone
- 1777: next ms
- 1778: next ms
- 1779: Devin Murname (Thu 07/11/02): postponed
- 1780: Devin Murname (Thu 07/11/02): postponed/cut
- 1781: Devin Murname (Thu 07/11/02): postponed / possibly done as part of the performance increases
- 1782: Devin Murname (Thu 07/11/02): postponed/unknown item
- 1783: Devin Murname (Thu 07/11/02): postponed / There doesn't seem to be a way for me to indicate the nature of these tasks. / Some have been cut from this milestone, others have been given to Cary, and others yet are ongoing tasks with no set finish date. / barring ongoing maintenance and support tasks, Performance and memory usage are the only ones on my plate currently, and this has been vetted by Joel.
- 1787: Devin Murname (Thu 07/11/02): o/g
- 1788: - in car character animation triggering / - cleanup of dynaph DSG transform / - vehicle-vehicle collision improvements / - full use of physics properties from the database / should probably be deferred until the next milestone
- 1789: - in car character animation triggering / - cleanup of dynaph DSG transform / - vehicle-vehicle collision improvements / - full use of physics properties from the database / should probably be deferred until the next milestone
- 1790: - in car character animation triggering / - cleanup of dynaph DSG transform / - vehicle-vehicle collision improvements / - full use of physics properties from the database / should probably be deferred until the next milestone
- 1791: - in car character animation triggering / - cleanup of dynaph DSG transform / - vehicle-vehicle collision improvements / - full use of physics properties from the database / should probably be deferred until the next milestone

| ID | WBS | Task | Duration | Start | Finish | Remaining | Total slack | Constraint | Resources | Work |
| --- | --- | --- | --- | --- | --- | --- | --- | --- | --- | --- |
| 1792 | 5.2 | **Milestone 14** | 1.88d? | 2002-11-18 A | 2002-11-19 | 1.88d? | 164.12d |  |  | 80h |
| 1793 | 3.8.16 | Ensure all Halloween specific functionality gets in the game | 1d? | 2002-11-18 | 2002-11-19 |  | 165d | start no earlier than 2002-11-18 | Chuck Chow | 8h |
| 1794 | 3.8.31 | Per level light files | 1d? | 2002-11-18 A | 2002-11-19 | 1d? | 165d | start no earlier than 2002-11-18 | Devin Murname |  |
| 1795 | 3.8.32 | Support artists for time-of-day specific rendering issues | 1d? | 2002-11-18 | 2002-11-19 |  | 165d | start no earlier than 2002-11-18 | Devin Murname | 8h |
| 1796 | 5.2.4 | PS2 Timing Hang investigation | 1d? | 2002-11-19 | 2002-11-19 |  | 164.12d | start no earlier than 2002-11-19 | Devin Murname | 8h |
| 1797 | 5.2.5 | Tree allocations fixed/moved offline. | 1d? | 2002-11-19 | 2002-11-19 |  | 164.12d | start no earlier than 2002-11-19 | Devin Murname | 8h |
| 1798 | 5.2.6 | Occlusion volumes | 1d? | 2002-11-19 | 2002-11-19 |  | 164.12d | start no earlier than 2002-11-19 | Devin Murname | 8h |
| 1799 | 5.2.7 | Tree datastructure revised | 1d? | 2002-11-19 | 2002-11-19 |  | 164.12d | start no earlier than 2002-11-19 | Devin Murname | 8h |
| 1800 | 5.2.8 | Rendering Performance | 1d? | 2002-11-19 | 2002-11-19 |  | 164.12d | start no earlier than 2002-11-19 | Devin Murname | 8h |
| 1801 | 3.8.55 | Interior enter/exit presentation with iris transition (partially completed by Darwin) | 1d? | 2002-11-18 | 2002-11-19 |  | 165d | start no earlier than 2002-11-18 | James Harrison | 8h |
| 1802 | 3.8.65 | Presentation manager changes required for presentation enhancements | 1d? | 2002-11-18 | 2002-11-19 |  | 165d | start no earlier than 2002-11-18 | Michael Riegger | 8h |
| 1803 | 3.8.76 | Ensure all interactive gags get into the game and can be triggered correctly | 1d? | 2002-11-18 | 2002-11-19 |  | 165d | start no earlier than 2002-11-18 | Nigel Brooke | 8h |

Notes:
- 1794: Devin Murname (Tue 19/11/02): done. this has always been true.
- 1802: Michael Riegger (Tue 19/11/02): This was in my last milestone, but I was never assigned anything for it. Now Ian is assigned this task apparently, whats going on?
